# CVN73-PIA26

Schedule from Primavera P6, 2026-07-27 to 2027-01-23, data date 2026-08-10, A marks actual dates.
Must finish by 2027-01-23

## Resources

| Resource | Group |
| --- | --- |
| Sheet Metal / HVAC | labor |
| Pipefitting | labor |
| Preservation / Blast & Coat | labor |
| Rigging & Weight Handling | labor |
| Electrical | labor |
| Structural Welding | labor |
| Insulation & Lagging | labor |
| Interior Communications | labor |
| Mechanical | labor |

## Schedule

| ID | WBS | Activity | Duration | Start | Finish | Complete | Resources |
| --- | --- | --- | --- | --- | --- | --- | --- |
|  | PIA26 | **CVN-73 PIA-26** |  | 2026-07-27 | 2027-01-23 |  |  |
|  | GEN | **General Services (ship-wide)** |  | 2026-08-02 | 2027-01-22 |  |  |
| A15330 |  | Pier crane window — heavy lifts — period 15 | 0d | 2026-08-02 A | 2026-08-10 A | 100% | Mechanical [65 h] |
| A15350 |  | Pier crane window — heavy lifts — period 17 | 0d | 2026-08-11 | 2026-08-25 |  | Mechanical [225 h] |
| A15230 |  | Housekeeping & debris removal — period 5 | 0d | 2026-08-12 | 2026-08-27 |  | Rigging & Weight Handling [100 h] |
| A15340 |  | Gas-free engineering surveys — period 16 | 0d | 2026-08-12 | 2026-08-29 |  | Rigging & Weight Handling [266 h] |
| A15300 |  | Gas-free engineering surveys — period 12 | 0d | 2026-08-25 | 2026-08-31 |  | Rigging & Weight Handling [100 h] |
| A15210 |  | Tank sounding rounds — period 3 | 0d | 2026-09-04 | 2026-09-21 |  | Rigging & Weight Handling [142 h] |
| A15410 |  | Weapons elevator barrier watch — period 23 | 0d | 2026-09-04 | 2026-09-20 |  | Mechanical [135 h] |
| A15200 |  | Shore power monitoring & load checks — period 2 | 0d | 2026-09-08 | 2026-10-05 |  | Rigging & Weight Handling [473 h] |
| A15360 |  | Weapons elevator barrier watch — period 18 | 0d | 2026-09-09 | 2026-10-01 |  | Rigging & Weight Handling [172 h] |
| A15380 |  | Firewatch rotation — period 20 | 0d | 2026-09-24 | 2026-09-29 |  | Rigging & Weight Handling [48 h] |
| A15420 |  | Gas-free engineering surveys — period 24 | 0d | 2026-09-24 | 2026-10-22 |  | Mechanical [223 h] |
| A15400 |  | Shore power monitoring & load checks — period 22 | 0d | 2026-10-20 | 2026-11-19 |  | Rigging & Weight Handling [258 h] |
| A15320 |  | Pier crane window — heavy lifts — period 14 | 0d | 2026-10-25 | 2026-11-22 |  | Mechanical [217 h] |
| A15370 |  | Housekeeping & debris removal — period 19 | 0d | 2026-11-02 | 2026-11-21 |  | Mechanical [174 h] |
| A15250 |  | Shore power monitoring & load checks — period 7 | 0d | 2026-11-17 | 2026-12-07 |  | Rigging & Weight Handling [120 h] |
| A15290 |  | Firewatch rotation — period 11 | 0d | 2026-11-19 | 2026-12-08 |  | Mechanical [142 h] |
| A15280 |  | Gas-free engineering surveys — period 10 | 0d | 2026-12-02 | 2026-12-20 |  | Mechanical [298 h] |
| A15260 |  | Pier crane window — heavy lifts — period 8 | 0d | 2026-12-02 | 2026-12-13 |  | Mechanical [243 h] |
| A15390 |  | Tank sounding rounds — period 21 | 0d | 2026-12-05 | 2026-12-22 |  | Mechanical [307 h] |
| A15220 |  | Tank sounding rounds — period 4 | 0d | 2026-12-08 | 2027-01-04 |  | Mechanical [230 h] |
| A15310 |  | Pier crane window — heavy lifts — period 13 | 0d | 2026-12-17 | 2027-01-15 |  | Rigging & Weight Handling [681 h] |
| A15240 |  | Tank sounding rounds — period 6 | 0d | 2026-12-22 | 2027-01-21 |  | Mechanical [718 h] |
| A15270 |  | Tank sounding rounds — period 9 | 0d | 2026-12-23 | 2026-12-31 |  | Rigging & Weight Handling [92 h] |
| A15190 |  | Pier crane window — heavy lifts — period 1 | 0d | 2027-01-12 | 2027-01-22 |  | Rigging & Weight Handling [68 h] |

| ID | WBS | Activity | Type | Duration | Start | Finish | Predecessors | Complete | Remaining | Resources |
| --- | --- | --- | --- | --- | --- | --- | --- | --- | --- | --- |
|  | MSTN | **Key Events** |  |  | 2026-07-27 | 2027-01-23 |  |  |  |  |
| A15490 |  | Availability start | milestone | 0d | 2026-07-27 A | 2026-07-27 A |  | 100% |  |  |
| A15500 |  | Production 25% review | milestone | 0d | 2026-09-10 | 2026-09-10 |  |  |  |  |
| A15510 |  | Production 50% review | milestone | 0d | 2026-10-25 | 2026-10-25 |  |  |  |  |
| A15520 |  | Production 75% review | milestone | 0d | 2026-12-09 | 2026-12-09 |  |  |  |  |
| A15570 |  | Z2 zone close-out review | milestone | 0d | 2026-12-17 | 2026-12-17 | A01610, A01780, A01320, A01270, A01650, A01730 |  |  |  |
| A15600 |  | Z5 zone close-out review | milestone | 0d | 2026-12-21 | 2026-12-21 | A11980, A03270, A03520, A03030, A03570, A12570 |  |  |  |
| A15580 |  | Z3 zone close-out review | milestone | 0d | 2026-12-23 | 2026-12-23 | A01950, A02640, A02060, A01890, A02200, A02800 |  |  |  |
| A15530 |  | Light-off assessment | milestone | 0d | 2026-12-26 | 2026-12-26 | A15570, A15580, A15590, A15600, A15610, A15620 |  |  |  |
| A15620 |  | Z7 zone close-out review | milestone | 0d | 2026-12-27 | 2026-12-27 | A01210, A01110, A01170, A10400, A00760, A13330 |  |  |  |
| A15610 |  | Z6 zone close-out review | milestone | 0d | 2026-12-28 | 2026-12-28 | A04430, A08660, A04720, A06510, A07280, A05750 |  |  |  |
| A15590 |  | Z4 zone close-out review | milestone | 0d | 2027-01-01 | 2027-01-01 | A00130, A00520, A00350, A00580, A00230, A00620 |  |  |  |
| A15540 |  | Crew certification | milestone | 0d | 2027-01-09 | 2027-01-09 |  |  |  |  |
| A15550 |  | Fast cruise | milestone | 0d | 2027-01-18 | 2027-01-18 |  |  |  |  |
| A15560 |  | End of availability | milestone | 0d | 2027-01-23 | 2027-01-23 |  |  |  |  |
|  | Z2 | **Zone 2 — Forward Electrical & Stores** |  |  | 2026-08-01 | 2026-10-21 |  |  |  |  |
|  | 130 | **130 Hull Structure** |  |  |  |  |  |  |  |  |
|  | 300 | **300 Electrical Distribution** |  |  | 2026-08-03 | 2026-09-11 |  |  |  |  |
| A01740 |  | Circuit survey — cable run 2F — Switchboard Room No. 1 |  | 0d | 2026-08-03 A | 2026-08-16 |  | 50% | 0d | Electrical [117 h] |
| A01750 |  | De-energize & tag out cable run 2F — Switchboard Room No. 1 |  | 0d | 2026-08-17 | 2026-08-19 | A01740 |  |  | Electrical [43 h] |
| A01760 |  | Pull & land cable — cable run 2F — Switchboard Room No. 1 |  | 0d | 2026-08-22 | 2026-08-27 | A01750 |  |  | Electrical [77 h] |
| A01770 |  | Megger & continuity test cable run 2F — Switchboard Room No. 1 |  | 0d | 2026-08-29 | 2026-09-06 | A01760 FS+2.4d |  |  | Electrical [161 h]; Rigging & Weight Handling [41 h] |
| A01780 |  | Energize & close-out cable run 2F — Switchboard Room No. 1 |  | 0d | 2026-09-06 | 2026-09-11 | A01770 |  |  | Electrical [32 h] |
|  | 430 | **430 Interior Communications** |  |  | 2026-08-05 | 2026-09-26 |  |  |  |  |
| A01620 |  | Circuit trace — IC circuit 2C — Switchboard Room No. 1 |  | 0d | 2026-08-05 A | 2026-08-19 |  | 36% | 0d | Interior Communications [155 h] |
| A01540 |  | Circuit trace — IC circuit 7A — Switchboard Room No. 1 |  | 0d | 2026-08-10 | 2026-08-18 |  |  |  | Interior Communications [141 h] |
| A01580 |  | Circuit trace — IC circuit 5B — Switchboard Room No. 1 |  | 0d | 2026-08-18 | 2026-08-26 |  |  |  | Interior Communications [182 h] |
| A01550 |  | Rip out IC circuit 7A — Switchboard Room No. 1 |  | 0d | 2026-08-19 | 2026-08-27 | A01540 |  |  | Interior Communications [119 h] |
| A01330 |  | Circuit trace — announcing group 5C — Switchboard Room No. 1 |  | 0d | 2026-08-20 | 2026-08-30 |  |  |  | Interior Communications [157 h] |
| A01630 |  | Rip out IC circuit 2C — Switchboard Room No. 1 |  | 0d | 2026-08-21 | 2026-09-01 | A01620 |  |  | Interior Communications [153 h] |
| A01590 |  | Rip out IC circuit 5B — Switchboard Room No. 1 |  | 0d | 2026-08-27 | 2026-09-06 | A01580 FS+2.4d |  |  | Interior Communications [76 h] |
| A01560 |  | Install & terminate IC circuit 7A — Switchboard Room No. 1 |  | 0d | 2026-08-28 | 2026-09-06 | A01550 |  |  | Interior Communications [254 h] |
| A01340 |  | Rip out announcing group 5C — Switchboard Room No. 1 |  | 0d | 2026-08-31 | 2026-09-03 | A01330 |  |  | Interior Communications [32 h]; Rigging & Weight Handling [8 h] |
| A01640 |  | Install & terminate IC circuit 2C — Switchboard Room No. 1 |  | 0d | 2026-09-02 | 2026-09-16 | A01630 |  |  | Interior Communications [86 h] |
| A01350 |  | Install & terminate announcing group 5C — Switchboard Room No. 1 |  | 0d | 2026-09-04 | 2026-09-13 | A01340 FS+2.4d |  |  | Interior Communications [219 h] |
| A01570 |  | Ring-out & test IC circuit 7A — Switchboard Room No. 1 |  | 0d | 2026-09-08 | 2026-09-20 | A01560 FS+2.4d |  |  | Interior Communications [236 h]; Rigging & Weight Handling [60 h] |
| A01600 |  | Install & terminate IC circuit 5B — Switchboard Room No. 1 |  | 0d | 2026-09-09 | 2026-09-21 | A01590 FS+2.4d |  |  | Interior Communications [180 h] |
| A01360 |  | Ring-out & test announcing group 5C — Switchboard Room No. 1 |  | 0d | 2026-09-14 | 2026-09-21 | A01350 |  |  | Interior Communications [56 h] |
| A01650 |  | Ring-out & test IC circuit 2C — Switchboard Room No. 1 |  | 0d | 2026-09-18 | 2026-09-23 | A01640 |  |  | Interior Communications [67 h] |
| A01610 |  | Ring-out & test IC circuit 5B — Switchboard Room No. 1 |  | 0d | 2026-09-21 | 2026-09-26 | A01600 |  |  | Interior Communications [100 h] |

| ID | WBS | Activity | Duration | Start | Finish | Predecessors | Complete | Remaining | Resources |
| --- | --- | --- | --- | --- | --- | --- | --- | --- | --- |
|  | 505 | **505 Piping Systems** |  | 2026-08-06 | 2026-09-20 |  |  |  |  |
| A01370 |  | Lay-up & drain valve bank 4D (4-102-2-E) | 0d | 2026-08-06 A | 2026-08-09 A |  | 100% |  | Pipefitting [62 h] |
| A01380 |  | Cut out valve bank 4D (4-102-2-E) | 0d | 2026-08-11 | 2026-08-14 | A01370 |  |  | Pipefitting [24 h] |
| A01390 |  | Fab & fit valve bank 4D (4-102-2-E) | 0d | 2026-08-16 | 2026-08-26 | A01380 |  |  | Pipefitting [250 h] |
| A01400 |  | Weld out valve bank 4D (4-102-2-E) | 0d | 2026-08-26 | 2026-09-01 | A01390 |  |  | Pipefitting [40 h]; Rigging & Weight Handling [10 h] |
| A01410 |  | Hydro test valve bank 4D (4-102-2-E) | 0d | 2026-09-04 | 2026-09-17 | A01400 FS+2.4d |  |  | Pipefitting [216 h] |
| A01420 |  | Flush & restore valve bank 4D (4-102-2-E) | 0d | 2026-09-17 | 2026-09-20 | A01410 |  |  | Pipefitting [46 h] |
|  | 508 | **508 Insulation & Lagging** |  | 2026-08-19 | 2026-10-09 |  |  |  |  |
| A01660 |  | Strip lagging — hull board field 4D — Switchboard Room No. 1 | 0d | 2026-08-19 | 2026-09-01 |  |  |  | Insulation & Lagging [110 h] |
| A01700 |  | Strip lagging — lagging section 2E — Switchboard Room No. 1 | 0d | 2026-08-19 | 2026-08-22 |  |  |  | Insulation & Lagging [36 h]; Rigging & Weight Handling [9 h] |
| A01710 |  | Asbestos survey — lagging section 2E — Switchboard Room No. 1 | 0d | 2026-08-24 | 2026-08-30 | A01700 |  |  | Insulation & Lagging [43 h] |
| A01720 |  | Re-insulate lagging section 2E — Switchboard Room No. 1 | 0d | 2026-08-31 | 2026-09-04 | A01710 FS+2.4d |  |  | Insulation & Lagging [57 h] |
| A01670 |  | Asbestos survey — hull board field 4D — Switchboard Room No. 1 | 0d | 2026-09-03 | 2026-09-16 | A01660 |  |  | Insulation & Lagging [70 h] |
| A01730 |  | Sheathing & finish lagging section 2E — Switchboard Room No. 1 | 0d | 2026-09-04 | 2026-09-08 | A01720 |  |  | Insulation & Lagging [80 h] |
| A01680 |  | Re-insulate hull board field 4D — Switchboard Room No. 1 | 0d | 2026-09-16 | 2026-09-25 | A01670 FS+2.4d |  |  | Insulation & Lagging [197 h] |
| A01690 |  | Sheathing & finish hull board field 4D — Switchboard Room No. 1 | 0d | 2026-09-27 | 2026-10-09 | A01680 SS+7.2d |  |  | Insulation & Lagging [295 h] |
|  | 512 | **512 Ventilation & Uptakes** |  | 2026-08-06 | 2026-10-14 |  |  |  |  |
| A01220 |  | Survey & mark exhaust riser 9A — Switchboard Room No. 1 | 0d | 2026-08-06 A | 2026-08-17 |  | 35% | 0d | Sheet Metal / HVAC [267 h] |
| A01230 |  | Remove & tag exhaust riser 9A — Switchboard Room No. 1 | 0d | 2026-08-18 | 2026-08-24 | A01220 |  |  | Sheet Metal / HVAC [115 h] |
| A01480 |  | Survey & mark exhaust riser 4F — Switchboard Room No. 1 | 0d | 2026-08-20 | 2026-08-31 |  |  |  | Sheet Metal / HVAC [81 h] |
| A01240 |  | Fab replacement duct — exhaust riser 9A — Switchboard Room No. 1 | 0d | 2026-08-25 | 2026-08-30 | A01230 FS+0.8d |  |  | Sheet Metal / HVAC [38 h] |
| A01490 |  | Remove & tag exhaust riser 4F — Switchboard Room No. 1 | 0d | 2026-09-01 | 2026-09-07 | A01480 |  |  | Sheet Metal / HVAC [40 h] |
| A01250 |  | Install exhaust riser 9A — Switchboard Room No. 1 | 0d | 2026-09-02 | 2026-09-07 | A01240 FS+0.8d |  |  | Sheet Metal / HVAC [78 h] |
| A01260 |  | Duct leak test exhaust riser 9A — Switchboard Room No. 1 | 0d | 2026-09-08 | 2026-09-17 | A01250 FS+0.8d |  |  | Sheet Metal / HVAC [138 h] |
| A01500 |  | Fab replacement duct — exhaust riser 4F — Switchboard Room No. 1 | 0d | 2026-09-09 | 2026-09-13 | A01490 SS+4.8d |  |  | Sheet Metal / HVAC [29 h] |
| A01510 |  | Install exhaust riser 4F — Switchboard Room No. 1 | 0d | 2026-09-14 | 2026-09-24 | A01500 SS+4.8d |  |  | Sheet Metal / HVAC [72 h] |
| A01270 |  | Close-out & QA exhaust riser 9A — Switchboard Room No. 1 | 0d | 2026-09-18 | 2026-09-26 | A01260 FS+2.4d |  |  | Sheet Metal / HVAC [53 h] |
| A01520 |  | Duct leak test exhaust riser 4F — Switchboard Room No. 1 | 0d | 2026-09-24 | 2026-09-29 | A01510 |  |  | Sheet Metal / HVAC [97 h] |
| A01530 |  | Close-out & QA exhaust riser 4F — Switchboard Room No. 1 | 0d | 2026-10-02 | 2026-10-14 | A01520 FS+0.8d |  |  | Sheet Metal / HVAC [220 h] |

| ID | WBS | Activity | Duration | Start | Finish | Predecessors | Complete | Remaining | Resources |
| --- | --- | --- | --- | --- | --- | --- | --- | --- | --- |
|  | 560 | **560 Aux Machinery** |  | 2026-08-07 | 2026-10-02 |  |  |  |  |
| A01280 |  | Open & inspect pump set 4B (4-102-2-E) | 0d | 2026-08-07 A | 2026-08-12 |  | 57% | 0d | Mechanical [28 h]; Rigging & Weight Handling [7 h] |
| A01290 |  | Remove pump set 4B for shop (4-102-2-E) | 0d | 2026-08-12 | 2026-08-18 | A01280 |  |  | Mechanical [56 h] |
| A01300 |  | Shop overhaul — pump set 4B (4-102-2-E) | 0d | 2026-08-19 | 2026-08-22 | A01290 SS+2.4d |  |  | Mechanical [27 h] |
| A15440 |  | Repair & restore — Emergency Diesel Room (fwd) | 0d | 2026-08-20 | 2026-08-28 | A15430 |  |  | Mechanical [95 h] |
| A01310 |  | Reinstall & align pump set 4B (4-102-2-E) | 0d | 2026-08-22 | 2026-08-28 | A01300 |  |  | Mechanical [130 h]; Rigging & Weight Handling [33 h] |
| A15480 |  | Repair & restore — Forward IC Gyro | 0d | 2026-08-23 | 2026-09-02 | A15470 |  |  | Mechanical [133 h] |
| A01320 |  | Operational test pump set 4B (4-102-2-E) | 0d | 2026-08-30 | 2026-09-12 | A01310 FS+2.4d |  |  | Mechanical [98 h] |
| A15450 |  | Open & inspect — JP-5 Service Tank | 0d | 2026-09-04 | 2026-09-10 | A15440 |  |  | Mechanical [100 h] |
| A15470 |  | Open & inspect — Forward IC Gyro | 0d | 2026-09-13 | 2026-09-20 | A15460 |  |  | Mechanical [36 h] |
| A15430 |  | Open & inspect — Emergency Diesel Room (fwd) | 0d | 2026-09-21 | 2026-09-30 |  |  |  | Mechanical [164 h] |
| A15460 |  | Repair & restore — JP-5 Service Tank | 0d | 2026-09-24 | 2026-10-02 | A15450 |  |  | Mechanical [199 h] |
|  | 631 | **631 Preservation** |  | 2026-08-04 | 2026-09-15 |  |  |  |  |
| A01430 |  | Surface survey — bilge preservation 3E — Switchboard Room No. 1 | 0d | 2026-08-04 A | 2026-08-07 A |  | 100% |  | Preservation / Blast & Coat [70 h] |
| A01440 |  | Blast / mechanical prep bilge preservation 3E — Switchboard Room No. 1 | 0d | 2026-08-07 A | 2026-08-17 | A01430 FS+0.8d | 19% | 0d | Preservation / Blast & Coat [116 h] |
| A01450 |  | Prime coat bilge preservation 3E — Switchboard Room No. 1 | 0d | 2026-08-18 | 2026-08-22 | A01440 |  |  | Preservation / Blast & Coat [116 h] |
| A01460 |  | Top coat bilge preservation 3E — Switchboard Room No. 1 | 0d | 2026-08-24 | 2026-09-04 | A01450 FS+2.4d |  |  | Preservation / Blast & Coat [72 h] |
| A01470 |  | Cure & inspect bilge preservation 3E — Switchboard Room No. 1 | 0d | 2026-09-05 | 2026-09-15 | A01460 |  |  | Preservation / Blast & Coat [139 h] |
|  | SVC | **Zone Services & Access** |  | 2026-08-01 | 2026-10-21 |  |  |  |  |
| A13910 |  | Material staging & lay-down 3 — Forward Electrical & Stores | 0d | 2026-08-01 A | 2026-08-10 |  | 59% | 0d | Rigging & Weight Handling [74 h] |
| A13980 |  | Temp ventilation trunk 6 — Forward Electrical & Stores | 0d | 2026-08-01 A | 2026-08-08 A |  | 100% |  | Sheet Metal / HVAC [40 h] |
| A13890 |  | Clear lay-down 2 — Forward Electrical & Stores | 0d | 2026-08-02 A | 2026-08-11 |  | 65% | 0d | Rigging & Weight Handling [136 h] |
| A13950 |  | Run temporary power — Forward Electrical & Stores feeder 5 | 0d | 2026-08-06 A | 2026-08-10 |  | 87% | 0d | Electrical [71 h] |
| A14040 |  | Clear lay-down 9 — Forward Electrical & Stores | 0d | 2026-08-08 A | 2026-08-15 |  | 15% | 0d | Rigging & Weight Handling [136 h] |
| A13860 |  | Recover temp services — Forward Electrical & Stores feeder 1 | 0d | 2026-08-08 A | 2026-08-14 |  | 24% | 0d | Electrical [101 h] |
| A13930 |  | Stage scaffolding — Forward Electrical & Stores band 4 | 0d | 2026-08-11 | 2026-08-14 |  |  |  | Rigging & Weight Handling [52 h] |
| A14000 |  | Reposition temp vent 7 — Forward Electrical & Stores | 0d | 2026-08-18 | 2026-08-21 |  |  |  | Sheet Metal / HVAC [28 h] |
| A14020 |  | Recover temp services — Forward Electrical & Stores feeder 8 | 0d | 2026-08-20 | 2026-08-28 |  |  |  | Electrical [113 h] |
| A13990 |  | Reposition temp vent 6 — Forward Electrical & Stores | 0d | 2026-08-28 | 2026-09-07 | A13980 |  |  | Sheet Metal / HVAC [69 h] |
| A14010 |  | Temp ventilation trunk 7 — Forward Electrical & Stores | 0d | 2026-08-29 | 2026-09-07 | A14000 |  |  | Sheet Metal / HVAC [79 h] |
| A13920 |  | Clear lay-down 3 — Forward Electrical & Stores | 0d | 2026-08-31 | 2026-09-07 | A13910 |  |  | Rigging & Weight Handling [54 h] |
| A13940 |  | Strike scaffolding — Forward Electrical & Stores band 4 | 0d | 2026-09-03 | 2026-09-12 | A13930 |  |  | Rigging & Weight Handling [64 h] |
| A14030 |  | Run temporary power — Forward Electrical & Stores feeder 8 | 0d | 2026-09-05 | 2026-09-13 | A14020 |  |  | Electrical [66 h] |
| A13960 |  | Temp lighting string 5 — Forward Electrical & Stores | 0d | 2026-09-08 | 2026-09-14 | A13950 |  |  | Electrical [44 h] |
| A14050 |  | Material staging & lay-down 9 — Forward Electrical & Stores | 0d | 2026-09-12 | 2026-09-19 | A14040 |  |  | Rigging & Weight Handling [212 h] |
| A13900 |  | Material staging & lay-down 2 — Forward Electrical & Stores | 0d | 2026-09-15 | 2026-09-23 | A13890 |  |  | Rigging & Weight Handling [54 h] |
| A13870 |  | Temp lighting string 1 — Forward Electrical & Stores | 0d | 2026-09-20 | 2026-09-29 | A13860 |  |  | Electrical [76 h] |
| A13970 |  | Recover temp services — Forward Electrical & Stores feeder 5 | 0d | 2026-09-27 | 2026-10-03 | A13960 |  |  | Electrical [198 h] |
| A13880 |  | Run temporary power — Forward Electrical & Stores feeder 1 | 0d | 2026-10-18 | 2026-10-21 | A13870 |  |  | Electrical [70 h] |

| ID | WBS | Activity | Duration | Start | Finish | Predecessors | Complete | Remaining | Resources |
| --- | --- | --- | --- | --- | --- | --- | --- | --- | --- |
|  | Z3 | **Zone 3 — Forward Auxiliaries** |  | 2026-07-27 | 2026-10-18 |  |  |  |  |
|  | 130 | **130 Hull Structure** |  | 2026-07-31 | 2026-09-20 |  |  |  |  |
| A02070 |  | NDT survey — foundation group 3F — Reserve Feed Water Tank | 0d | 2026-07-31 A | 2026-08-03 A |  | 100% |  | Structural Welding [15 h] |
| A02120 |  | NDT survey — deck insert 3A — Reserve Feed Water Tank | 0d | 2026-08-01 A | 2026-08-09 A |  | 100% |  | Structural Welding [155 h] |
| A02080 |  | Crop out foundation group 3F — Reserve Feed Water Tank | 0d | 2026-08-05 A | 2026-08-14 | A02070 FS+2.4d | 41% | 0d | Structural Welding [271 h] |
| A02130 |  | Crop out deck insert 3A — Reserve Feed Water Tank | 0d | 2026-08-10 A | 2026-08-17 | A02120 FS+2.4d |  | 0d | Structural Welding [61 h] |
| A02090 |  | Fit & weld foundation group 3F — Reserve Feed Water Tank | 0d | 2026-08-14 | 2026-08-24 | A02080 |  |  | Structural Welding [204 h] |
| A02700 |  | NDT survey — structural bay 4F — Fan Room | 0d | 2026-08-18 | 2026-08-22 |  |  |  | Structural Welding [24 h]; Rigging & Weight Handling [6 h] |
| A02140 |  | Fit & weld deck insert 3A — Reserve Feed Water Tank | 0d | 2026-08-19 | 2026-08-22 | A02130 FS+0.8d |  |  | Structural Welding [48 h] |
| A02710 |  | Crop out structural bay 4F — Fan Room | 0d | 2026-08-22 | 2026-08-29 | A02700 |  |  | Structural Welding [81 h] |
| A02150 |  | NDT acceptance — deck insert 3A — Reserve Feed Water Tank | 0d | 2026-08-23 | 2026-08-25 | A02140 |  |  | Structural Welding [58 h] |
| A02100 |  | NDT acceptance — foundation group 3F — Reserve Feed Water Tank | 0d | 2026-08-24 | 2026-09-06 | A02090 FS+0.8d |  |  | Structural Welding [88 h] |
| A02160 |  | Grind & dress deck insert 3A — Reserve Feed Water Tank | 0d | 2026-08-28 | 2026-09-01 | A02150 |  |  | Structural Welding [101 h] |
| A02720 |  | Fit & weld structural bay 4F — Fan Room | 0d | 2026-08-29 | 2026-09-07 | A02710 |  |  | Structural Welding [142 h] |
| A02110 |  | Grind & dress foundation group 3F — Reserve Feed Water Tank | 0d | 2026-09-07 | 2026-09-13 | A02100 |  |  | Structural Welding [64 h] |
| A02730 |  | NDT acceptance — structural bay 4F — Fan Room | 0d | 2026-09-09 | 2026-09-12 | A02720 |  |  | Structural Welding [26 h] |
| A02740 |  | Grind & dress structural bay 4F — Fan Room | 0d | 2026-09-14 | 2026-09-20 | A02730 SS+2.4d |  |  | Structural Welding [125 h] |
|  | 300 | **300 Electrical Distribution** |  | 2026-08-01 | 2026-10-02 |  |  |  |  |
| A02020 |  | Circuit survey — panel group 3E — Reserve Feed Water Tank | 0d | 2026-08-01 A | 2026-08-08 A |  | 100% |  | Electrical [108 h] |
| A02450 |  | Circuit survey — lighting circuit 4A (4-120-4-Q) | 0d | 2026-08-07 A | 2026-08-15 |  | 37% | 0d | Electrical [112 h] |
| A02810 |  | Circuit survey — lighting circuit 5B — Fan Room | 0d | 2026-08-07 A | 2026-08-20 |  | 17% | 0d | Electrical [238 h] |
| A02030 |  | De-energize & tag out panel group 3E — Reserve Feed Water Tank | 0d | 2026-08-08 A | 2026-08-14 | A02020 FS+0.8d | 34% | 0d | Electrical [83 h] |
| A02460 |  | De-energize & tag out lighting circuit 4A (4-120-4-Q) | 0d | 2026-08-15 | 2026-08-22 | A02450 |  |  | Electrical [58 h] |
| A02040 |  | Pull & land cable — panel group 3E — Reserve Feed Water Tank | 0d | 2026-08-16 | 2026-08-25 | A02030 FS+2.4d |  |  | Electrical [87 h] |
| A02350 |  | Circuit survey — panel group 1F — Reserve Feed Water Tank | 0d | 2026-08-16 | 2026-08-25 |  |  |  | Electrical [156 h] |
| A02820 |  | De-energize & tag out lighting circuit 5B — Fan Room | 0d | 2026-08-22 | 2026-08-31 | A02810 FS-0.8d |  |  | Electrical [266 h] |
| A02470 |  | Pull & land cable — lighting circuit 4A (4-120-4-Q) | 0d | 2026-08-24 | 2026-08-28 | A02460 |  |  | Electrical [72 h] |
| A02360 |  | De-energize & tag out panel group 1F — Reserve Feed Water Tank | 0d | 2026-08-27 | 2026-09-03 | A02350 |  |  | Electrical [43 h] |
| A02050 |  | Megger & continuity test panel group 3E — Reserve Feed Water Tank | 0d | 2026-08-28 | 2026-08-31 | A02040 FS+2.4d |  |  | Electrical [36 h] |
| A02480 |  | Megger & continuity test lighting circuit 4A (4-120-4-Q) | 0d | 2026-08-30 | 2026-09-09 | A02470 |  |  | Electrical [123 h] |
| A02830 |  | Pull & land cable — lighting circuit 5B — Fan Room | 0d | 2026-09-01 | 2026-09-03 | A02820 FS+2.4d |  |  | Electrical [48 h] |
| A02060 |  | Energize & close-out panel group 3E — Reserve Feed Water Tank | 0d | 2026-09-03 | 2026-09-11 | A02050 FS+0.8d |  |  | Electrical [110 h] |
| A02840 |  | Megger & continuity test lighting circuit 5B — Fan Room | 0d | 2026-09-03 | 2026-09-10 | A02830 FS+2.4d |  |  | Electrical [33 h]; Rigging & Weight Handling [9 h] |
| A02370 |  | Pull & land cable — panel group 1F — Reserve Feed Water Tank | 0d | 2026-09-05 | 2026-09-15 | A02360 FS+2.4d |  |  | Electrical [225 h] |
| A02490 |  | Energize & close-out lighting circuit 4A (4-120-4-Q) | 0d | 2026-09-10 | 2026-09-23 | A02480 |  |  | Electrical [231 h] |
| A02850 |  | Energize & close-out lighting circuit 5B — Fan Room | 0d | 2026-09-10 | 2026-09-21 | A02840 |  |  | Electrical [203 h] |
| A02380 |  | Megger & continuity test panel group 1F — Reserve Feed Water Tank | 0d | 2026-09-16 | 2026-09-21 | A02370 |  |  | Electrical [77 h] |
| A02390 |  | Energize & close-out panel group 1F — Reserve Feed Water Tank | 0d | 2026-09-23 | 2026-10-02 | A02380 |  |  | Electrical [160 h] |

| ID | WBS | Activity | Duration | Start | Finish | Predecessors | Complete | Remaining | Resources |
| --- | --- | --- | --- | --- | --- | --- | --- | --- | --- |
|  | 430 | **430 Interior Communications** |  |  |  |  |  |  |  |
|  | 505 | **505 Piping Systems** |  | 2026-08-06 | 2026-10-18 |  |  |  |  |
| A02750 |  | Lay-up & drain pipe spool group 9A — Fan Room | 0d | 2026-08-06 A | 2026-08-17 |  | 32% | 0d | Pipefitting [76 h] |
| A01900 |  | Lay-up & drain pipe spool group 6C — Reserve Feed Water Tank | 0d | 2026-08-10 A | 2026-08-16 |  |  | 0d | Pipefitting [45 h] |
| A01790 |  | Lay-up & drain pipe spool group 2A — Reserve Feed Water Tank | 0d | 2026-08-14 | 2026-08-20 |  |  |  | Pipefitting [46 h] |
| A02920 |  | Lay-up & drain pipe spool group 9D — Fan Room | 0d | 2026-08-16 | 2026-08-23 |  |  |  | Pipefitting [58 h] |
| A01910 |  | Cut out pipe spool group 6C — Reserve Feed Water Tank | 0d | 2026-08-17 | 2026-08-31 | A01900 FS+0.8d |  |  | Pipefitting [161 h] |
| A02760 |  | Cut out pipe spool group 9A — Fan Room | 0d | 2026-08-19 | 2026-09-01 | A02750 |  |  | Pipefitting [100 h] |
| A01960 |  | Lay-up & drain pipe spool group 3D — Reserve Feed Water Tank | 0d | 2026-08-20 | 2026-08-26 |  |  |  | Pipefitting [41 h] |
| A01800 |  | Cut out pipe spool group 2A — Reserve Feed Water Tank | 0d | 2026-08-20 | 2026-08-25 | A01790 |  |  | Pipefitting [30 h] |
| A02930 |  | Cut out pipe spool group 9D — Fan Room | 0d | 2026-08-25 | 2026-08-31 | A02920 SS+7.2d |  |  | Pipefitting [47 h] |
| A01810 |  | Fab & fit pipe spool group 2A — Reserve Feed Water Tank | 0d | 2026-08-27 | 2026-08-30 | A01800 FS+0.8d |  |  | Pipefitting [21 h] |
| A01970 |  | Cut out pipe spool group 3D — Reserve Feed Water Tank | 0d | 2026-08-27 | 2026-09-05 | A01960 FS-2.4d |  |  | Pipefitting [299 h] |
| A02770 |  | Fab & fit pipe spool group 9A — Fan Room | 0d | 2026-09-02 | 2026-09-11 | A02760 FS+2.4d |  |  | Pipefitting [270 h] |
| A01820 |  | Weld out pipe spool group 2A — Reserve Feed Water Tank | 0d | 2026-09-02 | 2026-09-05 | A01810 |  |  | Pipefitting [33 h] |
| A01920 |  | Fab & fit pipe spool group 6C — Reserve Feed Water Tank | 0d | 2026-09-02 | 2026-09-15 | A01910 |  |  | Pipefitting [184 h] |
| A02940 |  | Fab & fit pipe spool group 9D — Fan Room | 0d | 2026-09-03 | 2026-09-14 | A02930 FS-4.8d |  |  | Pipefitting [65 h] |
| A01830 |  | Hydro test pipe spool group 2A — Reserve Feed Water Tank | 0d | 2026-09-06 | 2026-09-15 | A01820 |  |  | Pipefitting [78 h] |
| A01980 |  | Fab & fit pipe spool group 3D — Reserve Feed Water Tank | 0d | 2026-09-07 | 2026-09-18 | A01970 SS+2.4d |  |  | Pipefitting [77 h] |
| A02780 |  | Weld out pipe spool group 9A — Fan Room | 0d | 2026-09-11 | 2026-09-24 | A02770 FS+2.4d |  |  | Pipefitting [97 h] |
| A01840 |  | Flush & restore pipe spool group 2A — Reserve Feed Water Tank | 0d | 2026-09-16 | 2026-09-21 | A01830 FS+0.8d |  |  | Pipefitting [59 h] |
| A02950 |  | Weld out pipe spool group 9D — Fan Room | 0d | 2026-09-16 | 2026-09-20 | A02940 |  |  | Pipefitting [142 h] |
| A01930 |  | Weld out pipe spool group 6C — Reserve Feed Water Tank | 0d | 2026-09-17 | 2026-09-25 | A01920 |  |  | Pipefitting [175 h] |
| A01990 |  | Weld out pipe spool group 3D — Reserve Feed Water Tank | 0d | 2026-09-20 | 2026-09-27 | A01980 FS-4.8d |  |  | Pipefitting [168 h]; Rigging & Weight Handling [43 h] |
| A02960 |  | Hydro test pipe spool group 9D — Fan Room | 0d | 2026-09-22 | 2026-10-01 | A02950 FS+0.8d |  |  | Pipefitting [236 h]; Rigging & Weight Handling [59 h] |
| A02790 |  | Hydro test pipe spool group 9A — Fan Room | 0d | 2026-09-25 | 2026-09-27 | A02780 |  |  | Pipefitting [14 h] |
| A01940 |  | Hydro test pipe spool group 6C — Reserve Feed Water Tank | 0d | 2026-09-27 | 2026-10-04 | A01930 FS+2.4d |  |  | Pipefitting [115 h] |
| A02000 |  | Hydro test pipe spool group 3D — Reserve Feed Water Tank | 0d | 2026-09-27 | 2026-10-06 | A01990 |  |  | Pipefitting [54 h] |
| A02800 |  | Flush & restore pipe spool group 9A — Fan Room | 0d | 2026-09-30 | 2026-10-05 | A02790 |  |  | Pipefitting [41 h] |
| A02970 |  | Flush & restore pipe spool group 9D — Fan Room | 0d | 2026-10-04 | 2026-10-13 | A02960 FS+0.8d |  |  | Pipefitting [76 h] |
| A01950 |  | Flush & restore pipe spool group 6C — Reserve Feed Water Tank | 0d | 2026-10-06 | 2026-10-14 | A01940 |  |  | Pipefitting [44 h] |
| A02010 |  | Flush & restore pipe spool group 3D — Reserve Feed Water Tank | 0d | 2026-10-09 | 2026-10-18 | A02000 FS+2.4d |  |  | Pipefitting [164 h] |

| ID | WBS | Activity | Duration | Start | Finish | Predecessors | Complete | Remaining | Resources |
| --- | --- | --- | --- | --- | --- | --- | --- | --- | --- |
|  | 508 | **508 Insulation & Lagging** |  | 2026-07-27 | 2026-09-28 |  |  |  |  |
| A02610 |  | Strip lagging — lagging section 3D — Fan Room | 0d | 2026-07-27 A | 2026-08-07 A |  | 100% |  | Insulation & Lagging [65 h] |
| A02170 |  | Strip lagging — hull board field 8B — Reserve Feed Water Tank | 0d | 2026-08-03 A | 2026-08-08 A |  | 100% |  | Insulation & Lagging [70 h] |
| A02620 |  | Asbestos survey — lagging section 3D — Fan Room | 0d | 2026-08-09 A | 2026-08-19 | A02610 FS+0.8d | 3% | 0d | Insulation & Lagging [171 h] |
| A02180 |  | Asbestos survey — hull board field 8B — Reserve Feed Water Tank | 0d | 2026-08-09 A | 2026-08-15 | A02170 | 5% | 0d | Insulation & Lagging [99 h]; Rigging & Weight Handling [25 h] |
| A02190 |  | Re-insulate hull board field 8B — Reserve Feed Water Tank | 0d | 2026-08-17 | 2026-08-21 | A02180 |  |  | Insulation & Lagging [128 h] |
| A02260 |  | Strip lagging — lagging section 8D — Reserve Feed Water Tank | 0d | 2026-08-18 | 2026-09-01 |  |  |  | Insulation & Lagging [270 h] |
| A02630 |  | Re-insulate lagging section 3D — Fan Room | 0d | 2026-08-20 | 2026-08-26 | A02620 FS-0.8d |  |  | Insulation & Lagging [37 h] |
| A02200 |  | Sheathing & finish hull board field 8B — Reserve Feed Water Tank | 0d | 2026-08-23 | 2026-09-02 | A02190 |  |  | Insulation & Lagging [188 h] |
| A02640 |  | Sheathing & finish lagging section 3D — Fan Room | 0d | 2026-08-28 | 2026-09-06 | A02630 FS+0.8d |  |  | Insulation & Lagging [58 h] |
| A02270 |  | Asbestos survey — lagging section 8D — Reserve Feed Water Tank | 0d | 2026-09-03 | 2026-09-12 | A02260 FS+0.8d |  |  | Insulation & Lagging [112 h] |
| A02280 |  | Re-insulate lagging section 8D — Reserve Feed Water Tank | 0d | 2026-09-13 | 2026-09-24 | A02270 FS+0.8d |  |  | Insulation & Lagging [144 h] |
| A02290 |  | Sheathing & finish lagging section 8D — Reserve Feed Water Tank | 0d | 2026-09-24 | 2026-09-28 | A02280 FS+2.4d |  |  | Insulation & Lagging [45 h] |
|  | 512 | **512 Ventilation & Uptakes** |  | 2026-08-10 | 2026-10-11 |  |  |  |  |
| A02500 |  | Survey & mark supply trunk 5B — Fan Room | 0d | 2026-08-10 | 2026-08-13 |  |  |  | Sheet Metal / HVAC [52 h] |
| A02860 |  | Survey & mark exhaust riser 5C — Fan Room | 0d | 2026-08-14 | 2026-08-17 |  |  |  | Sheet Metal / HVAC [45 h] |
| A02510 |  | Remove & tag supply trunk 5B — Fan Room | 0d | 2026-08-14 | 2026-08-23 | A02500 |  |  | Sheet Metal / HVAC [60 h] |
| A02870 |  | Remove & tag exhaust riser 5C — Fan Room | 0d | 2026-08-20 | 2026-08-22 | A02860 FS+2.4d |  |  | Sheet Metal / HVAC [72 h] |
| A02880 |  | Fab replacement duct — exhaust riser 5C — Fan Room | 0d | 2026-08-22 | 2026-09-04 | A02870 |  |  | Sheet Metal / HVAC [101 h] |
| A02520 |  | Fab replacement duct — supply trunk 5B — Fan Room | 0d | 2026-08-25 | 2026-09-05 | A02510 |  |  | Sheet Metal / HVAC [172 h] |
| A02890 |  | Install exhaust riser 5C — Fan Room | 0d | 2026-09-07 | 2026-09-16 | A02880 SS+4.8d |  |  | Sheet Metal / HVAC [240 h] |
| A02530 |  | Install supply trunk 5B — Fan Room | 0d | 2026-09-07 | 2026-09-15 | A02520 FS+0.8d |  |  | Sheet Metal / HVAC [138 h] |
| A02540 |  | Duct leak test supply trunk 5B — Fan Room | 0d | 2026-09-16 | 2026-09-23 | A02530 FS+0.8d |  |  | Sheet Metal / HVAC [185 h] |
| A02900 |  | Duct leak test exhaust riser 5C — Fan Room | 0d | 2026-09-18 | 2026-09-29 | A02890 FS+2.4d |  |  | Sheet Metal / HVAC [160 h] |
| A02550 |  | Close-out & QA supply trunk 5B — Fan Room | 0d | 2026-09-26 | 2026-10-05 | A02540 FS+0.8d |  |  | Sheet Metal / HVAC [269 h] |
| A02910 |  | Close-out & QA exhaust riser 5C — Fan Room | 0d | 2026-09-30 | 2026-10-11 | A02900 FS+0.8d |  |  | Sheet Metal / HVAC [242 h] |

| ID | WBS | Activity | Duration | Start | Finish | Predecessors | Complete | Remaining | Resources |
| --- | --- | --- | --- | --- | --- | --- | --- | --- | --- |
|  | 560 | **560 Aux Machinery** |  | 2026-08-06 | 2026-10-05 |  |  |  |  |
| A02560 |  | Open & inspect motor group 9C — Fan Room | 0d | 2026-08-06 A | 2026-08-09 A |  | 100% |  | Mechanical [17 h] |
| A02210 |  | Open & inspect pump set 2C — Reserve Feed Water Tank | 0d | 2026-08-09 A | 2026-08-13 |  | 10% | 0d | Mechanical [51 h] |
| A02570 |  | Remove motor group 9C for shop — Fan Room | 0d | 2026-08-10 | 2026-08-12 | A02560 |  |  | Mechanical [53 h] |
| A02580 |  | Shop overhaul — motor group 9C — Fan Room | 0d | 2026-08-12 | 2026-08-23 | A02570 |  |  | Mechanical [212 h] |
| A02220 |  | Remove pump set 2C for shop — Reserve Feed Water Tank | 0d | 2026-08-13 | 2026-08-22 | A02210 |  |  | Mechanical [247 h] |
| A02230 |  | Shop overhaul — pump set 2C — Reserve Feed Water Tank | 0d | 2026-08-23 | 2026-09-05 | A02220 |  |  | Mechanical [117 h] |
| A02590 |  | Reinstall & align motor group 9C — Fan Room | 0d | 2026-08-24 | 2026-08-26 | A02580 FS+2.4d |  |  | Mechanical [57 h] |
| A02600 |  | Operational test motor group 9C — Fan Room | 0d | 2026-08-27 | 2026-09-04 | A02590 |  |  | Mechanical [233 h] |
| A02240 |  | Reinstall & align pump set 2C — Reserve Feed Water Tank | 0d | 2026-09-08 | 2026-09-22 | A02230 |  |  | Mechanical [412 h] |
| A02250 |  | Operational test pump set 2C — Reserve Feed Water Tank | 0d | 2026-09-23 | 2026-10-05 | A02240 SS+2.4d |  |  | Mechanical [134 h] |
|  | 631 | **631 Preservation** |  | 2026-07-28 | 2026-10-14 |  |  |  |  |
| A02650 |  | Surface survey — bilge preservation 5E — Fan Room | 0d | 2026-07-28 A | 2026-08-06 A |  | 100% |  | Preservation / Blast & Coat [54 h] |
| A02300 |  | Surface survey — overhead coating 8E — Reserve Feed Water Tank | 0d | 2026-08-06 A | 2026-08-19 |  | 28% | 0d | Preservation / Blast & Coat [87 h] |
| A02660 |  | Blast / mechanical prep bilge preservation 5E — Fan Room | 0d | 2026-08-08 A | 2026-08-11 | A02650 | 53% | 0d | Preservation / Blast & Coat [112 h] |
| A01850 |  | Surface survey — bilge preservation 7B — Reserve Feed Water Tank | 0d | 2026-08-12 | 2026-08-15 |  |  |  | Preservation / Blast & Coat [60 h] |
| A02670 |  | Prime coat bilge preservation 5E — Fan Room | 0d | 2026-08-14 | 2026-08-26 | A02660 |  |  | Preservation / Blast & Coat [325 h] |
| A01860 |  | Blast / mechanical prep bilge preservation 7B — Reserve Feed Water Tank | 0d | 2026-08-18 | 2026-08-20 | A01850 |  |  | Preservation / Blast & Coat [19 h] |
| A02400 |  | Surface survey — deck coating 4A — Reserve Feed Water Tank | 0d | 2026-08-20 | 2026-09-01 |  |  |  | Preservation / Blast & Coat [239 h] |
| A01870 |  | Prime coat bilge preservation 7B — Reserve Feed Water Tank | 0d | 2026-08-21 | 2026-08-27 | A01860 FS+2.4d |  |  | Preservation / Blast & Coat [76 h] |
| A02310 |  | Blast / mechanical prep overhead coating 8E — Reserve Feed Water Tank | 0d | 2026-08-21 | 2026-08-28 | A02300 FS+2.4d |  |  | Preservation / Blast & Coat [85 h] |
| A02680 |  | Top coat bilge preservation 5E — Fan Room | 0d | 2026-08-29 | 2026-09-11 | A02670 |  |  | Preservation / Blast & Coat [324 h] |
| A01880 |  | Top coat bilge preservation 7B — Reserve Feed Water Tank | 0d | 2026-08-30 | 2026-09-07 | A01870 |  |  | Preservation / Blast & Coat [96 h] |
| A02320 |  | Prime coat overhead coating 8E — Reserve Feed Water Tank | 0d | 2026-08-31 | 2026-09-09 | A02310 |  |  | Preservation / Blast & Coat [103 h] |
| A02410 |  | Blast / mechanical prep deck coating 4A — Reserve Feed Water Tank | 0d | 2026-09-02 | 2026-09-13 | A02400 |  |  | Preservation / Blast & Coat [201 h]; Rigging & Weight Handling [51 h] |
| A01890 |  | Cure & inspect bilge preservation 7B — Reserve Feed Water Tank | 0d | 2026-09-07 | 2026-09-18 | A01880 FS+0.8d |  |  | Preservation / Blast & Coat [273 h] |
| A02330 |  | Top coat overhead coating 8E — Reserve Feed Water Tank | 0d | 2026-09-11 | 2026-09-15 | A02320 |  |  | Preservation / Blast & Coat [70 h] |
| A02690 |  | Cure & inspect bilge preservation 5E — Fan Room | 0d | 2026-09-13 | 2026-09-16 | A02680 |  |  | Preservation / Blast & Coat [57 h] |
| A02420 |  | Prime coat deck coating 4A — Reserve Feed Water Tank | 0d | 2026-09-15 | 2026-09-26 | A02410 FS+0.8d |  |  | Preservation / Blast & Coat [94 h] |
| A02340 |  | Cure & inspect overhead coating 8E — Reserve Feed Water Tank | 0d | 2026-09-15 | 2026-09-29 | A02330 FS+0.8d |  |  | Preservation / Blast & Coat [81 h] |
| A02430 |  | Top coat deck coating 4A — Reserve Feed Water Tank | 0d | 2026-09-29 | 2026-10-05 | A02420 SS+7.2d |  |  | Preservation / Blast & Coat [119 h] |
| A02440 |  | Cure & inspect deck coating 4A — Reserve Feed Water Tank | 0d | 2026-10-06 | 2026-10-14 | A02430 FS+2.4d |  |  | Preservation / Blast & Coat [119 h] |

| ID | WBS | Activity | Duration | Start | Finish | Predecessors | Complete | Remaining | Resources |
| --- | --- | --- | --- | --- | --- | --- | --- | --- | --- |
|  | SVC | **Zone Services & Access** |  | 2026-07-27 | 2026-10-17 |  |  |  |  |
| A14150 |  | Run temporary power — Forward Auxiliaries feeder 5 | 0d | 2026-07-27 A | 2026-08-05 A |  | 100% |  | Electrical [147 h] |
| A14180 |  | Run temporary power — Forward Auxiliaries feeder 6 | 0d | 2026-07-30 A | 2026-08-01 A |  | 100% |  | Electrical [70 h] |
| A14060 |  | Temp lighting string 1 — Forward Auxiliaries | 0d | 2026-08-01 A | 2026-08-04 A |  | 100% |  | Electrical [71 h] |
| A14260 |  | Reposition temp vent 9 — Forward Auxiliaries | 0d | 2026-08-02 A | 2026-08-11 |  | 90% | 0d | Sheet Metal / HVAC [156 h] |
| A14080 |  | Run temporary power — Forward Auxiliaries feeder 2 | 0d | 2026-08-04 A | 2026-08-07 A |  | 100% |  | Electrical [53 h] |
| A14230 |  | Rig access platforms — Forward Auxiliaries band 8 | 0d | 2026-08-07 A | 2026-08-12 |  | 57% | 0d | Rigging & Weight Handling [138 h] |
| A14110 |  | Reposition temp vent 3 — Forward Auxiliaries | 0d | 2026-08-07 A | 2026-08-15 |  | 34% | 0d | Sheet Metal / HVAC [101 h] |
| A14280 |  | Reposition temp vent 10 — Forward Auxiliaries | 0d | 2026-08-10 | 2026-08-19 |  |  |  | Sheet Metal / HVAC [222 h] |
| A14210 |  | Temp ventilation trunk 7 — Forward Auxiliaries | 0d | 2026-08-11 | 2026-08-13 |  |  |  | Sheet Metal / HVAC [32 h] |
| A14130 |  | Reposition temp vent 4 — Forward Auxiliaries | 0d | 2026-08-12 | 2026-08-21 |  |  |  | Sheet Metal / HVAC [54 h] |
| A14120 |  | Temp ventilation trunk 3 — Forward Auxiliaries | 0d | 2026-08-21 | 2026-08-29 | A14110 |  |  | Sheet Metal / HVAC [153 h] |
| A14070 |  | Run temporary power — Forward Auxiliaries feeder 1 | 0d | 2026-08-21 | 2026-08-25 | A14060 |  |  | Electrical [56 h] |
| A14220 |  | Reposition temp vent 7 — Forward Auxiliaries | 0d | 2026-08-21 | 2026-08-25 | A14210 |  |  | Sheet Metal / HVAC [22 h] |
| A14240 |  | Strike scaffolding — Forward Auxiliaries band 8 | 0d | 2026-08-24 | 2026-08-27 | A14230 |  |  | Rigging & Weight Handling [87 h] |
| A14090 |  | Recover temp services — Forward Auxiliaries feeder 2 | 0d | 2026-08-24 | 2026-08-26 | A14080 |  |  | Electrical [19 h] |
| A14160 |  | Temp lighting string 5 — Forward Auxiliaries | 0d | 2026-08-26 | 2026-08-29 | A14150 |  |  | Electrical [97 h] |
| A14190 |  | Temp lighting string 6 — Forward Auxiliaries | 0d | 2026-08-29 | 2026-09-01 | A14180 |  |  | Electrical [39 h] |
| A14290 |  | Temp ventilation trunk 10 — Forward Auxiliaries | 0d | 2026-09-01 | 2026-09-04 | A14280 |  |  | Sheet Metal / HVAC [72 h] |
| A14100 |  | Temp lighting string 2 — Forward Auxiliaries | 0d | 2026-09-04 | 2026-09-08 | A14090 |  |  | Electrical [133 h] |
| A14270 |  | Temp ventilation trunk 9 — Forward Auxiliaries | 0d | 2026-09-07 | 2026-09-10 | A14260 |  |  | Sheet Metal / HVAC [22 h] |
| A14170 |  | Recover temp services — Forward Auxiliaries feeder 5 | 0d | 2026-09-12 | 2026-09-20 | A14160 |  |  | Electrical [257 h] |
| A14140 |  | Temp ventilation trunk 4 — Forward Auxiliaries | 0d | 2026-09-27 | 2026-10-07 | A14130 |  |  | Sheet Metal / HVAC [168 h] |
| A14250 |  | Stage scaffolding — Forward Auxiliaries band 8 | 0d | 2026-10-03 | 2026-10-12 | A14240 |  |  | Rigging & Weight Handling [136 h] |
| A14200 |  | Recover temp services — Forward Auxiliaries feeder 6 | 0d | 2026-10-10 | 2026-10-17 | A14190 |  |  | Electrical [84 h] |

| ID | WBS | Activity | Duration | Start | Finish | Predecessors | Resources |
| --- | --- | --- | --- | --- | --- | --- | --- |
|  | Z4 | **Zone 4 — Hangar & Midships** |  | 2026-07-27 | 2026-11-04 |  |  |
|  | 130 | **130 Hull Structure** |  | 2026-08-18 | 2026-10-09 |  |  |
| A00360 |  | NDT survey — deck insert 6A — Hangar Bay 2 | 0d | 2026-08-18 | 2026-08-30 |  | Structural Welding [258 h] |
| A00370 |  | Crop out deck insert 6A — Hangar Bay 2 | 0d | 2026-08-30 | 2026-09-08 | A00360 | Structural Welding [70 h] |
| A00380 |  | Fit & weld deck insert 6A — Hangar Bay 2 | 0d | 2026-09-10 | 2026-09-17 | A00370 FS+0.8d | Structural Welding [181 h] |
| A00390 |  | NDT acceptance — deck insert 6A — Hangar Bay 2 | 0d | 2026-09-19 | 2026-09-27 | A00380 FS+0.8d | Structural Welding [66 h] |
| A00400 |  | Grind & dress deck insert 6A — Hangar Bay 2 | 0d | 2026-09-29 | 2026-10-09 | A00390 | Structural Welding [272 h] |
|  | 300 | **300 Electrical Distribution** |  | 2026-08-17 | 2026-10-06 |  |  |
| A00190 |  | Circuit survey — lighting circuit 8D — Hangar Bay 2 | 0d | 2026-08-17 | 2026-08-31 |  | Electrical [336 h] |
| A00200 |  | De-energize & tag out lighting circuit 8D — Hangar Bay 2 | 0d | 2026-09-02 | 2026-09-07 | A00190 FS+0.8d | Electrical [103 h] |
| A00210 |  | Pull & land cable — lighting circuit 8D — Hangar Bay 2 | 0d | 2026-09-09 | 2026-09-20 | A00200 SS+2.4d | Electrical [133 h] |
| A00220 |  | Megger & continuity test lighting circuit 8D — Hangar Bay 2 | 0d | 2026-09-20 | 2026-09-24 | A00210 | Electrical [23 h] |
| A00230 |  | Energize & close-out lighting circuit 8D — Hangar Bay 2 | 0d | 2026-09-26 | 2026-10-06 | A00220 | Electrical [193 h] |
|  | 430 | **430 Interior Communications** |  |  |  |  |  |
|  | 505 | **505 Piping Systems** |  | 2026-08-12 | 2026-10-09 |  |  |
| A00410 |  | Lay-up & drain valve bank 4B — Hangar Bay 2 | 0d | 2026-08-12 | 2026-08-20 |  | Pipefitting [113 h] |
| A00080 |  | Lay-up & drain pipe spool group 8B — Hangar Bay 2 | 0d | 2026-08-12 | 2026-08-15 |  | Pipefitting [89 h] |
| A00530 |  | Lay-up & drain valve bank 1D — Hangar Bay 2 | 0d | 2026-08-13 | 2026-08-18 |  | Pipefitting [31 h] |
| A00090 |  | Cut out pipe spool group 8B — Hangar Bay 2 | 0d | 2026-08-16 | 2026-08-26 | A00080 FS+0.8d | Pipefitting [122 h] |
| A00300 |  | Lay-up & drain pipe spool group 1F — Hangar Bay 2 | 0d | 2026-08-18 | 2026-08-26 |  | Pipefitting [219 h] |
| A00540 |  | Cut out valve bank 1D — Hangar Bay 2 | 0d | 2026-08-19 | 2026-08-28 | A00530 FS+2.4d | Pipefitting [100 h] |
| A00420 |  | Cut out valve bank 4B — Hangar Bay 2 | 0d | 2026-08-23 | 2026-08-31 | A00410 | Pipefitting [61 h] |
| A00310 |  | Cut out pipe spool group 1F — Hangar Bay 2 | 0d | 2026-08-26 | 2026-09-04 | A00300 FS+2.4d | Pipefitting [48 h] |
| A00100 |  | Fab & fit pipe spool group 8B — Hangar Bay 2 | 0d | 2026-08-28 | 2026-08-30 | A00090 | Pipefitting [73 h] |
| A00550 |  | Fab & fit valve bank 1D — Hangar Bay 2 | 0d | 2026-08-29 | 2026-09-06 | A00540 | Pipefitting [235 h] |
| A00110 |  | Weld out pipe spool group 8B — Hangar Bay 2 | 0d | 2026-09-01 | 2026-09-12 | A00100 | Pipefitting [134 h] |
| A00430 |  | Fab & fit valve bank 4B — Hangar Bay 2 | 0d | 2026-09-01 | 2026-09-14 | A00420 | Pipefitting [271 h] |
| A00320 |  | Fab & fit pipe spool group 1F — Hangar Bay 2 | 0d | 2026-09-04 | 2026-09-18 | A00310 | Pipefitting [324 h] |
| A00560 |  | Weld out valve bank 1D — Hangar Bay 2 | 0d | 2026-09-06 | 2026-09-17 | A00550 | Pipefitting [271 h] |
| A00120 |  | Hydro test pipe spool group 8B — Hangar Bay 2 | 0d | 2026-09-12 | 2026-09-22 | A00110 FS+0.8d | Pipefitting [127 h] |
| A00440 |  | Weld out valve bank 4B — Hangar Bay 2 | 0d | 2026-09-14 | 2026-09-25 | A00430 | Pipefitting [91 h] |
| A00570 |  | Hydro test valve bank 1D — Hangar Bay 2 | 0d | 2026-09-18 | 2026-09-26 | A00560 | Pipefitting [191 h] |
| A00330 |  | Weld out pipe spool group 1F — Hangar Bay 2 | 0d | 2026-09-18 | 2026-09-21 | A00320 FS+0.8d | Pipefitting [27 h] |
| A00130 |  | Flush & restore pipe spool group 8B — Hangar Bay 2 | 0d | 2026-09-23 | 2026-09-27 | A00120 FS+2.4d | Pipefitting [26 h] |
| A00340 |  | Hydro test pipe spool group 1F — Hangar Bay 2 | 0d | 2026-09-23 | 2026-09-28 | A00330 | Pipefitting [136 h] |
| A00450 |  | Hydro test valve bank 4B — Hangar Bay 2 | 0d | 2026-09-27 | 2026-10-04 | A00440 | Pipefitting [189 h] |
| A00580 |  | Flush & restore valve bank 1D — Hangar Bay 2 | 0d | 2026-09-27 | 2026-10-07 | A00570 FS+2.4d | Pipefitting [80 h] |
| A00350 |  | Flush & restore pipe spool group 1F — Hangar Bay 2 | 0d | 2026-09-30 | 2026-10-05 | A00340 | Pipefitting [92 h] |
| A00460 |  | Flush & restore valve bank 4B — Hangar Bay 2 | 0d | 2026-10-04 | 2026-10-09 | A00450 FS-0.8d | Pipefitting [85 h] |

| ID | WBS | Activity | Duration | Start | Finish | Predecessors | Complete | Remaining | Resources |
| --- | --- | --- | --- | --- | --- | --- | --- | --- | --- |
|  | 508 | **508 Insulation & Lagging** |  | 2026-07-28 | 2026-09-04 |  |  |  |  |
| A00590 |  | Strip lagging — lagging section 6E — Hangar Bay 2 | 0d | 2026-07-28 A | 2026-08-05 A |  | 100% |  | Insulation & Lagging [236 h] |
| A00600 |  | Asbestos survey — lagging section 6E — Hangar Bay 2 | 0d | 2026-08-08 A | 2026-08-11 | A00590 FS+0.8d | 55% | 0d | Insulation & Lagging [56 h] |
| A00610 |  | Re-insulate lagging section 6E — Hangar Bay 2 | 0d | 2026-08-14 | 2026-08-24 | A00600 |  |  | Insulation & Lagging [134 h] |
| A00620 |  | Sheathing & finish lagging section 6E — Hangar Bay 2 | 0d | 2026-08-25 | 2026-09-04 | A00610 |  |  | Insulation & Lagging [88 h] |
|  | 512 | **512 Ventilation & Uptakes** |  | 2026-07-27 | 2026-10-27 |  |  |  |  |
| A00470 |  | Survey & mark exhaust riser 1C — Hangar Bay 2 | 0d | 2026-07-27 A | 2026-07-30 A |  | 100% |  | Sheet Metal / HVAC [46 h] |
| A00480 |  | Remove & tag exhaust riser 1C — Hangar Bay 2 | 0d | 2026-07-31 A | 2026-08-13 | A00470 | 70% | 0d | Sheet Metal / HVAC [105 h] |
| A00240 |  | Survey & mark vent branch 5E — Hangar Bay 2 | 0d | 2026-08-11 | 2026-08-23 |  |  |  | Sheet Metal / HVAC [90 h] |
| A00490 |  | Fab replacement duct — exhaust riser 1C — Hangar Bay 2 | 0d | 2026-08-15 | 2026-08-20 | A00480 SS+2.4d |  |  | Sheet Metal / HVAC [144 h] |
| A00020 |  | Survey & mark supply trunk 6A — Hangar Bay 2 | 0d | 2026-08-17 | 2026-08-24 |  |  |  | Sheet Metal / HVAC [60 h] |
| A00500 |  | Install exhaust riser 1C — Hangar Bay 2 | 0d | 2026-08-22 | 2026-09-02 | A00490 FS+0.8d |  |  | Sheet Metal / HVAC [292 h] |
| A00030 |  | Remove & tag supply trunk 6A — Hangar Bay 2 | 0d | 2026-08-25 | 2026-09-04 | A00020 |  |  | Sheet Metal / HVAC [190 h] |
| A00250 |  | Remove & tag vent branch 5E — Hangar Bay 2 | 0d | 2026-08-25 | 2026-09-08 | A00240 FS-2.4d |  |  | Sheet Metal / HVAC [91 h] |
| A00510 |  | Duct leak test exhaust riser 1C — Hangar Bay 2 | 0d | 2026-09-05 | 2026-09-13 | A00500 |  |  | Sheet Metal / HVAC [67 h] |
| A00040 |  | Fab replacement duct — supply trunk 6A — Hangar Bay 2 | 0d | 2026-09-06 | 2026-09-20 | A00030 |  |  | Sheet Metal / HVAC [245 h] |
| A00260 |  | Fab replacement duct — vent branch 5E — Hangar Bay 2 | 0d | 2026-09-09 | 2026-09-18 | A00250 |  |  | Sheet Metal / HVAC [191 h]; Rigging & Weight Handling [48 h] |
| A00520 |  | Close-out & QA exhaust riser 1C — Hangar Bay 2 | 0d | 2026-09-14 | 2026-09-21 | A00510 |  |  | Sheet Metal / HVAC [124 h] |
| A00270 |  | Install vent branch 5E — Hangar Bay 2 | 0d | 2026-09-18 | 2026-09-29 | A00260 |  |  | Sheet Metal / HVAC [179 h] |
| A00050 |  | Install supply trunk 6A — Hangar Bay 2 | 0d | 2026-09-20 | 2026-09-30 | A00040 |  |  | Sheet Metal / HVAC [167 h] |
| A00280 |  | Duct leak test vent branch 5E — Hangar Bay 2 | 0d | 2026-09-30 | 2026-10-12 | A00270 |  |  | Sheet Metal / HVAC [248 h] |
| A00060 |  | Duct leak test supply trunk 6A — Hangar Bay 2 | 0d | 2026-10-01 | 2026-10-06 | A00050 |  |  | Sheet Metal / HVAC [35 h] |
| A00070 |  | Close-out & QA supply trunk 6A — Hangar Bay 2 | 0d | 2026-10-07 | 2026-10-13 | A00060 FS+0.8d |  |  | Sheet Metal / HVAC [164 h] |
| A00290 |  | Close-out & QA vent branch 5E — Hangar Bay 2 | 0d | 2026-10-15 | 2026-10-27 | A00280 |  |  | Sheet Metal / HVAC [150 h] |

| ID | WBS | Activity | Duration | Start | Finish | Predecessors | Complete | Remaining | Resources |
| --- | --- | --- | --- | --- | --- | --- | --- | --- | --- |
|  | 560 | **560 Aux Machinery** |  |  |  |  |  |  |  |
|  | 631 | **631 Preservation** |  | 2026-08-20 | 2026-09-30 |  |  |  |  |
| A00140 |  | Surface survey — bilge preservation 9C — Hangar Bay 2 | 0d | 2026-08-20 | 2026-08-23 |  |  |  | Preservation / Blast & Coat [87 h] |
| A00150 |  | Blast / mechanical prep bilge preservation 9C — Hangar Bay 2 | 0d | 2026-08-23 | 2026-08-30 | A00140 FS+2.4d |  |  | Preservation / Blast & Coat [40 h] |
| A00160 |  | Prime coat bilge preservation 9C — Hangar Bay 2 | 0d | 2026-08-31 | 2026-09-11 | A00150 FS-0.8d |  |  | Preservation / Blast & Coat [141 h]; Rigging & Weight Handling [36 h] |
| A00170 |  | Top coat bilge preservation 9C — Hangar Bay 2 | 0d | 2026-09-14 | 2026-09-21 | A00160 FS+2.4d |  |  | Preservation / Blast & Coat [217 h] |
| A00180 |  | Cure & inspect bilge preservation 9C — Hangar Bay 2 | 0d | 2026-09-23 | 2026-09-30 | A00170 |  |  | Preservation / Blast & Coat [104 h] |
|  | SVC | **Zone Services & Access** |  | 2026-07-29 | 2026-11-04 |  |  |  |  |
| A14470 |  | Clear lay-down 9 — Hangar & Midships | 0d | 2026-07-29 A | 2026-08-04 A |  | 100% |  | Rigging & Weight Handling [104 h] |
| A14320 |  | Clear lay-down 2 — Hangar & Midships | 0d | 2026-07-29 A | 2026-08-02 A |  | 100% |  | Rigging & Weight Handling [77 h] |
| A14300 |  | Reposition temp vent 1 — Hangar & Midships | 0d | 2026-07-30 A | 2026-08-02 A |  | 100% |  | Sheet Metal / HVAC [35 h] |
| A14360 |  | Recover temp services — Hangar & Midships feeder 4 | 0d | 2026-08-02 A | 2026-08-11 |  | 75% | 0d | Electrical [73 h] |
| A14490 |  | Clear lay-down 10 — Hangar & Midships | 0d | 2026-08-03 A | 2026-08-05 A |  | 100% |  | Rigging & Weight Handling [38 h] |
| A14380 |  | Run temporary power — Hangar & Midships feeder 5 | 0d | 2026-08-04 A | 2026-08-11 |  | 79% | 0d | Electrical [180 h] |
| A14340 |  | Temp ventilation trunk 3 — Hangar & Midships | 0d | 2026-08-07 A | 2026-08-15 |  | 35% | 0d | Sheet Metal / HVAC [197 h] |
| A14430 |  | Reposition temp vent 7 — Hangar & Midships | 0d | 2026-08-07 A | 2026-08-11 |  | 62% | 0d | Sheet Metal / HVAC [82 h] |
| A14480 |  | Material staging & lay-down 9 — Hangar & Midships | 0d | 2026-08-11 | 2026-08-19 | A14470 |  |  | Rigging & Weight Handling [144 h] |
| A14450 |  | Reposition temp vent 8 — Hangar & Midships | 0d | 2026-08-14 | 2026-08-20 |  |  |  | Sheet Metal / HVAC [37 h] |
| A14400 |  | Temp lighting string 6 — Hangar & Midships | 0d | 2026-08-15 | 2026-08-18 |  |  |  | Electrical [18 h] |
| A14310 |  | Temp ventilation trunk 1 — Hangar & Midships | 0d | 2026-08-25 | 2026-09-01 | A14300 |  |  | Sheet Metal / HVAC [161 h] |
| A14440 |  | Temp ventilation trunk 7 — Hangar & Midships | 0d | 2026-08-28 | 2026-09-04 | A14430 |  |  | Sheet Metal / HVAC [113 h] |
| A14460 |  | Temp ventilation trunk 8 — Hangar & Midships | 0d | 2026-08-30 | 2026-09-06 | A14450 |  |  | Sheet Metal / HVAC [188 h] |
| A14350 |  | Reposition temp vent 3 — Hangar & Midships | 0d | 2026-09-02 | 2026-09-12 | A14340 |  |  | Sheet Metal / HVAC [206 h] |
| A14330 |  | Material staging & lay-down 2 — Hangar & Midships | 0d | 2026-09-04 | 2026-09-14 | A14320 |  |  | Rigging & Weight Handling [342 h] |
| A14370 |  | Run temporary power — Hangar & Midships feeder 4 | 0d | 2026-09-04 | 2026-09-09 | A14360 |  |  | Electrical [30 h] |
| A14410 |  | Run temporary power — Hangar & Midships feeder 6 | 0d | 2026-09-06 | 2026-09-16 | A14400 |  |  | Electrical [267 h] |
| A14500 |  | Material staging & lay-down 10 — Hangar & Midships | 0d | 2026-09-10 | 2026-09-17 | A14490 |  |  | Rigging & Weight Handling [236 h] |
| A14390 |  | Temp lighting string 5 — Hangar & Midships | 0d | 2026-09-19 | 2026-09-28 | A14380 |  |  | Electrical [118 h] |
| A14420 |  | Recover temp services — Hangar & Midships feeder 6 | 0d | 2026-10-26 | 2026-11-04 | A14410 |  |  | Electrical [206 h] |

| ID | WBS | Activity | Duration | Start | Finish | Predecessors | Complete | Remaining | Resources |
| --- | --- | --- | --- | --- | --- | --- | --- | --- | --- |
|  | Z5 | **Zone 5 — Aft Auxiliaries & Berthing** |  | 2026-07-29 | 2026-10-28 |  |  |  |  |
|  | 130 | **130 Hull Structure** |  | 2026-08-01 | 2026-10-21 |  |  |  |  |
| A03790 |  | NDT survey — deck insert 2B — Forced Draft Blower Room No. 3 | 0d | 2026-08-01 A | 2026-08-05 A |  | 100% |  | Structural Welding [44 h] |
| A03930 |  | NDT survey — deck insert 2E — Forced Draft Blower Room No. 3 | 0d | 2026-08-03 A | 2026-08-16 |  | 46% | 0d | Structural Welding [381 h] |
| A11760 |  | NDT survey — structural bay 7D — Chief Petty Officer Berthing | 0d | 2026-08-03 A | 2026-08-10 |  | 69% | 0d | Structural Welding [103 h] |
| A03130 |  | NDT survey — structural bay 3D — Aft IC & Gyro Room | 0d | 2026-08-04 A | 2026-08-12 |  | 65% | 0d | Structural Welding [103 h] |
| A03530 |  | NDT survey — structural bay 1C — Forced Draft Blower Room No. 3 | 0d | 2026-08-06 A | 2026-08-16 |  | 32% | 0d | Structural Welding [228 h] |
| A11130 |  | NDT survey — deck insert 8D — Cableway Trunk Fr 140 | 0d | 2026-08-07 A | 2026-08-19 |  | 24% | 0d | Structural Welding [223 h]; Rigging & Weight Handling [56 h] |
| A03800 |  | Crop out deck insert 2B — Forced Draft Blower Room No. 3 | 0d | 2026-08-07 A | 2026-08-13 | A03790 FS+2.4d | 42% | 0d | Structural Welding [149 h] |
| A03740 |  | NDT survey — structural bay 7A — Forced Draft Blower Room No. 3 | 0d | 2026-08-09 A | 2026-08-12 |  | 14% | 0d | Structural Welding [42 h] |
| A11770 |  | Crop out structural bay 7D — Chief Petty Officer Berthing | 0d | 2026-08-12 | 2026-08-24 | A11760 |  |  | Structural Welding [310 h] |
| A03140 |  | Crop out structural bay 3D — Aft IC & Gyro Room | 0d | 2026-08-13 | 2026-08-23 | A03130 |  |  | Structural Welding [167 h] |
| A03810 |  | Fit & weld deck insert 2B — Forced Draft Blower Room No. 3 | 0d | 2026-08-13 | 2026-08-19 | A03800 |  |  | Structural Welding [140 h] |
| A03750 |  | Crop out structural bay 7A — Forced Draft Blower Room No. 3 | 0d | 2026-08-15 | 2026-08-27 | A03740 |  |  | Structural Welding [329 h] |
| A03940 |  | Crop out deck insert 2E — Forced Draft Blower Room No. 3 | 0d | 2026-08-16 | 2026-08-18 | A03930 |  |  | Structural Welding [44 h] |
| A03540 |  | Crop out structural bay 1C — Forced Draft Blower Room No. 3 | 0d | 2026-08-17 | 2026-08-28 | A03530 |  |  | Structural Welding [188 h] |
| A03280 |  | NDT survey — deck insert 8A — Aft IC & Gyro Room | 0d | 2026-08-19 | 2026-09-01 |  |  |  | Structural Welding [427 h] |
| A12170 |  | NDT survey — deck insert 5F — Chief Petty Officer Berthing | 0d | 2026-08-19 | 2026-08-23 |  |  |  | Structural Welding [25 h]; Rigging & Weight Handling [7 h] |
| A03820 |  | NDT acceptance — deck insert 2B — Forced Draft Blower Room No. 3 | 0d | 2026-08-19 | 2026-08-28 | A03810 FS+2.4d |  |  | Structural Welding [52 h] |
| A03950 |  | Fit & weld deck insert 2E — Forced Draft Blower Room No. 3 | 0d | 2026-08-21 | 2026-09-03 | A03940 FS+0.8d |  |  | Structural Welding [156 h] |
| A11140 |  | Crop out deck insert 8D — Cableway Trunk Fr 140 | 0d | 2026-08-21 | 2026-08-27 | A11130 |  |  | Structural Welding [51 h] |
| A12180 |  | Crop out deck insert 5F — Chief Petty Officer Berthing | 0d | 2026-08-24 | 2026-08-31 | A12170 SS+7.2d |  |  | Structural Welding [187 h] |
| A03150 |  | Fit & weld structural bay 3D — Aft IC & Gyro Room | 0d | 2026-08-24 | 2026-09-03 | A03140 |  |  | Structural Welding [199 h] |
| A11780 |  | Fit & weld structural bay 7D — Chief Petty Officer Berthing | 0d | 2026-08-25 | 2026-08-29 | A11770 |  |  | Structural Welding [72 h] |
| A03760 |  | Fit & weld structural bay 7A — Forced Draft Blower Room No. 3 | 0d | 2026-08-27 | 2026-09-10 | A03750 FS+0.8d |  |  | Structural Welding [174 h] |
| A11150 |  | Fit & weld deck insert 8D — Cableway Trunk Fr 140 | 0d | 2026-08-28 | 2026-09-09 | A11140 |  |  | Structural Welding [157 h] |
| A03550 |  | Fit & weld structural bay 1C — Forced Draft Blower Room No. 3 | 0d | 2026-08-29 | 2026-09-01 | A03540 FS+2.4d |  |  | Structural Welding [39 h] |
| A03830 |  | Grind & dress deck insert 2B — Forced Draft Blower Room No. 3 | 0d | 2026-08-29 | 2026-09-05 | A03820 |  |  | Structural Welding [54 h] |
| A11790 |  | NDT acceptance — structural bay 7D — Chief Petty Officer Berthing | 0d | 2026-09-01 | 2026-09-10 | A11780 |  |  | Structural Welding [289 h] |
| A03560 |  | NDT acceptance — structural bay 1C — Forced Draft Blower Room No. 3 | 0d | 2026-09-01 | 2026-09-11 | A03550 SS+7.2d |  |  | Structural Welding [79 h] |
| A12190 |  | Fit & weld deck insert 5F — Chief Petty Officer Berthing | 0d | 2026-09-03 | 2026-09-12 | A12180 FS+0.8d |  |  | Structural Welding [297 h] |
| A03290 |  | Crop out deck insert 8A — Aft IC & Gyro Room | 0d | 2026-09-03 | 2026-09-10 | A03280 |  |  | Structural Welding [113 h] |
| A03160 |  | NDT acceptance — structural bay 3D — Aft IC & Gyro Room | 0d | 2026-09-04 | 2026-09-10 | A03150 |  |  | Structural Welding [46 h] |
| A03960 |  | NDT acceptance — deck insert 2E — Forced Draft Blower Room No. 3 | 0d | 2026-09-05 | 2026-09-16 | A03950 |  |  | Structural Welding [326 h] |
| A11800 |  | Grind & dress structural bay 7D — Chief Petty Officer Berthing | 0d | 2026-09-10 | 2026-09-13 | A11790 |  |  | Structural Welding [30 h] |
| A03770 |  | NDT acceptance — structural bay 7A — Forced Draft Blower Room No. 3 | 0d | 2026-09-11 | 2026-09-24 | A03760 SS+7.2d |  |  | Structural Welding [242 h] |
| A11160 |  | NDT acceptance — deck insert 8D — Cableway Trunk Fr 140 | 0d | 2026-09-11 | 2026-09-15 | A11150 FS+0.8d |  |  | Structural Welding [98 h]; Rigging & Weight Handling [25 h] |
| A03170 |  | Grind & dress structural bay 3D — Aft IC & Gyro Room | 0d | 2026-09-12 | 2026-09-16 | A03160 FS+0.8d |  |  | Structural Welding [100 h] |
| A03300 |  | Fit & weld deck insert 8A — Aft IC & Gyro Room | 0d | 2026-09-13 | 2026-09-27 | A03290 FS+2.4d |  |  | Structural Welding [508 h] |
| A03570 |  | Grind & dress structural bay 1C — Forced Draft Blower Room No. 3 | 0d | 2026-09-14 | 2026-09-23 | A03560 FS+0.8d |  |  | Structural Welding [116 h] |
| A12200 |  | NDT acceptance — deck insert 5F — Chief Petty Officer Berthing | 0d | 2026-09-14 | 2026-09-25 | A12190 FS+2.4d |  |  | Structural Welding [74 h] |
| A11170 |  | Grind & dress deck insert 8D — Cableway Trunk Fr 140 | 0d | 2026-09-16 | 2026-09-27 | A11160 FS-0.8d |  |  | Structural Welding [253 h] |
| A03970 |  | Grind & dress deck insert 2E — Forced Draft Blower Room No. 3 | 0d | 2026-09-18 | 2026-09-20 | A03960 |  |  | Structural Welding [17 h] |
| A03780 |  | Grind & dress structural bay 7A — Forced Draft Blower Room No. 3 | 0d | 2026-09-24 | 2026-09-30 | A03770 FS+0.8d |  |  | Structural Welding [193 h] |
| A12210 |  | Grind & dress deck insert 5F — Chief Petty Officer Berthing | 0d | 2026-09-26 | 2026-10-09 | A12200 FS+0.8d |  |  | Structural Welding [76 h] |
| A03310 |  | NDT acceptance — deck insert 8A — Aft IC & Gyro Room | 0d | 2026-09-28 | 2026-10-10 | A03300 FS+2.4d |  |  | Structural Welding [266 h] |
| A03320 |  | Grind & dress deck insert 8A — Aft IC & Gyro Room | 0d | 2026-10-13 | 2026-10-21 | A03310 SS+2.4d |  |  | Structural Welding [125 h] |

| ID | WBS | Activity | Duration | Start | Finish | Predecessors | Complete | Remaining | Resources |
| --- | --- | --- | --- | --- | --- | --- | --- | --- | --- |
|  | 300 | **300 Electrical Distribution** |  | 2026-07-29 | 2026-10-03 |  |  |  |  |
| A03330 |  | Circuit survey — lighting circuit 3B — Aft IC & Gyro Room | 0d | 2026-07-29 A | 2026-08-05 A |  | 100% |  | Electrical [85 h] |
| A03690 |  | Circuit survey — panel group 4F (4-149-2-Q) | 0d | 2026-07-31 A | 2026-08-02 A |  | 100% |  | Electrical [32 h] |
| A03480 |  | Circuit survey — cable run 1B — Forced Draft Blower Room No. 3 | 0d | 2026-07-31 A | 2026-08-02 A |  | 100% |  | Electrical [54 h] |
| A12080 |  | Circuit survey — cable run 5D — Chief Petty Officer Berthing | 0d | 2026-08-02 A | 2026-08-16 |  | 37% | 0d | Electrical [187 h] |
| A03490 |  | De-energize & tag out cable run 1B — Forced Draft Blower Room No. 3 | 0d | 2026-08-03 A | 2026-08-17 | A03480 | 47% | 0d | Electrical [195 h] |
| A03700 |  | De-energize & tag out panel group 4F (4-149-2-Q) | 0d | 2026-08-04 A | 2026-08-16 | A03690 FS+0.8d | 40% | 0d | Electrical [109 h] |
| A11290 |  | Circuit survey — lighting circuit 6A — Cableway Trunk Fr 140 | 0d | 2026-08-05 A | 2026-08-16 |  | 37% | 0d | Electrical [338 h] |
| A03040 |  | Circuit survey — panel group 5B — Aft IC & Gyro Room | 0d | 2026-08-07 A | 2026-08-20 |  | 20% | 0d | Electrical [278 h] |
| A03340 |  | De-energize & tag out lighting circuit 3B — Aft IC & Gyro Room | 0d | 2026-08-07 A | 2026-08-21 | A03330 | 13% | 0d | Electrical [205 h] |
| A11340 |  | Circuit survey — panel group 3B — Cableway Trunk Fr 140 | 0d | 2026-08-12 | 2026-08-20 |  |  |  | Electrical [135 h] |
| A12090 |  | De-energize & tag out cable run 5D — Chief Petty Officer Berthing | 0d | 2026-08-16 | 2026-08-19 | A12080 FS+2.4d |  |  | Electrical [50 h] |
| A03500 |  | Pull & land cable — cable run 1B — Forced Draft Blower Room No. 3 | 0d | 2026-08-18 | 2026-08-23 | A03490 |  |  | Electrical [46 h] |
| A03710 |  | Pull & land cable — panel group 4F (4-149-2-Q) | 0d | 2026-08-19 | 2026-08-29 | A03700 |  |  | Electrical [86 h] |
| A11300 |  | De-energize & tag out lighting circuit 6A — Cableway Trunk Fr 140 | 0d | 2026-08-19 | 2026-08-27 | A11290 FS+2.4d |  |  | Electrical [184 h] |
| A11350 |  | De-energize & tag out panel group 3B — Cableway Trunk Fr 140 | 0d | 2026-08-21 | 2026-08-29 | A11340 |  |  | Electrical [90 h]; Rigging & Weight Handling [23 h] |
| A12100 |  | Pull & land cable — cable run 5D — Chief Petty Officer Berthing | 0d | 2026-08-21 | 2026-09-03 | A12090 FS+2.4d |  |  | Electrical [74 h] |
| A03350 |  | Pull & land cable — lighting circuit 3B — Aft IC & Gyro Room | 0d | 2026-08-22 | 2026-08-25 | A03340 |  |  | Electrical [40 h] |
| A03050 |  | De-energize & tag out panel group 5B — Aft IC & Gyro Room | 0d | 2026-08-23 | 2026-09-05 | A03040 |  |  | Electrical [177 h] |
| A03510 |  | Megger & continuity test cable run 1B — Forced Draft Blower Room No. 3 | 0d | 2026-08-23 | 2026-09-02 | A03500 |  |  | Electrical [108 h]; Rigging & Weight Handling [27 h] |
| A03360 |  | Megger & continuity test lighting circuit 3B — Aft IC & Gyro Room | 0d | 2026-08-26 | 2026-08-31 | A03350 FS+2.4d |  |  | Electrical [34 h] |
| A11310 |  | Pull & land cable — lighting circuit 6A — Cableway Trunk Fr 140 | 0d | 2026-08-30 | 2026-09-09 | A11300 FS+2.4d |  |  | Electrical [135 h] |
| A11360 |  | Pull & land cable — panel group 3B — Cableway Trunk Fr 140 | 0d | 2026-08-30 | 2026-09-09 | A11350 |  |  | Electrical [175 h] |
| A03370 |  | Energize & close-out lighting circuit 3B — Aft IC & Gyro Room | 0d | 2026-08-31 | 2026-09-04 | A03360 FS+2.4d |  |  | Electrical [21 h] |
| A03720 |  | Megger & continuity test panel group 4F (4-149-2-Q) | 0d | 2026-09-01 | 2026-09-09 | A03710 FS+2.4d |  |  | Electrical [44 h]; Rigging & Weight Handling [12 h] |
| A12110 |  | Megger & continuity test cable run 5D — Chief Petty Officer Berthing | 0d | 2026-09-04 | 2026-09-09 | A12100 FS+2.4d |  |  | Electrical [171 h] |
| A03520 |  | Energize & close-out cable run 1B — Forced Draft Blower Room No. 3 | 0d | 2026-09-04 | 2026-09-10 | A03510 |  |  | Electrical [181 h] |
| A03060 |  | Pull & land cable — panel group 5B — Aft IC & Gyro Room | 0d | 2026-09-08 | 2026-09-10 | A03050 |  |  | Electrical [86 h] |
| A11320 |  | Megger & continuity test lighting circuit 6A — Cableway Trunk Fr 140 | 0d | 2026-09-11 | 2026-09-16 | A11310 SS+4.8d |  |  | Electrical [57 h]; Rigging & Weight Handling [15 h] |
| A11370 |  | Megger & continuity test panel group 3B — Cableway Trunk Fr 140 | 0d | 2026-09-11 | 2026-09-18 | A11360 SS+2.4d |  |  | Electrical [223 h] |
| A03070 |  | Megger & continuity test panel group 5B — Aft IC & Gyro Room | 0d | 2026-09-11 | 2026-09-18 | A03060 FS+0.8d |  |  | Electrical [98 h] |
| A12120 |  | Energize & close-out cable run 5D — Chief Petty Officer Berthing | 0d | 2026-09-11 | 2026-09-17 | A12110 FS+2.4d |  |  | Electrical [130 h] |
| A03730 |  | Energize & close-out panel group 4F (4-149-2-Q) | 0d | 2026-09-12 | 2026-09-20 | A03720 FS+2.4d |  |  | Electrical [175 h] |
| A11330 |  | Energize & close-out lighting circuit 6A — Cableway Trunk Fr 140 | 0d | 2026-09-17 | 2026-09-27 | A11320 FS+0.8d |  |  | Electrical [131 h] |
| A11380 |  | Energize & close-out panel group 3B — Cableway Trunk Fr 140 | 0d | 2026-09-20 | 2026-09-24 | A11370 |  |  | Electrical [40 h] |
| A03080 |  | Energize & close-out panel group 5B — Aft IC & Gyro Room | 0d | 2026-09-20 | 2026-10-03 | A03070 FS+0.8d |  |  | Electrical [335 h] |

| ID | WBS | Activity | Duration | Start | Finish | Predecessors | Complete | Remaining | Resources |
| --- | --- | --- | --- | --- | --- | --- | --- | --- | --- |
|  | 430 | **430 Interior Communications** |  | 2026-08-02 | 2026-09-26 |  |  |  |  |
| A04060 |  | Circuit trace — IC circuit 7B — Forced Draft Blower Room No. 3 | 0d | 2026-08-02 A | 2026-08-11 |  | 83% | 0d | Interior Communications [53 h] |
| A12320 |  | Circuit trace — IC circuit 8C — Switchgear Room No. 2 | 0d | 2026-08-03 A | 2026-08-07 A |  | 100% |  | Interior Communications [26 h] |
| A12040 |  | Circuit trace — announcing group 8C — Chief Petty Officer Berthing | 0d | 2026-08-06 A | 2026-08-12 |  | 60% | 0d | Interior Communications [45 h] |
| A11030 |  | Circuit trace — announcing group 1B — Cableway Trunk Fr 140 | 0d | 2026-08-07 A | 2026-08-16 |  | 28% | 0d | Interior Communications [145 h] |
| A12330 |  | Rip out IC circuit 8C — Switchgear Room No. 2 | 0d | 2026-08-09 A | 2026-08-21 | A12320 FS+2.4d | 9% | 0d | Interior Communications [281 h] |
| A04070 |  | Rip out IC circuit 7B — Forced Draft Blower Room No. 3 | 0d | 2026-08-12 | 2026-08-19 | A04060 FS-1.6d |  |  | Interior Communications [182 h] |
| A03890 |  | Circuit trace — announcing group 2D — Forced Draft Blower Room No. 3 | 0d | 2026-08-12 | 2026-08-26 |  |  |  | Interior Communications [173 h] |
| A12050 |  | Rip out announcing group 8C — Chief Petty Officer Berthing | 0d | 2026-08-14 | 2026-08-25 | A12040 FS+0.8d |  |  | Interior Communications [167 h] |
| A04020 |  | Circuit trace — IC circuit 5A — Forced Draft Blower Room No. 3 | 0d | 2026-08-16 | 2026-08-22 |  |  |  | Interior Communications [87 h] |
| A11040 |  | Rip out announcing group 1B — Cableway Trunk Fr 140 | 0d | 2026-08-18 | 2026-08-29 | A11030 |  |  | Interior Communications [73 h] |
| A11390 |  | Circuit trace — announcing group 9C — Cableway Trunk Fr 140 | 0d | 2026-08-19 | 2026-08-27 |  |  |  | Interior Communications [71 h]; Rigging & Weight Handling [18 h] |
| A04080 |  | Install & terminate IC circuit 7B — Forced Draft Blower Room No. 3 | 0d | 2026-08-20 | 2026-08-27 | A04070 FS+0.8d |  |  | Interior Communications [62 h] |
| A04030 |  | Rip out IC circuit 5A — Forced Draft Blower Room No. 3 | 0d | 2026-08-23 | 2026-08-29 | A04020 |  |  | Interior Communications [101 h] |
| A12340 |  | Install & terminate IC circuit 8C — Switchgear Room No. 2 | 0d | 2026-08-23 | 2026-09-01 | A12330 |  |  | Interior Communications [247 h] |
| A12060 |  | Install & terminate announcing group 8C — Chief Petty Officer Berthing | 0d | 2026-08-27 | 2026-09-08 | A12050 |  |  | Interior Communications [357 h] |
| A04090 |  | Ring-out & test IC circuit 7B — Forced Draft Blower Room No. 3 | 0d | 2026-08-27 | 2026-09-08 | A04080 |  |  | Interior Communications [97 h] |
| A03900 |  | Rip out announcing group 2D — Forced Draft Blower Room No. 3 | 0d | 2026-08-29 | 2026-09-03 | A03890 |  |  | Interior Communications [34 h] |
| A11400 |  | Rip out announcing group 9C — Cableway Trunk Fr 140 | 0d | 2026-08-30 | 2026-09-10 | A11390 |  |  | Interior Communications [143 h] |
| A11050 |  | Install & terminate announcing group 1B — Cableway Trunk Fr 140 | 0d | 2026-08-30 | 2026-09-12 | A11040 |  |  | Interior Communications [314 h] |
| A04040 |  | Install & terminate IC circuit 5A — Forced Draft Blower Room No. 3 | 0d | 2026-09-01 | 2026-09-12 | A04030 |  |  | Interior Communications [95 h] |
| A12350 |  | Ring-out & test IC circuit 8C — Switchgear Room No. 2 | 0d | 2026-09-03 | 2026-09-08 | A12340 |  |  | Interior Communications [147 h] |
| A03910 |  | Install & terminate announcing group 2D — Forced Draft Blower Room No. 3 | 0d | 2026-09-05 | 2026-09-11 | A03900 FS+2.4d |  |  | Interior Communications [82 h] |
| A12070 |  | Ring-out & test announcing group 8C — Chief Petty Officer Berthing | 0d | 2026-09-10 | 2026-09-19 | A12060 |  |  | Interior Communications [238 h] |
| A11410 |  | Install & terminate announcing group 9C — Cableway Trunk Fr 140 | 0d | 2026-09-12 | 2026-09-14 | A11400 |  |  | Interior Communications [30 h] |
| A03920 |  | Ring-out & test announcing group 2D — Forced Draft Blower Room No. 3 | 0d | 2026-09-12 | 2026-09-24 | A03910 |  |  | Interior Communications [412 h] |
| A04050 |  | Ring-out & test IC circuit 5A — Forced Draft Blower Room No. 3 | 0d | 2026-09-13 | 2026-09-26 | A04040 |  |  | Interior Communications [214 h] |
| A11060 |  | Ring-out & test announcing group 1B — Cableway Trunk Fr 140 | 0d | 2026-09-13 | 2026-09-19 | A11050 |  |  | Interior Communications [140 h] |
| A11420 |  | Ring-out & test announcing group 9C — Cableway Trunk Fr 140 | 0d | 2026-09-15 | 2026-09-23 | A11410 FS+2.4d |  |  | Interior Communications [106 h] |

| ID | WBS | Activity | Duration | Start | Finish | Predecessors | Complete | Remaining | Resources |
| --- | --- | --- | --- | --- | --- | --- | --- | --- | --- |
|  | 505 | **505 Piping Systems** |  | 2026-08-02 | 2026-10-07 |  |  |  |  |
| A12360 |  | Lay-up & drain drain riser 8D — Switchgear Room No. 2 | 0d | 2026-08-02 A | 2026-08-10 |  | 94% | 0d | Pipefitting [283 h] |
| A11180 |  | Lay-up & drain valve bank 6E — Cableway Trunk Fr 140 | 0d | 2026-08-03 A | 2026-08-10 |  | 94% | 0d | Pipefitting [64 h] |
| A12370 |  | Cut out drain riser 8D — Switchgear Room No. 2 | 0d | 2026-08-11 | 2026-08-14 | A12360 SS+2.4d |  |  | Pipefitting [20 h] |
| A11190 |  | Cut out valve bank 6E — Cableway Trunk Fr 140 | 0d | 2026-08-11 | 2026-08-19 | A11180 |  |  | Pipefitting [51 h] |
| A11430 |  | Lay-up & drain drain riser 3D (3-140-0-Q) | 0d | 2026-08-12 | 2026-08-23 |  |  |  | Pipefitting [66 h]; Rigging & Weight Handling [17 h] |
| A11700 |  | Lay-up & drain drain riser 7C — Chief Petty Officer Berthing | 0d | 2026-08-14 | 2026-08-17 |  |  |  | Pipefitting [40 h] |
| A11640 |  | Lay-up & drain drain riser 4B — Chief Petty Officer Berthing | 0d | 2026-08-15 | 2026-08-19 |  |  |  | Pipefitting [58 h] |
| A12380 |  | Fab & fit drain riser 8D — Switchgear Room No. 2 | 0d | 2026-08-16 | 2026-08-25 | A12370 |  |  | Pipefitting [257 h] |
| A12520 |  | Lay-up & drain pipe spool group 4A — Switchgear Room No. 2 | 0d | 2026-08-16 | 2026-08-19 |  |  |  | Pipefitting [32 h]; Rigging & Weight Handling [9 h] |
| A11710 |  | Cut out drain riser 7C — Chief Petty Officer Berthing | 0d | 2026-08-18 | 2026-08-24 | A11700 |  |  | Pipefitting [49 h] |
| A12530 |  | Cut out pipe spool group 4A — Switchgear Room No. 2 | 0d | 2026-08-19 | 2026-08-26 | A12520 |  |  | Pipefitting [101 h] |
| A11200 |  | Fab & fit valve bank 6E — Cableway Trunk Fr 140 | 0d | 2026-08-19 | 2026-08-27 | A11190 |  |  | Pipefitting [64 h] |
| A11930 |  | Lay-up & drain pipe spool group 2A — Chief Petty Officer Berthing | 0d | 2026-08-20 | 2026-08-22 |  |  |  | Pipefitting [52 h] |
| A11650 |  | Cut out drain riser 4B — Chief Petty Officer Berthing | 0d | 2026-08-21 | 2026-08-28 | A11640 |  |  | Pipefitting [51 h] |
| A11940 |  | Cut out pipe spool group 2A — Chief Petty Officer Berthing | 0d | 2026-08-23 | 2026-08-29 | A11930 |  |  | Pipefitting [37 h] |
| A11440 |  | Cut out drain riser 3D (3-140-0-Q) | 0d | 2026-08-24 | 2026-09-01 | A11430 |  |  | Pipefitting [46 h] |
| A11720 |  | Fab & fit drain riser 7C — Chief Petty Officer Berthing | 0d | 2026-08-26 | 2026-09-07 | A11710 FS+2.4d |  |  | Pipefitting [68 h] |
| A12390 |  | Weld out drain riser 8D — Switchgear Room No. 2 | 0d | 2026-08-27 | 2026-08-31 | A12380 |  |  | Pipefitting [38 h] |
| A11660 |  | Fab & fit drain riser 4B — Chief Petty Officer Berthing | 0d | 2026-08-29 | 2026-09-05 | A11650 FS+0.8d |  |  | Pipefitting [119 h] |
| A12540 |  | Fab & fit pipe spool group 4A — Switchgear Room No. 2 | 0d | 2026-08-29 | 2026-09-11 | A12530 FS+0.8d |  |  | Pipefitting [118 h] |
| A11210 |  | Weld out valve bank 6E — Cableway Trunk Fr 140 | 0d | 2026-08-30 | 2026-09-03 | A11200 |  |  | Pipefitting [32 h] |
| A11950 |  | Fab & fit pipe spool group 2A — Chief Petty Officer Berthing | 0d | 2026-09-01 | 2026-09-07 | A11940 |  |  | Pipefitting [37 h] |
| A11450 |  | Fab & fit drain riser 3D (3-140-0-Q) | 0d | 2026-09-02 | 2026-09-09 | A11440 |  |  | Pipefitting [48 h] |
| A12400 |  | Hydro test drain riser 8D — Switchgear Room No. 2 | 0d | 2026-09-03 | 2026-09-08 | A12390 FS+0.8d |  |  | Pipefitting [115 h] |
| A11670 |  | Weld out drain riser 4B — Chief Petty Officer Berthing | 0d | 2026-09-05 | 2026-09-18 | A11660 FS+2.4d |  |  | Pipefitting [80 h]; Rigging & Weight Handling [20 h] |
| A11220 |  | Hydro test valve bank 6E — Cableway Trunk Fr 140 | 0d | 2026-09-05 | 2026-09-16 | A11210 |  |  | Pipefitting [133 h]; Rigging & Weight Handling [34 h] |
| A11960 |  | Weld out pipe spool group 2A — Chief Petty Officer Berthing | 0d | 2026-09-09 | 2026-09-21 | A11950 |  |  | Pipefitting [304 h] |
| A11730 |  | Weld out drain riser 7C — Chief Petty Officer Berthing | 0d | 2026-09-09 | 2026-09-12 | A11720 |  |  | Pipefitting [60 h] |
| A12410 |  | Flush & restore drain riser 8D — Switchgear Room No. 2 | 0d | 2026-09-10 | 2026-09-19 | A12400 |  |  | Pipefitting [153 h] |
| A11460 |  | Weld out drain riser 3D (3-140-0-Q) | 0d | 2026-09-11 | 2026-09-21 | A11450 |  |  | Pipefitting [70 h] |
| A12550 |  | Weld out pipe spool group 4A — Switchgear Room No. 2 | 0d | 2026-09-13 | 2026-09-16 | A12540 |  |  | Pipefitting [101 h] |
| A11740 |  | Hydro test drain riser 7C — Chief Petty Officer Berthing | 0d | 2026-09-13 | 2026-09-23 | A11730 FS+2.4d |  |  | Pipefitting [80 h] |
| A11230 |  | Flush & restore valve bank 6E — Cableway Trunk Fr 140 | 0d | 2026-09-18 | 2026-10-01 | A11220 |  |  | Pipefitting [237 h] |
| A12560 |  | Hydro test pipe spool group 4A — Switchgear Room No. 2 | 0d | 2026-09-19 | 2026-09-21 | A12550 SS+4.8d |  |  | Pipefitting [42 h] |
| A11680 |  | Hydro test drain riser 4B — Chief Petty Officer Berthing | 0d | 2026-09-20 | 2026-09-22 | A11670 |  |  | Pipefitting [19 h] |
| A12570 |  | Flush & restore pipe spool group 4A — Switchgear Room No. 2 | 0d | 2026-09-22 | 2026-09-25 | A12560 FS+0.8d |  |  | Pipefitting [57 h] |
| A11690 |  | Flush & restore drain riser 4B — Chief Petty Officer Berthing | 0d | 2026-09-22 | 2026-09-30 | A11680 FS+0.8d |  |  | Pipefitting [63 h] |
| A11970 |  | Hydro test pipe spool group 2A — Chief Petty Officer Berthing | 0d | 2026-09-23 | 2026-10-03 | A11960 |  |  | Pipefitting [62 h] |
| A11470 |  | Hydro test drain riser 3D (3-140-0-Q) | 0d | 2026-09-24 | 2026-09-30 | A11460 FS+2.4d |  |  | Pipefitting [171 h] |
| A11750 |  | Flush & restore drain riser 7C — Chief Petty Officer Berthing | 0d | 2026-09-25 | 2026-10-04 | A11740 |  |  | Pipefitting [213 h] |
| A11480 |  | Flush & restore drain riser 3D (3-140-0-Q) | 0d | 2026-10-03 | 2026-10-06 | A11470 FS+0.8d |  |  | Pipefitting [26 h] |
| A11980 |  | Flush & restore pipe spool group 2A — Chief Petty Officer Berthing | 0d | 2026-10-05 | 2026-10-07 | A11970 |  |  | Pipefitting [13 h] |

| ID | WBS | Activity | Duration | Start | Finish | Predecessors | Complete | Remaining | Resources |
| --- | --- | --- | --- | --- | --- | --- | --- | --- | --- |
|  | 508 | **508 Insulation & Lagging** |  | 2026-07-31 | 2026-09-28 |  |  |  |  |
| A03980 |  | Strip lagging — lagging section 2F — Forced Draft Blower Room No. 3 | 0d | 2026-07-31 A | 2026-08-10 |  | 80% | 0d | Insulation & Lagging [65 h] |
| A12130 |  | Strip lagging — hull board field 3E — Chief Petty Officer Berthing | 0d | 2026-08-12 | 2026-08-15 |  |  |  | Insulation & Lagging [111 h] |
| A03990 |  | Asbestos survey — lagging section 2F — Forced Draft Blower Room No. 3 | 0d | 2026-08-13 | 2026-08-23 | A03980 |  |  | Insulation & Lagging [77 h] |
| A12140 |  | Asbestos survey — hull board field 3E — Chief Petty Officer Berthing | 0d | 2026-08-15 | 2026-08-28 | A12130 FS+2.4d |  |  | Insulation & Lagging [276 h] |
| A12220 |  | Strip lagging — hull board field 3A — Switchgear Room No. 2 | 0d | 2026-08-16 | 2026-08-26 |  |  |  | Insulation & Lagging [171 h] |
| A03090 |  | Strip lagging — hull board field 6C — Aft IC & Gyro Room | 0d | 2026-08-19 | 2026-08-26 |  |  |  | Insulation & Lagging [57 h] |
| A04000 |  | Re-insulate lagging section 2F — Forced Draft Blower Room No. 3 | 0d | 2026-08-25 | 2026-08-31 | A03990 FS+2.4d |  |  | Insulation & Lagging [48 h] |
| A03100 |  | Asbestos survey — hull board field 6C — Aft IC & Gyro Room | 0d | 2026-08-28 | 2026-09-08 | A03090 FS+0.8d |  |  | Insulation & Lagging [142 h]; Rigging & Weight Handling [36 h] |
| A12230 |  | Asbestos survey — hull board field 3A — Switchgear Room No. 2 | 0d | 2026-08-28 | 2026-09-01 | A12220 FS+2.4d |  |  | Insulation & Lagging [25 h] |
| A12150 |  | Re-insulate hull board field 3E — Chief Petty Officer Berthing | 0d | 2026-08-30 | 2026-09-10 | A12140 FS+0.8d |  |  | Insulation & Lagging [75 h] |
| A12240 |  | Re-insulate hull board field 3A — Switchgear Room No. 2 | 0d | 2026-09-02 | 2026-09-15 | A12230 FS+0.8d |  |  | Insulation & Lagging [181 h] |
| A04010 |  | Sheathing & finish lagging section 2F — Forced Draft Blower Room No. 3 | 0d | 2026-09-02 | 2026-09-08 | A04000 FS+0.8d |  |  | Insulation & Lagging [80 h] |
| A03110 |  | Re-insulate hull board field 6C — Aft IC & Gyro Room | 0d | 2026-09-09 | 2026-09-15 | A03100 FS+0.8d |  |  | Insulation & Lagging [98 h]; Rigging & Weight Handling [25 h] |
| A12160 |  | Sheathing & finish hull board field 3E — Chief Petty Officer Berthing | 0d | 2026-09-10 | 2026-09-15 | A12150 |  |  | Insulation & Lagging [158 h] |
| A12250 |  | Sheathing & finish hull board field 3A — Switchgear Room No. 2 | 0d | 2026-09-16 | 2026-09-28 | A12240 |  |  | Insulation & Lagging [152 h] |
| A03120 |  | Sheathing & finish hull board field 6C — Aft IC & Gyro Room | 0d | 2026-09-17 | 2026-09-20 | A03110 FS+0.8d |  |  | Insulation & Lagging [52 h] |
|  | 512 | **512 Ventilation & Uptakes** |  | 2026-08-01 | 2026-10-22 |  |  |  |  |
| A12260 |  | Survey & mark vent branch 2B — Switchgear Room No. 2 | 0d | 2026-08-01 A | 2026-08-10 |  | 98% | 0d | Sheet Metal / HVAC [335 h] |
| A11810 |  | Survey & mark vent branch 1E — Chief Petty Officer Berthing | 0d | 2026-08-04 A | 2026-08-16 |  | 43% | 0d | Sheet Metal / HVAC [94 h] |
| A11870 |  | Survey & mark exhaust riser 7F — Chief Petty Officer Berthing | 0d | 2026-08-10 | 2026-08-20 |  |  |  | Sheet Metal / HVAC [73 h] |
| A12270 |  | Remove & tag vent branch 2B — Switchgear Room No. 2 | 0d | 2026-08-12 | 2026-08-14 | A12260 |  |  | Sheet Metal / HVAC [26 h] |
| A02980 |  | Survey & mark supply trunk 6A — Aft IC & Gyro Room | 0d | 2026-08-12 | 2026-08-20 |  |  |  | Sheet Metal / HVAC [202 h] |
| A11070 |  | Survey & mark vent branch 8C (3-140-0-Q) | 0d | 2026-08-13 | 2026-08-24 |  |  |  | Sheet Metal / HVAC [173 h] |
| A12280 |  | Fab replacement duct — vent branch 2B — Switchgear Room No. 2 | 0d | 2026-08-17 | 2026-08-19 | A12270 |  |  | Sheet Metal / HVAC [48 h] |
| A10970 |  | Survey & mark vent branch 9A — Cableway Trunk Fr 140 | 0d | 2026-08-18 | 2026-08-22 |  |  |  | Sheet Metal / HVAC [113 h] |
| A11820 |  | Remove & tag vent branch 1E — Chief Petty Officer Berthing | 0d | 2026-08-19 | 2026-08-31 | A11810 FS+0.8d |  |  | Sheet Metal / HVAC [208 h] |
| A12290 |  | Install vent branch 2B — Switchgear Room No. 2 | 0d | 2026-08-20 | 2026-09-01 | A12280 FS+2.4d |  |  | Sheet Metal / HVAC [428 h] |
| A03580 |  | Survey & mark supply trunk 5D — Forced Draft Blower Room No. 3 | 0d | 2026-08-21 | 2026-09-01 |  |  |  | Sheet Metal / HVAC [193 h] |
| A11880 |  | Remove & tag exhaust riser 7F — Chief Petty Officer Berthing | 0d | 2026-08-21 | 2026-08-24 | A11870 |  |  | Sheet Metal / HVAC [92 h] |
| A02990 |  | Remove & tag supply trunk 6A — Aft IC & Gyro Room | 0d | 2026-08-23 | 2026-08-29 | A02980 FS+2.4d |  |  | Sheet Metal / HVAC [153 h] |
| A10980 |  | Remove & tag vent branch 9A — Cableway Trunk Fr 140 | 0d | 2026-08-24 | 2026-09-01 | A10970 |  |  | Sheet Metal / HVAC [185 h] |
| A11080 |  | Remove & tag vent branch 8C (3-140-0-Q) | 0d | 2026-08-25 | 2026-09-02 | A11070 |  |  | Sheet Metal / HVAC [47 h] |
| A11890 |  | Fab replacement duct — exhaust riser 7F — Chief Petty Officer Berthing | 0d | 2026-08-26 | 2026-09-06 | A11880 FS+0.8d |  |  | Sheet Metal / HVAC [185 h] |
| A03000 |  | Fab replacement duct — supply trunk 6A — Aft IC & Gyro Room | 0d | 2026-08-31 | 2026-09-11 | A02990 |  |  | Sheet Metal / HVAC [264 h] |
| A11830 |  | Fab replacement duct — vent branch 1E — Chief Petty Officer Berthing | 0d | 2026-09-01 | 2026-09-15 | A11820 SS+7.2d |  |  | Sheet Metal / HVAC [312 h] |
| A10990 |  | Fab replacement duct — vent branch 9A — Cableway Trunk Fr 140 | 0d | 2026-09-02 | 2026-09-16 | A10980 FS+2.4d |  |  | Sheet Metal / HVAC [115 h] |
| A12300 |  | Duct leak test vent branch 2B — Switchgear Room No. 2 | 0d | 2026-09-03 | 2026-09-10 | A12290 |  |  | Sheet Metal / HVAC [64 h] |
| A11090 |  | Fab replacement duct — vent branch 8C (3-140-0-Q) | 0d | 2026-09-03 | 2026-09-09 | A11080 SS+4.8d |  |  | Sheet Metal / HVAC [102 h] |
| A03590 |  | Remove & tag supply trunk 5D — Forced Draft Blower Room No. 3 | 0d | 2026-09-03 | 2026-09-13 | A03580 FS+2.4d |  |  | Sheet Metal / HVAC [112 h] |
| A11900 |  | Install exhaust riser 7F — Chief Petty Officer Berthing | 0d | 2026-09-06 | 2026-09-15 | A11890 FS+0.8d |  |  | Sheet Metal / HVAC [152 h] |
| A11100 |  | Install vent branch 8C (3-140-0-Q) | 0d | 2026-09-11 | 2026-09-21 | A11090 |  |  | Sheet Metal / HVAC [187 h] |
| A12310 |  | Close-out & QA vent branch 2B — Switchgear Room No. 2 | 0d | 2026-09-12 | 2026-09-25 | A12300 |  |  | Sheet Metal / HVAC [377 h]; Rigging & Weight Handling [95 h] |
| A03010 |  | Install supply trunk 6A — Aft IC & Gyro Room | 0d | 2026-09-13 | 2026-09-20 | A03000 FS+0.8d |  |  | Sheet Metal / HVAC [94 h] |
| A03600 |  | Fab replacement duct — supply trunk 5D — Forced Draft Blower Room No. 3 | 0d | 2026-09-15 | 2026-09-27 | A03590 |  |  | Sheet Metal / HVAC [304 h] |
| A11910 |  | Duct leak test exhaust riser 7F — Chief Petty Officer Berthing | 0d | 2026-09-16 | 2026-09-28 | A11900 SS+4.8d |  |  | Sheet Metal / HVAC [312 h] |
| A11840 |  | Install vent branch 1E — Chief Petty Officer Berthing | 0d | 2026-09-16 | 2026-09-29 | A11830 FS-1.6d |  |  | Sheet Metal / HVAC [97 h] |
| A11000 |  | Install vent branch 9A — Cableway Trunk Fr 140 | 0d | 2026-09-17 | 2026-09-24 | A10990 FS+0.8d |  |  | Sheet Metal / HVAC [78 h] |
| A03020 |  | Duct leak test supply trunk 6A — Aft IC & Gyro Room | 0d | 2026-09-21 | 2026-09-29 | A03010 |  |  | Sheet Metal / HVAC [253 h] |
| A11110 |  | Duct leak test vent branch 8C (3-140-0-Q) | 0d | 2026-09-23 | 2026-09-25 | A11100 |  |  | Sheet Metal / HVAC [35 h] |
| A11010 |  | Duct leak test vent branch 9A — Cableway Trunk Fr 140 | 0d | 2026-09-25 | 2026-10-09 | A11000 |  |  | Sheet Metal / HVAC [264 h] |
| A11120 |  | Close-out & QA vent branch 8C (3-140-0-Q) | 0d | 2026-09-26 | 2026-10-05 | A11110 |  |  | Sheet Metal / HVAC [60 h] |
| A03610 |  | Install supply trunk 5D — Forced Draft Blower Room No. 3 | 0d | 2026-09-28 | 2026-10-06 | A03600 SS+2.4d |  |  | Sheet Metal / HVAC [217 h] |
| A11920 |  | Close-out & QA exhaust riser 7F — Chief Petty Officer Berthing | 0d | 2026-10-01 | 2026-10-08 | A11910 |  |  | Sheet Metal / HVAC [119 h] |
| A11850 |  | Duct leak test vent branch 1E — Chief Petty Officer Berthing | 0d | 2026-10-01 | 2026-10-14 | A11840 SS+4.8d |  |  | Sheet Metal / HVAC [295 h] |
| A03030 |  | Close-out & QA supply trunk 6A — Aft IC & Gyro Room | 0d | 2026-10-01 | 2026-10-14 | A03020 FS+2.4d |  |  | Sheet Metal / HVAC [172 h] |
| A03620 |  | Duct leak test supply trunk 5D — Forced Draft Blower Room No. 3 | 0d | 2026-10-07 | 2026-10-15 | A03610 |  |  | Sheet Metal / HVAC [148 h] |
| A11020 |  | Close-out & QA vent branch 9A — Cableway Trunk Fr 140 | 0d | 2026-10-11 | 2026-10-17 | A11010 FS+0.8d |  |  | Sheet Metal / HVAC [53 h] |
| A11860 |  | Close-out & QA vent branch 1E — Chief Petty Officer Berthing | 0d | 2026-10-15 | 2026-10-18 | A11850 |  |  | Sheet Metal / HVAC [69 h] |
| A03630 |  | Close-out & QA supply trunk 5D — Forced Draft Blower Room No. 3 | 0d | 2026-10-18 | 2026-10-22 | A03620 |  |  | Sheet Metal / HVAC [95 h] |

| ID | WBS | Activity | Duration | Start | Finish | Predecessors | Complete | Remaining | Resources |
| --- | --- | --- | --- | --- | --- | --- | --- | --- | --- |
|  | 560 | **560 Aux Machinery** |  | 2026-08-06 | 2026-10-11 |  |  |  |  |
| A11990 |  | Open & inspect compressor 2B — Chief Petty Officer Berthing | 0d | 2026-08-06 A | 2026-08-09 A |  | 100% |  | Mechanical [64 h] |
| A12580 |  | Open & inspect motor group 8B — Switchgear Room No. 2 | 0d | 2026-08-07 A | 2026-08-17 |  | 24% | 0d | Mechanical [94 h] |
| A12000 |  | Remove compressor 2B for shop — Chief Petty Officer Berthing | 0d | 2026-08-09 A | 2026-08-14 | A11990 FS+2.4d | 23% | 0d | Mechanical [128 h] |
| A12010 |  | Shop overhaul — compressor 2B — Chief Petty Officer Berthing | 0d | 2026-08-14 | 2026-08-21 | A12000 |  |  | Mechanical [66 h] |
| A03840 |  | Open & inspect pump set 2C — Forced Draft Blower Room No. 3 | 0d | 2026-08-18 | 2026-08-22 |  |  |  | Mechanical [60 h] |
| A12590 |  | Remove motor group 8B for shop — Switchgear Room No. 2 | 0d | 2026-08-18 | 2026-08-22 | A12580 |  |  | Mechanical [32 h] |
| A12470 |  | Open & inspect compressor 6F — Switchgear Room No. 2 | 0d | 2026-08-19 | 2026-09-02 |  |  |  | Mechanical [245 h] |
| A12020 |  | Reinstall & align compressor 2B — Chief Petty Officer Berthing | 0d | 2026-08-21 | 2026-08-26 | A12010 |  |  | Mechanical [146 h] |
| A03850 |  | Remove pump set 2C for shop — Forced Draft Blower Room No. 3 | 0d | 2026-08-22 | 2026-09-04 | A03840 |  |  | Mechanical [289 h] |
| A12600 |  | Shop overhaul — motor group 8B — Switchgear Room No. 2 | 0d | 2026-08-24 | 2026-08-28 | A12590 |  |  | Mechanical [29 h] |
| A12610 |  | Reinstall & align motor group 8B — Switchgear Room No. 2 | 0d | 2026-08-28 | 2026-09-09 | A12600 |  |  | Mechanical [433 h] |
| A12030 |  | Operational test compressor 2B — Chief Petty Officer Berthing | 0d | 2026-08-29 | 2026-09-07 | A12020 |  |  | Mechanical [276 h] |
| A12480 |  | Remove compressor 6F for shop — Switchgear Room No. 2 | 0d | 2026-09-04 | 2026-09-08 | A12470 FS+0.8d |  |  | Mechanical [62 h] |
| A03860 |  | Shop overhaul — pump set 2C — Forced Draft Blower Room No. 3 | 0d | 2026-09-05 | 2026-09-13 | A03850 FS+2.4d |  |  | Mechanical [50 h] |
| A12620 |  | Operational test motor group 8B — Switchgear Room No. 2 | 0d | 2026-09-10 | 2026-09-20 | A12610 FS+0.8d |  |  | Mechanical [78 h] |
| A12490 |  | Shop overhaul — compressor 6F — Switchgear Room No. 2 | 0d | 2026-09-11 | 2026-09-16 | A12480 FS+2.4d |  |  | Mechanical [135 h] |
| A03870 |  | Reinstall & align pump set 2C — Forced Draft Blower Room No. 3 | 0d | 2026-09-15 | 2026-09-27 | A03860 |  |  | Mechanical [386 h] |
| A12500 |  | Reinstall & align compressor 6F — Switchgear Room No. 2 | 0d | 2026-09-17 | 2026-09-28 | A12490 |  |  | Mechanical [70 h] |
| A03880 |  | Operational test pump set 2C — Forced Draft Blower Room No. 3 | 0d | 2026-09-27 | 2026-10-07 | A03870 |  |  | Mechanical [53 h] |
| A12510 |  | Operational test compressor 6F — Switchgear Room No. 2 | 0d | 2026-09-29 | 2026-10-11 | A12500 FS+0.8d |  |  | Mechanical [329 h] |
|  | 631 | **631 Preservation** |  | 2026-07-29 | 2026-10-07 |  |  |  |  |
| A11590 |  | Surface survey — bilge preservation 5A — Chief Petty Officer Berthing | 0d | 2026-07-29 A | 2026-08-08 A |  | 100% |  | Preservation / Blast & Coat [127 h]; Rigging & Weight Handling [32 h] |
| A11490 |  | Surface survey — overhead coating 8E — Cableway Trunk Fr 140 | 0d | 2026-08-05 A | 2026-08-13 |  | 65% | 0d | Preservation / Blast & Coat [269 h] |
| A03430 |  | Surface survey — overhead coating 9A — Forced Draft Blower Room No. 3 | 0d | 2026-08-06 A | 2026-08-18 |  | 28% | 0d | Preservation / Blast & Coat [97 h] |
| A03180 |  | Surface survey — deck coating 6E — Aft IC & Gyro Room | 0d | 2026-08-07 A | 2026-08-17 |  | 28% | 0d | Preservation / Blast & Coat [323 h] |
| A03380 |  | Surface survey — overhead coating 6C — Aft IC & Gyro Room | 0d | 2026-08-07 A | 2026-08-10 |  | 80% | 0d | Preservation / Blast & Coat [41 h] |
| A12630 |  | Surface survey — bilge preservation 7C — Switchgear Room No. 2 | 0d | 2026-08-08 A | 2026-08-16 |  | 18% | 0d | Preservation / Blast & Coat [68 h] |
| A12420 |  | Surface survey — bilge preservation 5E — Switchgear Room No. 2 | 0d | 2026-08-09 A | 2026-08-15 |  | 4% | 0d | Preservation / Blast & Coat [75 h] |
| A11600 |  | Blast / mechanical prep bilge preservation 5A — Chief Petty Officer Berthing | 0d | 2026-08-10 | 2026-08-18 | A11590 FS-4.8d |  |  | Preservation / Blast & Coat [192 h] |
| A03390 |  | Blast / mechanical prep overhead coating 6C — Aft IC & Gyro Room | 0d | 2026-08-12 | 2026-08-15 | A03380 |  |  | Preservation / Blast & Coat [16 h]; Rigging & Weight Handling [5 h] |
| A11500 |  | Blast / mechanical prep overhead coating 8E — Cableway Trunk Fr 140 | 0d | 2026-08-13 | 2026-08-25 | A11490 FS+2.4d |  |  | Preservation / Blast & Coat [71 h] |
| A03230 |  | Surface survey — deck coating 8F — Aft IC & Gyro Room | 0d | 2026-08-14 | 2026-08-17 |  |  |  | Preservation / Blast & Coat [17 h] |
| A03400 |  | Prime coat overhead coating 6C — Aft IC & Gyro Room | 0d | 2026-08-17 | 2026-08-21 | A03390 SS+4.8d |  |  | Preservation / Blast & Coat [35 h] |
| A03190 |  | Blast / mechanical prep deck coating 6E — Aft IC & Gyro Room | 0d | 2026-08-17 | 2026-08-25 | A03180 |  |  | Preservation / Blast & Coat [133 h] |
| A12430 |  | Blast / mechanical prep bilge preservation 5E — Switchgear Room No. 2 | 0d | 2026-08-18 | 2026-08-28 | A12420 FS+0.8d |  |  | Preservation / Blast & Coat [270 h] |
| A03240 |  | Blast / mechanical prep deck coating 8F — Aft IC & Gyro Room | 0d | 2026-08-18 | 2026-08-24 | A03230 |  |  | Preservation / Blast & Coat [202 h] |
| A03640 |  | Surface survey — overhead coating 6E — Forced Draft Blower Room No. 3 | 0d | 2026-08-18 | 2026-09-01 |  |  |  | Preservation / Blast & Coat [224 h] |
| A12640 |  | Blast / mechanical prep bilge preservation 7C — Switchgear Room No. 2 | 0d | 2026-08-19 | 2026-08-31 | A12630 FS+0.8d |  |  | Preservation / Blast & Coat [283 h] |
| A11240 |  | Surface survey — deck coating 6F — Cableway Trunk Fr 140 | 0d | 2026-08-19 | 2026-08-31 |  |  |  | Preservation / Blast & Coat [314 h] |
| A03440 |  | Blast / mechanical prep overhead coating 9A — Forced Draft Blower Room No. 3 | 0d | 2026-08-19 | 2026-08-25 | A03430 |  |  | Preservation / Blast & Coat [130 h] |
| A11610 |  | Prime coat bilge preservation 5A — Chief Petty Officer Berthing | 0d | 2026-08-20 | 2026-08-22 | A11600 |  |  | Preservation / Blast & Coat [39 h] |
| A11540 |  | Surface survey — bilge preservation 7F — Cableway Trunk Fr 140 | 0d | 2026-08-20 | 2026-08-24 |  |  |  | Preservation / Blast & Coat [67 h] |
| A11620 |  | Top coat bilge preservation 5A — Chief Petty Officer Berthing | 0d | 2026-08-23 | 2026-08-30 | A11610 FS+2.4d |  |  | Preservation / Blast & Coat [178 h] |
| A03410 |  | Top coat overhead coating 6C — Aft IC & Gyro Room | 0d | 2026-08-23 | 2026-08-29 | A03400 |  |  | Preservation / Blast & Coat [96 h]; Rigging & Weight Handling [25 h] |
| A11510 |  | Prime coat overhead coating 8E — Cableway Trunk Fr 140 | 0d | 2026-08-26 | 2026-09-04 | A11500 FS+2.4d |  |  | Preservation / Blast & Coat [114 h] |
| A03250 |  | Prime coat deck coating 8F — Aft IC & Gyro Room | 0d | 2026-08-27 | 2026-09-06 | A03240 FS+0.8d |  |  | Preservation / Blast & Coat [135 h] |
| A11550 |  | Blast / mechanical prep bilge preservation 7F — Cableway Trunk Fr 140 | 0d | 2026-08-27 | 2026-09-02 | A11540 FS+2.4d |  |  | Preservation / Blast & Coat [76 h] |
| A03450 |  | Prime coat overhead coating 9A — Forced Draft Blower Room No. 3 | 0d | 2026-08-27 | 2026-09-06 | A03440 |  |  | Preservation / Blast & Coat [262 h] |
| A03200 |  | Prime coat deck coating 6E — Aft IC & Gyro Room | 0d | 2026-08-28 | 2026-09-08 | A03190 FS+2.4d |  |  | Preservation / Blast & Coat [202 h] |
| A03420 |  | Cure & inspect overhead coating 6C — Aft IC & Gyro Room | 0d | 2026-08-30 | 2026-09-08 | A03410 |  |  | Preservation / Blast & Coat [69 h] |
| A12440 |  | Prime coat bilge preservation 5E — Switchgear Room No. 2 | 0d | 2026-08-30 | 2026-09-10 | A12430 FS+0.8d |  |  | Preservation / Blast & Coat [98 h] |
| A11250 |  | Blast / mechanical prep deck coating 6F — Cableway Trunk Fr 140 | 0d | 2026-09-01 | 2026-09-05 | A11240 |  |  | Preservation / Blast & Coat [27 h] |
| A11630 |  | Cure & inspect bilge preservation 5A — Chief Petty Officer Berthing | 0d | 2026-09-02 | 2026-09-11 | A11620 |  |  | Preservation / Blast & Coat [248 h] |
| A12650 |  | Prime coat bilge preservation 7C — Switchgear Room No. 2 | 0d | 2026-09-02 | 2026-09-05 | A12640 FS+0.8d |  |  | Preservation / Blast & Coat [47 h] |
| A03650 |  | Blast / mechanical prep overhead coating 6E — Forced Draft Blower Room No. 3 | 0d | 2026-09-02 | 2026-09-05 | A03640 FS+2.4d |  |  | Preservation / Blast & Coat [20 h] |
| A11560 |  | Prime coat bilge preservation 7F — Cableway Trunk Fr 140 | 0d | 2026-09-04 | 2026-09-07 | A11550 |  |  | Preservation / Blast & Coat [21 h] |
| A11520 |  | Top coat overhead coating 8E — Cableway Trunk Fr 140 | 0d | 2026-09-05 | 2026-09-08 | A11510 FS+0.8d |  |  | Preservation / Blast & Coat [40 h] |
| A11260 |  | Prime coat deck coating 6F — Cableway Trunk Fr 140 | 0d | 2026-09-05 | 2026-09-12 | A11250 |  |  | Preservation / Blast & Coat [164 h] |
| A03260 |  | Top coat deck coating 8F — Aft IC & Gyro Room | 0d | 2026-09-06 | 2026-09-18 | A03250 |  |  | Preservation / Blast & Coat [100 h] |
| A03460 |  | Top coat overhead coating 9A — Forced Draft Blower Room No. 3 | 0d | 2026-09-07 | 2026-09-14 | A03450 FS+2.4d |  |  | Preservation / Blast & Coat [125 h] |
| A03660 |  | Prime coat overhead coating 6E — Forced Draft Blower Room No. 3 | 0d | 2026-09-07 | 2026-09-15 | A03650 FS+2.4d |  |  | Preservation / Blast & Coat [113 h] |
| A12660 |  | Top coat bilge preservation 7C — Switchgear Room No. 2 | 0d | 2026-09-08 | 2026-09-21 | A12650 FS+2.4d |  |  | Preservation / Blast & Coat [91 h] |
| A03210 |  | Top coat deck coating 6E — Aft IC & Gyro Room | 0d | 2026-09-08 | 2026-09-12 | A03200 FS+0.8d |  |  | Preservation / Blast & Coat [68 h]; Rigging & Weight Handling [17 h] |
| A11530 |  | Cure & inspect overhead coating 8E — Cableway Trunk Fr 140 | 0d | 2026-09-08 | 2026-09-13 | A11520 FS+0.8d |  |  | Preservation / Blast & Coat [108 h] |
| A11570 |  | Top coat bilge preservation 7F — Cableway Trunk Fr 140 | 0d | 2026-09-09 | 2026-09-19 | A11560 SS+4.8d |  |  | Preservation / Blast & Coat [121 h] |
| A12450 |  | Top coat bilge preservation 5E — Switchgear Room No. 2 | 0d | 2026-09-11 | 2026-09-15 | A12440 |  |  | Preservation / Blast & Coat [67 h] |
| A03220 |  | Cure & inspect deck coating 6E — Aft IC & Gyro Room | 0d | 2026-09-12 | 2026-09-26 | A03210 FS+0.8d |  |  | Preservation / Blast & Coat [369 h] |
| A11270 |  | Top coat deck coating 6F — Cableway Trunk Fr 140 | 0d | 2026-09-13 | 2026-09-24 | A11260 FS+2.4d |  |  | Preservation / Blast & Coat [81 h] |
| A12460 |  | Cure & inspect bilge preservation 5E — Switchgear Room No. 2 | 0d | 2026-09-17 | 2026-09-27 | A12450 |  |  | Preservation / Blast & Coat [274 h] |

| ID | WBS | Activity | Duration | Start | Finish | Predecessors | Complete | Remaining | Resources |
| --- | --- | --- | --- | --- | --- | --- | --- | --- | --- |
| A03470 |  | Cure & inspect overhead coating 9A — Forced Draft Blower Room No. 3 | 0d | 2026-09-17 | 2026-09-26 | A03460 |  |  | Preservation / Blast & Coat [261 h] |
| A03670 |  | Top coat overhead coating 6E — Forced Draft Blower Room No. 3 | 0d | 2026-09-18 | 2026-10-01 | A03660 |  |  | Preservation / Blast & Coat [244 h] |
| A03270 |  | Cure & inspect deck coating 8F — Aft IC & Gyro Room | 0d | 2026-09-18 | 2026-10-01 | A03260 FS+0.8d |  |  | Preservation / Blast & Coat [86 h] |
| A11580 |  | Cure & inspect bilge preservation 7F — Cableway Trunk Fr 140 | 0d | 2026-09-22 | 2026-10-01 | A11570 FS+0.8d |  |  | Preservation / Blast & Coat [151 h] |
| A12670 |  | Cure & inspect bilge preservation 7C — Switchgear Room No. 2 | 0d | 2026-09-23 | 2026-09-27 | A12660 |  |  | Preservation / Blast & Coat [32 h] |
| A11280 |  | Cure & inspect deck coating 6F — Cableway Trunk Fr 140 | 0d | 2026-09-24 | 2026-10-05 | A11270 FS+2.4d |  |  | Preservation / Blast & Coat [144 h] |
| A03680 |  | Cure & inspect overhead coating 6E — Forced Draft Blower Room No. 3 | 0d | 2026-10-04 | 2026-10-07 | A03670 |  |  | Preservation / Blast & Coat [44 h] |
|  | SVC | **Zone Services & Access** |  | 2026-07-30 | 2026-10-28 |  |  |  |  |
| A14580 |  | Temp ventilation trunk 4 — Aft Auxiliaries & Berthing | 0d | 2026-07-30 A | 2026-08-07 A |  | 100% |  | Sheet Metal / HVAC [93 h] |
| A14510 |  | Recover temp services — Aft Auxiliaries & Berthing feeder 1 | 0d | 2026-07-31 A | 2026-08-04 A |  | 100% |  | Electrical [73 h] |
| A14560 |  | Recover temp services — Aft Auxiliaries & Berthing feeder 3 | 0d | 2026-08-02 A | 2026-08-07 A |  | 100% |  | Electrical [108 h] |
| A14540 |  | Strike scaffolding — Aft Auxiliaries & Berthing band 2 | 0d | 2026-08-04 A | 2026-08-09 A |  | 100% |  | Rigging & Weight Handling [61 h] |
| A14600 |  | Stage scaffolding — Aft Auxiliaries & Berthing band 5 | 0d | 2026-08-05 A | 2026-08-08 A |  | 100% |  | Rigging & Weight Handling [19 h] |
| A14730 |  | Recover temp services — Aft Auxiliaries & Berthing feeder 10 | 0d | 2026-08-05 A | 2026-08-08 A |  | 100% |  | Electrical [77 h] |
| A14620 |  | Strike scaffolding — Aft Auxiliaries & Berthing band 6 | 0d | 2026-08-06 A | 2026-08-13 |  | 55% | 0d | Rigging & Weight Handling [121 h] |
| A14650 |  | Recover temp services — Aft Auxiliaries & Berthing feeder 7 | 0d | 2026-08-11 | 2026-08-16 |  |  |  | Electrical [32 h] |
| A14710 |  | Clear lay-down 9 — Aft Auxiliaries & Berthing | 0d | 2026-08-12 | 2026-08-14 |  |  |  | Rigging & Weight Handling [66 h] |
| A14610 |  | Strike scaffolding — Aft Auxiliaries & Berthing band 5 | 0d | 2026-08-16 | 2026-08-23 | A14600 |  |  | Rigging & Weight Handling [58 h] |
| A14680 |  | Temp lighting string 8 — Aft Auxiliaries & Berthing | 0d | 2026-08-21 | 2026-08-26 |  |  |  | Electrical [128 h] |
| A14660 |  | Temp lighting string 7 — Aft Auxiliaries & Berthing | 0d | 2026-08-21 | 2026-08-26 | A14650 |  |  | Electrical [115 h] |
| A14570 |  | Temp lighting string 3 — Aft Auxiliaries & Berthing | 0d | 2026-08-26 | 2026-09-02 | A14560 |  |  | Electrical [103 h] |
| A14520 |  | Run temporary power — Aft Auxiliaries & Berthing feeder 1 | 0d | 2026-08-28 | 2026-09-02 | A14510 |  |  | Electrical [148 h] |
| A14590 |  | Reposition temp vent 4 — Aft Auxiliaries & Berthing | 0d | 2026-08-29 | 2026-08-31 | A14580 |  |  | Sheet Metal / HVAC [38 h] |
| A14630 |  | Rig access platforms — Aft Auxiliaries & Berthing band 6 | 0d | 2026-09-01 | 2026-09-09 | A14620 |  |  | Rigging & Weight Handling [130 h] |
| A14690 |  | Run temporary power — Aft Auxiliaries & Berthing feeder 8 | 0d | 2026-09-06 | 2026-09-15 | A14680 |  |  | Electrical [125 h] |
| A14550 |  | Rig access platforms — Aft Auxiliaries & Berthing band 2 | 0d | 2026-09-06 | 2026-09-10 | A14540 |  |  | Rigging & Weight Handling [141 h] |
| A14670 |  | Run temporary power — Aft Auxiliaries & Berthing feeder 7 | 0d | 2026-09-08 | 2026-09-10 | A14660 |  |  | Electrical [19 h] |
| A14740 |  | Run temporary power — Aft Auxiliaries & Berthing feeder 10 | 0d | 2026-09-15 | 2026-09-20 | A14730 |  |  | Electrical [94 h] |
| A14720 |  | Material staging & lay-down 9 — Aft Auxiliaries & Berthing | 0d | 2026-09-16 | 2026-09-20 | A14710 |  |  | Rigging & Weight Handling [68 h] |
| A14530 |  | Temp lighting string 1 — Aft Auxiliaries & Berthing | 0d | 2026-09-24 | 2026-09-28 | A14520 |  |  | Electrical [19 h] |
| A14640 |  | Stage scaffolding — Aft Auxiliaries & Berthing band 6 | 0d | 2026-10-10 | 2026-10-19 | A14630 |  |  | Rigging & Weight Handling [191 h] |
| A14700 |  | Recover temp services — Aft Auxiliaries & Berthing feeder 8 | 0d | 2026-10-20 | 2026-10-28 | A14690 |  |  | Electrical [121 h] |

| ID | WBS | Activity | Duration | Start | Finish | Predecessors | Complete | Remaining | Resources |
| --- | --- | --- | --- | --- | --- | --- | --- | --- | --- |
|  | Z6 | **Zone 6 — Aft Machinery & Mess** |  | 2026-07-27 | 2026-10-30 |  |  |  |  |
|  | 130 | **130 Hull Structure** |  | 2026-08-01 | 2026-10-02 |  |  |  |  |
| A05260 |  | NDT survey — structural bay 4C — Passage & Trunk | 0d | 2026-08-01 A | 2026-08-15 |  | 55% | 0d | Structural Welding [231 h] |
| A04140 |  | NDT survey — deck insert 1B — Uptake Space No. 3 | 0d | 2026-08-05 A | 2026-08-19 |  | 36% | 0d | Structural Welding [261 h] |
| A04340 |  | NDT survey — structural bay 5F — Uptake Space No. 3 | 0d | 2026-08-05 A | 2026-08-18 |  | 34% | 0d | Structural Welding [170 h] |
| A09340 |  | NDT survey — structural bay 1C — Scullery | 0d | 2026-08-05 A | 2026-08-08 A |  | 100% |  | Structural Welding [105 h] |
| A09350 |  | Crop out structural bay 1C — Scullery | 0d | 2026-08-09 A | 2026-08-22 | A09340 | 6% | 0d | Structural Welding [112 h] |
| A04980 |  | NDT survey — foundation group 6F — Auxiliary Machinery Room No. 4 | 0d | 2026-08-10 A | 2026-08-23 |  | 1% | 0d | Structural Welding [184 h] |
| A09040 |  | NDT survey — foundation group 1E — Hangar Bay 3 | 0d | 2026-08-11 | 2026-08-23 |  |  |  | Structural Welding [187 h] |
| A07480 |  | NDT survey — structural bay 5F — Cable Trunk & IC Space | 0d | 2026-08-16 | 2026-08-19 |  |  |  | Structural Welding [110 h] |
| A05270 |  | Crop out structural bay 4C — Passage & Trunk | 0d | 2026-08-17 | 2026-08-26 | A05260 FS+2.4d |  |  | Structural Welding [80 h] |
| A04240 |  | NDT survey — foundation group 8D — Uptake Space No. 3 | 0d | 2026-08-17 | 2026-08-28 |  |  |  | Structural Welding [190 h] |
| A04150 |  | Crop out deck insert 1B — Uptake Space No. 3 | 0d | 2026-08-20 | 2026-08-26 | A04140 |  |  | Structural Welding [96 h] |
| A05710 |  | NDT survey — structural bay 7F — Passage & Trunk | 0d | 2026-08-20 | 2026-08-27 |  |  |  | Structural Welding [53 h] |
| A09290 |  | NDT survey — deck insert 5B — Scullery | 0d | 2026-08-21 | 2026-08-30 |  |  |  | Structural Welding [78 h] |
| A07490 |  | Crop out structural bay 5F — Cable Trunk & IC Space | 0d | 2026-08-21 | 2026-08-24 | A07480 FS+2.4d |  |  | Structural Welding [107 h] |
| A04350 |  | Crop out structural bay 5F — Uptake Space No. 3 | 0d | 2026-08-21 | 2026-08-27 | A04340 FS+2.4d |  |  | Structural Welding [34 h] |
| A09360 |  | Fit & weld structural bay 1C — Scullery | 0d | 2026-08-23 | 2026-09-02 | A09350 |  |  | Structural Welding [157 h] |
| A09050 |  | Crop out foundation group 1E — Hangar Bay 3 | 0d | 2026-08-25 | 2026-08-30 | A09040 SS+2.4d |  |  | Structural Welding [106 h] |
| A04990 |  | Crop out foundation group 6F — Auxiliary Machinery Room No. 4 | 0d | 2026-08-25 | 2026-08-30 | A04980 FS+2.4d |  |  | Structural Welding [98 h] |
| A07500 |  | Fit & weld structural bay 5F — Cable Trunk & IC Space | 0d | 2026-08-26 | 2026-08-31 | A07490 FS+0.8d |  |  | Structural Welding [103 h] |
| A05280 |  | Fit & weld structural bay 4C — Passage & Trunk | 0d | 2026-08-27 | 2026-08-29 | A05270 FS+2.4d |  |  | Structural Welding [66 h] |
| A04360 |  | Fit & weld structural bay 5F — Uptake Space No. 3 | 0d | 2026-08-27 | 2026-08-30 | A04350 SS+2.4d |  |  | Structural Welding [19 h] |
| A04160 |  | Fit & weld deck insert 1B — Uptake Space No. 3 | 0d | 2026-08-27 | 2026-09-05 | A04150 FS+2.4d |  |  | Structural Welding [64 h] |
| A05720 |  | Crop out structural bay 7F — Passage & Trunk | 0d | 2026-08-29 | 2026-09-08 | A05710 |  |  | Structural Welding [98 h]; Rigging & Weight Handling [25 h] |
| A05290 |  | NDT acceptance — structural bay 4C — Passage & Trunk | 0d | 2026-08-30 | 2026-09-01 | A05280 |  |  | Structural Welding [69 h] |
| A04250 |  | Crop out foundation group 8D — Uptake Space No. 3 | 0d | 2026-08-31 | 2026-09-07 | A04240 FS+2.4d |  |  | Structural Welding [103 h] |
| A07510 |  | NDT acceptance — structural bay 5F — Cable Trunk & IC Space | 0d | 2026-08-31 | 2026-09-11 | A07500 |  |  | Structural Welding [183 h] |
| A09060 |  | Fit & weld foundation group 1E — Hangar Bay 3 | 0d | 2026-08-31 | 2026-09-10 | A09050 |  |  | Structural Welding [157 h] |
| A04370 |  | NDT acceptance — structural bay 5F — Uptake Space No. 3 | 0d | 2026-09-01 | 2026-09-08 | A04360 |  |  | Structural Welding [274 h] |
| A09300 |  | Crop out deck insert 5B — Scullery | 0d | 2026-09-01 | 2026-09-07 | A09290 FS+2.4d |  |  | Structural Welding [204 h] |
| A05000 |  | Fit & weld foundation group 6F — Auxiliary Machinery Room No. 4 | 0d | 2026-09-02 | 2026-09-09 | A04990 FS+2.4d |  |  | Structural Welding [229 h] |
| A09370 |  | NDT acceptance — structural bay 1C — Scullery | 0d | 2026-09-02 | 2026-09-15 | A09360 |  |  | Structural Welding [172 h] |
| A05300 |  | Grind & dress structural bay 4C — Passage & Trunk | 0d | 2026-09-04 | 2026-09-11 | A05290 |  |  | Structural Welding [58 h] |
| A04170 |  | NDT acceptance — deck insert 1B — Uptake Space No. 3 | 0d | 2026-09-06 | 2026-09-08 | A04160 FS+0.8d |  |  | Structural Welding [30 h] |
| A09310 |  | Fit & weld deck insert 5B — Scullery | 0d | 2026-09-07 | 2026-09-11 | A09300 FS+2.4d |  |  | Structural Welding [53 h] |
| A04260 |  | Fit & weld foundation group 8D — Uptake Space No. 3 | 0d | 2026-09-08 | 2026-09-13 | A04250 |  |  | Structural Welding [93 h] |
| A05730 |  | Fit & weld structural bay 7F — Passage & Trunk | 0d | 2026-09-08 | 2026-09-14 | A05720 |  |  | Structural Welding [34 h] |
| A04180 |  | Grind & dress deck insert 1B — Uptake Space No. 3 | 0d | 2026-09-09 | 2026-09-17 | A04170 FS+2.4d |  |  | Structural Welding [183 h] |
| A04380 |  | Grind & dress structural bay 5F — Uptake Space No. 3 | 0d | 2026-09-09 | 2026-09-16 | A04370 |  |  | Structural Welding [50 h] |
| A09070 |  | NDT acceptance — foundation group 1E — Hangar Bay 3 | 0d | 2026-09-11 | 2026-09-14 | A09060 |  |  | Structural Welding [89 h] |
| A05010 |  | NDT acceptance — foundation group 6F — Auxiliary Machinery Room No. 4 | 0d | 2026-09-12 | 2026-09-16 | A05000 FS+2.4d |  |  | Structural Welding [75 h] |
| A09320 |  | NDT acceptance — deck insert 5B — Scullery | 0d | 2026-09-13 | 2026-09-20 | A09310 |  |  | Structural Welding [129 h] |
| A07520 |  | Grind & dress structural bay 5F — Cable Trunk & IC Space | 0d | 2026-09-13 | 2026-09-18 | A07510 |  |  | Structural Welding [37 h] |
| A09080 |  | Grind & dress foundation group 1E — Hangar Bay 3 | 0d | 2026-09-14 | 2026-09-22 | A09070 |  |  | Structural Welding [164 h] |
| A05740 |  | NDT acceptance — structural bay 7F — Passage & Trunk | 0d | 2026-09-14 | 2026-09-19 | A05730 FS+2.4d |  |  | Structural Welding [72 h] |
| A04270 |  | NDT acceptance — foundation group 8D — Uptake Space No. 3 | 0d | 2026-09-14 | 2026-09-18 | A04260 |  |  | Structural Welding [28 h] |
| A05020 |  | Grind & dress foundation group 6F — Auxiliary Machinery Room No. 4 | 0d | 2026-09-16 | 2026-09-29 | A05010 FS+0.8d |  |  | Structural Welding [462 h] |
| A09380 |  | Grind & dress structural bay 1C — Scullery | 0d | 2026-09-18 | 2026-09-30 | A09370 FS+0.8d |  |  | Structural Welding [90 h] |
| A05750 |  | Grind & dress structural bay 7F — Passage & Trunk | 0d | 2026-09-19 | 2026-09-23 | A05740 FS+0.8d |  |  | Structural Welding [21 h] |
| A04280 |  | Grind & dress foundation group 8D — Uptake Space No. 3 | 0d | 2026-09-21 | 2026-09-23 | A04270 FS+2.4d |  |  | Structural Welding [14 h] |
| A09330 |  | Grind & dress deck insert 5B — Scullery | 0d | 2026-09-22 | 2026-10-02 | A09320 |  |  | Structural Welding [60 h]; Rigging & Weight Handling [15 h] |

| ID | WBS | Activity | Duration | Start | Finish | Predecessors | Complete | Remaining | Resources |
| --- | --- | --- | --- | --- | --- | --- | --- | --- | --- |
|  | 300 | **300 Electrical Distribution** |  | 2026-07-30 | 2026-10-19 |  |  |  |  |
| A08900 |  | Circuit survey — lighting circuit 8B — Hangar Bay 3 | 0d | 2026-07-30 A | 2026-08-12 |  | 87% | 0d | Electrical [226 h] |
| A09240 |  | Circuit survey — panel group 9A — Scullery | 0d | 2026-07-31 A | 2026-08-10 A |  | 100% |  | Electrical [124 h] |
| A05620 |  | Circuit survey — cable run 5D — Passage & Trunk | 0d | 2026-07-31 A | 2026-08-10 |  | 88% | 0d | Electrical [56 h] |
| A04480 |  | Circuit survey — lighting circuit 1C — Uptake Space No. 3 | 0d | 2026-07-31 A | 2026-08-03 A |  | 100% |  | Electrical [26 h] |
| A09090 |  | Circuit survey — lighting circuit 5F — Hangar Bay 3 | 0d | 2026-07-31 A | 2026-08-03 A |  | 100% |  | Electrical [18 h] |
| A09590 |  | Circuit survey — cable run 3B — Scullery | 0d | 2026-08-01 A | 2026-08-09 A |  | 100% |  | Electrical [62 h] |
| A04490 |  | De-energize & tag out lighting circuit 1C — Uptake Space No. 3 | 0d | 2026-08-03 A | 2026-08-06 A | A04480 | 100% |  | Electrical [94 h] |
| A09100 |  | De-energize & tag out lighting circuit 5F — Hangar Bay 3 | 0d | 2026-08-04 A | 2026-08-14 | A09090 FS+2.4d | 35% | 0d | Electrical [63 h] |
| A04290 |  | Circuit survey — cable run 1E — Uptake Space No. 3 | 0d | 2026-08-04 A | 2026-08-13 |  | 61% | 0d | Electrical [160 h] |
| A06090 |  | Circuit survey — cable run 1B — Ship's Store | 0d | 2026-08-05 A | 2026-08-19 |  | 33% | 0d | Electrical [307 h] |
| A04500 |  | Pull & land cable — lighting circuit 1C — Uptake Space No. 3 | 0d | 2026-08-08 A | 2026-08-13 | A04490 FS+0.8d | 29% | 0d | Electrical [111 h] |
| A06850 |  | Circuit survey — cable run 1E — Pump Room No. 2 | 0d | 2026-08-08 A | 2026-08-22 |  | 10% | 0d | Electrical [460 h] |
| A04680 |  | Circuit survey — cable run 6A — Uptake Space No. 3 | 0d | 2026-08-09 A | 2026-08-11 |  | 45% | 0d | Electrical [40 h] |
| A06520 |  | Circuit survey — lighting circuit 8D — Pump Room No. 2 | 0d | 2026-08-09 A | 2026-08-17 |  | 5% | 0d | Electrical [222 h] |
| A07140 |  | Circuit survey — panel group 7E — Cable Trunk & IC Space | 0d | 2026-08-11 | 2026-08-14 |  |  |  | Electrical [44 h] |
| A09800 |  | Circuit survey — cable run 6F — Scullery | 0d | 2026-08-11 | 2026-08-17 |  |  |  | Electrical [149 h] |
| A09600 |  | De-energize & tag out cable run 3B — Scullery | 0d | 2026-08-11 | 2026-08-13 | A09590 |  |  | Electrical [36 h] |
| A05630 |  | De-energize & tag out cable run 5D — Passage & Trunk | 0d | 2026-08-12 | 2026-08-19 | A05620 FS+0.8d |  |  | Electrical [137 h] |
| A08910 |  | De-energize & tag out lighting circuit 8B — Hangar Bay 3 | 0d | 2026-08-12 | 2026-08-16 | A08900 FS+0.8d |  |  | Electrical [59 h] |
| A09250 |  | De-energize & tag out panel group 9A — Scullery | 0d | 2026-08-12 | 2026-08-21 | A09240 |  |  | Electrical [53 h] |
| A04690 |  | De-energize & tag out cable run 6A — Uptake Space No. 3 | 0d | 2026-08-13 | 2026-08-23 | A04680 FS+2.4d |  |  | Electrical [256 h] |
| A07150 |  | De-energize & tag out panel group 7E — Cable Trunk & IC Space | 0d | 2026-08-14 | 2026-08-16 | A07140 |  |  | Electrical [19 h] |
| A06940 |  | Circuit survey — lighting circuit 8A — Cable Trunk & IC Space | 0d | 2026-08-14 | 2026-08-21 |  |  |  | Electrical [53 h] |
| A04300 |  | De-energize & tag out cable run 1E — Uptake Space No. 3 | 0d | 2026-08-14 | 2026-08-19 | A04290 |  |  | Electrical [133 h] |
| A04510 |  | Megger & continuity test lighting circuit 1C — Uptake Space No. 3 | 0d | 2026-08-15 | 2026-08-27 | A04500 FS+2.4d |  |  | Electrical [420 h] |
| A09190 |  | Circuit survey — panel group 6B — Hangar Bay 3 | 0d | 2026-08-15 | 2026-08-23 |  |  |  | Electrical [54 h] |
| A09980 |  | Circuit survey — lighting circuit 9D — Mess Decks | 0d | 2026-08-16 | 2026-08-29 |  |  |  | Electrical [169 h] |
| A09610 |  | Pull & land cable — cable run 3B — Scullery | 0d | 2026-08-16 | 2026-08-24 | A09600 |  |  | Electrical [62 h] |
| A09110 |  | Pull & land cable — lighting circuit 5F — Hangar Bay 3 | 0d | 2026-08-16 | 2026-08-28 | A09100 |  |  | Electrical [172 h] |
| A08920 |  | Pull & land cable — lighting circuit 8B — Hangar Bay 3 | 0d | 2026-08-17 | 2026-08-23 | A08910 |  |  | Electrical [37 h]; Rigging & Weight Handling [10 h] |
| A06350 |  | Circuit survey — cable run 3A — Pump Room No. 2 | 0d | 2026-08-18 | 2026-08-27 |  |  |  | Electrical [73 h] |
| A07160 |  | Pull & land cable — panel group 7E — Cable Trunk & IC Space | 0d | 2026-08-19 | 2026-08-25 | A07150 |  |  | Electrical [208 h] |
| A05130 |  | Circuit survey — cable run 2C (3-156-2-Q) | 0d | 2026-08-19 | 2026-09-01 |  |  |  | Electrical [324 h] |
| A04310 |  | Pull & land cable — cable run 1E — Uptake Space No. 3 | 0d | 2026-08-19 | 2026-08-21 | A04300 |  |  | Electrical [31 h] |
| A06530 |  | De-energize & tag out lighting circuit 8D — Pump Room No. 2 | 0d | 2026-08-19 | 2026-08-22 | A06520 FS+0.8d |  |  | Electrical [32 h] |
| A09810 |  | De-energize & tag out cable run 6F — Scullery | 0d | 2026-08-19 | 2026-08-22 | A09800 FS+0.8d |  |  | Electrical [113 h] |
| A05640 |  | Pull & land cable — cable run 5D — Passage & Trunk | 0d | 2026-08-21 | 2026-08-27 | A05630 |  |  | Electrical [84 h] |
| A06100 |  | De-energize & tag out cable run 1B — Ship's Store | 0d | 2026-08-21 | 2026-09-04 | A06090 FS+2.4d |  |  | Electrical [77 h] |
| A09260 |  | Pull & land cable — panel group 9A — Scullery | 0d | 2026-08-22 | 2026-09-01 | A09250 |  |  | Electrical [175 h]; Rigging & Weight Handling [44 h] |
| A06860 |  | De-energize & tag out cable run 1E — Pump Room No. 2 | 0d | 2026-08-22 | 2026-08-27 | A06850 FS+2.4d |  |  | Electrical [131 h] |
| A06950 |  | De-energize & tag out lighting circuit 8A — Cable Trunk & IC Space | 0d | 2026-08-23 | 2026-08-25 | A06940 |  |  | Electrical [52 h] |
| A04320 |  | Megger & continuity test cable run 1E — Uptake Space No. 3 | 0d | 2026-08-23 | 2026-09-05 | A04310 SS+4.8d |  |  | Electrical [69 h] |
| A08930 |  | Megger & continuity test lighting circuit 8B — Hangar Bay 3 | 0d | 2026-08-23 | 2026-09-06 | A08920 FS+2.4d |  |  | Electrical [397 h] |
| A09820 |  | Pull & land cable — cable run 6F — Scullery | 0d | 2026-08-24 | 2026-09-07 | A09810 |  |  | Electrical [98 h] |
| A06540 |  | Pull & land cable — lighting circuit 8D — Pump Room No. 2 | 0d | 2026-08-24 | 2026-09-04 | A06530 |  |  | Electrical [210 h] |
| A04700 |  | Pull & land cable — cable run 6A — Uptake Space No. 3 | 0d | 2026-08-25 | 2026-08-29 | A04690 |  |  | Electrical [67 h] |
| A09200 |  | De-energize & tag out panel group 6B — Hangar Bay 3 | 0d | 2026-08-25 | 2026-09-04 | A09190 |  |  | Electrical [173 h] |
| A07170 |  | Megger & continuity test panel group 7E — Cable Trunk & IC Space | 0d | 2026-08-27 | 2026-09-01 | A07160 |  |  | Electrical [88 h] |
| A09620 |  | Megger & continuity test cable run 3B — Scullery | 0d | 2026-08-27 | 2026-09-09 | A09610 |  |  | Electrical [219 h] |
| A04520 |  | Energize & close-out lighting circuit 1C — Uptake Space No. 3 | 0d | 2026-08-27 | 2026-09-09 | A04510 |  |  | Electrical [104 h] |
| A06960 |  | Pull & land cable — lighting circuit 8A — Cable Trunk & IC Space | 0d | 2026-08-27 | 2026-09-03 | A06950 FS+2.4d |  |  | Electrical [99 h] |
| A06360 |  | De-energize & tag out cable run 3A — Pump Room No. 2 | 0d | 2026-08-28 | 2026-09-10 | A06350 |  |  | Electrical [266 h] |
| A06870 |  | Pull & land cable — cable run 1E — Pump Room No. 2 | 0d | 2026-08-29 | 2026-09-08 | A06860 FS+0.8d |  |  | Electrical [178 h] |
| A04710 |  | Megger & continuity test cable run 6A — Uptake Space No. 3 | 0d | 2026-08-29 | 2026-09-05 | A04700 |  |  | Electrical [146 h] |
| A09120 |  | Megger & continuity test lighting circuit 5F — Hangar Bay 3 | 0d | 2026-08-29 | 2026-09-01 | A09110 |  |  | Electrical [39 h] |
| A05650 |  | Megger & continuity test cable run 5D — Passage & Trunk | 0d | 2026-08-30 | 2026-09-09 | A05640 |  |  | Electrical [180 h] |
| A09990 |  | De-energize & tag out lighting circuit 9D — Mess Decks | 0d | 2026-09-01 | 2026-09-15 | A09980 |  |  | Electrical [379 h] |
| A09130 |  | Energize & close-out lighting circuit 5F — Hangar Bay 3 | 0d | 2026-09-01 | 2026-09-06 | A09120 |  |  | Electrical [150 h] |
| A09270 |  | Megger & continuity test panel group 9A — Scullery | 0d | 2026-09-02 | 2026-09-14 | A09260 SS+2.4d |  |  | Electrical [239 h] |
| A05140 |  | De-energize & tag out cable run 2C (3-156-2-Q) | 0d | 2026-09-02 | 2026-09-08 | A05130 |  |  | Electrical [139 h] |
| A07180 |  | Energize & close-out panel group 7E — Cable Trunk & IC Space | 0d | 2026-09-03 | 2026-09-08 | A07170 |  |  | Electrical [102 h] |
| A06970 |  | Megger & continuity test lighting circuit 8A — Cable Trunk & IC Space | 0d | 2026-09-04 | 2026-09-11 | A06960 |  |  | Electrical [103 h] |
| A06110 |  | Pull & land cable — cable run 1B — Ship's Store | 0d | 2026-09-05 | 2026-09-07 | A06100 FS+0.8d |  |  | Electrical [18 h] |
| A09210 |  | Pull & land cable — panel group 6B — Hangar Bay 3 | 0d | 2026-09-05 | 2026-09-18 | A09200 FS-0.8d |  |  | Electrical [307 h] |
| A04330 |  | Energize & close-out cable run 1E — Uptake Space No. 3 | 0d | 2026-09-06 | 2026-09-09 | A04320 FS+2.4d |  |  | Electrical [33 h] |
| A04720 |  | Energize & close-out cable run 6A — Uptake Space No. 3 | 0d | 2026-09-06 | 2026-09-13 | A04710 SS+4.8d |  |  | Electrical [128 h] |
| A06550 |  | Megger & continuity test lighting circuit 8D — Pump Room No. 2 | 0d | 2026-09-07 | 2026-09-20 | A06540 |  |  | Electrical [338 h] |
| A05150 |  | Pull & land cable — cable run 2C (3-156-2-Q) | 0d | 2026-09-08 | 2026-09-16 | A05140 |  |  | Electrical [40 h]; Rigging & Weight Handling [10 h] |
| A08940 |  | Energize & close-out lighting circuit 8B — Hangar Bay 3 | 0d | 2026-09-08 | 2026-09-20 | A08930 FS+2.4d |  |  | Electrical [375 h] |

| ID | WBS | Activity | Duration | Start | Finish | Predecessors | Complete | Remaining | Resources |
| --- | --- | --- | --- | --- | --- | --- | --- | --- | --- |
| A06120 |  | Megger & continuity test cable run 1B — Ship's Store | 0d | 2026-09-09 | 2026-09-20 | A06110 |  |  | Electrical [74 h]; Rigging & Weight Handling [19 h] |
| A09830 |  | Megger & continuity test cable run 6F — Scullery | 0d | 2026-09-09 | 2026-09-20 | A09820 |  |  | Electrical [264 h] |
| A09630 |  | Energize & close-out cable run 3B — Scullery | 0d | 2026-09-09 | 2026-09-19 | A09620 SS+4.8d |  |  | Electrical [270 h]; Rigging & Weight Handling [68 h] |
| A06880 |  | Megger & continuity test cable run 1E — Pump Room No. 2 | 0d | 2026-09-10 | 2026-09-22 | A06870 |  |  | Electrical [74 h] |
| A05660 |  | Energize & close-out cable run 5D — Passage & Trunk | 0d | 2026-09-11 | 2026-09-21 | A05650 SS+4.8d |  |  | Electrical [232 h] |
| A06980 |  | Energize & close-out lighting circuit 8A — Cable Trunk & IC Space | 0d | 2026-09-13 | 2026-09-22 | A06970 |  |  | Electrical [118 h] |
| A06370 |  | Pull & land cable — cable run 3A — Pump Room No. 2 | 0d | 2026-09-13 | 2026-09-16 | A06360 FS+0.8d |  |  | Electrical [22 h] |
| A10000 |  | Pull & land cable — lighting circuit 9D — Mess Decks | 0d | 2026-09-15 | 2026-09-29 | A09990 |  |  | Electrical [107 h] |
| A09280 |  | Energize & close-out panel group 9A — Scullery | 0d | 2026-09-15 | 2026-09-27 | A09270 |  |  | Electrical [170 h]; Rigging & Weight Handling [43 h] |
| A06380 |  | Megger & continuity test cable run 3A — Pump Room No. 2 | 0d | 2026-09-17 | 2026-09-24 | A06370 FS+2.4d |  |  | Electrical [214 h] |
| A05160 |  | Megger & continuity test cable run 2C (3-156-2-Q) | 0d | 2026-09-19 | 2026-09-24 | A05150 |  |  | Electrical [26 h] |
| A06130 |  | Energize & close-out cable run 1B — Ship's Store | 0d | 2026-09-21 | 2026-09-28 | A06120 |  |  | Electrical [64 h] |
| A06560 |  | Energize & close-out lighting circuit 8D — Pump Room No. 2 | 0d | 2026-09-21 | 2026-10-03 | A06550 |  |  | Electrical [222 h] |
| A09840 |  | Energize & close-out cable run 6F — Scullery | 0d | 2026-09-21 | 2026-10-01 | A09830 |  |  | Electrical [237 h]; Rigging & Weight Handling [60 h] |
| A09220 |  | Megger & continuity test panel group 6B — Hangar Bay 3 | 0d | 2026-09-21 | 2026-09-29 | A09210 |  |  | Electrical [193 h] |
| A06890 |  | Energize & close-out cable run 1E — Pump Room No. 2 | 0d | 2026-09-22 | 2026-09-28 | A06880 |  |  | Electrical [73 h] |
| A06390 |  | Energize & close-out cable run 3A — Pump Room No. 2 | 0d | 2026-09-26 | 2026-10-05 | A06380 SS+2.4d |  |  | Electrical [141 h] |
| A05170 |  | Energize & close-out cable run 2C (3-156-2-Q) | 0d | 2026-09-26 | 2026-10-01 | A05160 |  |  | Electrical [122 h] |
| A10010 |  | Megger & continuity test lighting circuit 9D — Mess Decks | 0d | 2026-10-01 | 2026-10-12 | A10000 FS+0.8d |  |  | Electrical [280 h] |
| A09230 |  | Energize & close-out panel group 6B — Hangar Bay 3 | 0d | 2026-10-02 | 2026-10-10 | A09220 |  |  | Electrical [54 h]; Rigging & Weight Handling [14 h] |
| A10020 |  | Energize & close-out lighting circuit 9D — Mess Decks | 0d | 2026-10-13 | 2026-10-19 | A10010 |  |  | Electrical [169 h] |
|  | 430 | **430 Interior Communications** |  | 2026-07-28 | 2026-10-07 |  |  |  |  |
| A10170 |  | Circuit trace — announcing group 5B — Mess Decks | 0d | 2026-07-28 A | 2026-07-31 A |  | 100% |  | Interior Communications [23 h] |
| A04100 |  | Circuit trace — announcing group 7A — Uptake Space No. 3 | 0d | 2026-07-31 A | 2026-08-10 |  | 96% | 0d | Interior Communications [168 h] |
| A09490 |  | Circuit trace — IC circuit 9F (2-152-0-Q) | 0d | 2026-07-31 A | 2026-08-11 |  | 58% | 0d | Interior Communications [130 h] |
| A04940 |  | Circuit trace — announcing group 9E — Auxiliary Machinery Room No. 4 | 0d | 2026-08-01 A | 2026-08-05 A |  | 100% |  | Interior Communications [26 h] |
| A10180 |  | Rip out announcing group 5B — Mess Decks | 0d | 2026-08-03 A | 2026-08-11 | A10170 FS+2.4d | 64% | 0d | Interior Communications [112 h] |
| A06190 |  | Circuit trace — IC circuit 8D — Ship's Store | 0d | 2026-08-04 A | 2026-08-18 |  | 38% | 0d | Interior Communications [375 h] |
| A06660 |  | Circuit trace — announcing group 3A — Pump Room No. 2 | 0d | 2026-08-06 A | 2026-08-12 |  | 71% | 0d | Interior Communications [214 h] |
| A05220 |  | Circuit trace — IC circuit 3B — Passage & Trunk | 0d | 2026-08-06 A | 2026-08-14 |  | 42% | 0d | Interior Communications [67 h] |
| A04950 |  | Rip out announcing group 9E — Auxiliary Machinery Room No. 4 | 0d | 2026-08-08 A | 2026-08-21 | A04940 | 7% | 0d | Interior Communications [115 h] |
| A05460 |  | Circuit trace — IC circuit 7A — Passage & Trunk | 0d | 2026-08-10 A | 2026-08-12 |  |  | 0d | Interior Communications [18 h] |
| A05310 |  | Circuit trace — announcing group 1D — Passage & Trunk | 0d | 2026-08-10 | 2026-08-24 |  |  |  | Interior Communications [347 h] |
| A07700 |  | Circuit trace — announcing group 5C — Cableway Trunk Zone 3 overhead | 0d | 2026-08-10 | 2026-08-21 |  |  |  | Interior Communications [254 h] |
| A04110 |  | Rip out announcing group 7A — Uptake Space No. 3 | 0d | 2026-08-11 | 2026-08-23 | A04100 |  |  | Interior Communications [191 h] |
| A06900 |  | Circuit trace — announcing group 1F — Pump Room No. 2 | 0d | 2026-08-12 | 2026-08-24 |  |  |  | Interior Communications [181 h] |
| A06670 |  | Rip out announcing group 3A — Pump Room No. 2 | 0d | 2026-08-12 | 2026-08-21 | A06660 |  |  | Interior Communications [160 h] |
| A05470 |  | Rip out IC circuit 7A — Passage & Trunk | 0d | 2026-08-13 | 2026-08-20 | A05460 FS+0.8d |  |  | Interior Communications [43 h] |
| A10030 |  | Circuit trace — announcing group 6E — Mess Decks | 0d | 2026-08-13 | 2026-08-18 |  |  |  | Interior Communications [31 h] |
| A04580 |  | Circuit trace — IC circuit 3E — Uptake Space No. 3 | 0d | 2026-08-13 | 2026-08-19 |  |  |  | Interior Communications [49 h] |
| A09500 |  | Rip out IC circuit 9F (2-152-0-Q) | 0d | 2026-08-13 | 2026-08-16 | A09490 |  |  | Interior Communications [45 h] |
| A10190 |  | Install & terminate announcing group 5B — Mess Decks | 0d | 2026-08-13 | 2026-08-25 | A10180 |  |  | Interior Communications [296 h] |
| A06010 |  | Circuit trace — IC circuit 7F — Ship's Store | 0d | 2026-08-13 | 2026-08-18 |  |  |  | Interior Communications [40 h] |
| A05230 |  | Rip out IC circuit 3B — Passage & Trunk | 0d | 2026-08-15 | 2026-08-20 | A05220 |  |  | Interior Communications [35 h] |
| A09940 |  | Circuit trace — announcing group 3C — Mess Decks | 0d | 2026-08-15 | 2026-08-28 |  |  |  | Interior Communications [104 h] |
| A09510 |  | Install & terminate IC circuit 9F (2-152-0-Q) | 0d | 2026-08-17 | 2026-08-31 | A09500 |  |  | Interior Communications [361 h] |
| A05930 |  | Circuit trace — announcing group 2D — Ship's Store | 0d | 2026-08-17 | 2026-08-20 |  |  |  | Interior Communications [20 h] |
| A06050 |  | Circuit trace — IC circuit 7A — Ship's Store | 0d | 2026-08-18 | 2026-08-30 |  |  |  | Interior Communications [106 h] |
| A06620 |  | Circuit trace — IC circuit 7F — Pump Room No. 2 | 0d | 2026-08-19 | 2026-08-25 |  |  |  | Interior Communications [48 h] |
| A06200 |  | Rip out IC circuit 8D — Ship's Store | 0d | 2026-08-20 | 2026-08-28 | A06190 |  |  | Interior Communications [88 h]; Rigging & Weight Handling [23 h] |
| A10040 |  | Rip out announcing group 6E — Mess Decks | 0d | 2026-08-20 | 2026-08-28 | A10030 |  |  | Interior Communications [199 h] |
| A05940 |  | Rip out announcing group 2D — Ship's Store | 0d | 2026-08-20 | 2026-08-26 | A05930 FS+0.8d |  |  | Interior Communications [143 h] |
| A05480 |  | Install & terminate IC circuit 7A — Passage & Trunk | 0d | 2026-08-21 | 2026-08-31 | A05470 FS+0.8d |  |  | Interior Communications [128 h] |
| A06020 |  | Rip out IC circuit 7F — Ship's Store | 0d | 2026-08-21 | 2026-08-29 | A06010 |  |  | Interior Communications [236 h] |
| A04590 |  | Rip out IC circuit 3E — Uptake Space No. 3 | 0d | 2026-08-21 | 2026-09-01 | A04580 |  |  | Interior Communications [192 h] |
| A06680 |  | Install & terminate announcing group 3A — Pump Room No. 2 | 0d | 2026-08-21 | 2026-09-01 | A06670 |  |  | Interior Communications [280 h] |
| A07710 |  | Rip out announcing group 5C — Cableway Trunk Zone 3 overhead | 0d | 2026-08-22 | 2026-08-27 | A07700 |  |  | Interior Communications [102 h] |
| A05240 |  | Install & terminate IC circuit 3B — Passage & Trunk | 0d | 2026-08-22 | 2026-09-04 | A05230 |  |  | Interior Communications [303 h] |
| A04960 |  | Install & terminate announcing group 9E — Auxiliary Machinery Room No. 4 | 0d | 2026-08-22 | 2026-08-26 | A04950 FS+0.8d |  |  | Interior Communications [31 h] |
| A04120 |  | Install & terminate announcing group 7A — Uptake Space No. 3 | 0d | 2026-08-23 | 2026-09-06 | A04110 FS+2.4d |  |  | Interior Communications [196 h] |
| A10200 |  | Ring-out & test announcing group 5B — Mess Decks | 0d | 2026-08-25 | 2026-08-27 | A10190 SS+2.4d |  |  | Interior Communications [27 h] |
| A05320 |  | Rip out announcing group 1D — Passage & Trunk | 0d | 2026-08-25 | 2026-08-31 | A05310 FS+2.4d |  |  | Interior Communications [82 h] |
| A05950 |  | Install & terminate announcing group 2D — Ship's Store | 0d | 2026-08-26 | 2026-09-01 | A05940 FS+2.4d |  |  | Interior Communications [34 h] |
| A04970 |  | Ring-out & test announcing group 9E — Auxiliary Machinery Room No. 4 | 0d | 2026-08-26 | 2026-09-02 | A04960 |  |  | Interior Communications [52 h] |
| A06910 |  | Rip out announcing group 1F — Pump Room No. 2 | 0d | 2026-08-27 | 2026-09-10 | A06900 FS+2.4d |  |  | Interior Communications [398 h] |
| A06630 |  | Rip out IC circuit 7F — Pump Room No. 2 | 0d | 2026-08-27 | 2026-08-29 | A06620 |  |  | Interior Communications [28 h] |
| A09950 |  | Rip out announcing group 3C — Mess Decks | 0d | 2026-08-28 | 2026-09-11 | A09940 FS-1.6d |  |  | Interior Communications [175 h] |
| A07720 |  | Install & terminate announcing group 5C — Cableway Trunk Zone 3 overhead | 0d | 2026-08-29 | 2026-09-09 | A07710 |  |  | Interior Communications [239 h] |
| A10050 |  | Install & terminate announcing group 6E — Mess Decks | 0d | 2026-08-29 | 2026-09-03 | A10040 |  |  | Interior Communications [40 h] |
| A06210 |  | Install & terminate IC circuit 8D — Ship's Store | 0d | 2026-08-29 | 2026-09-12 | A06200 |  |  | Interior Communications [288 h] |

| ID | Activity | Duration | Start | Finish | Predecessors | Resources |
| --- | --- | --- | --- | --- | --- | --- |
| A06640 | Install & terminate IC circuit 7F — Pump Room No. 2 | 0d | 2026-08-30 | 2026-09-13 | A06630 FS+0.8d | Interior Communications [380 h] |
| A06030 | Install & terminate IC circuit 7F — Ship's Store | 0d | 2026-08-31 | 2026-09-07 | A06020 | Interior Communications [147 h] |
| A06060 | Rip out IC circuit 7A — Ship's Store | 0d | 2026-08-31 | 2026-09-09 | A06050 | Interior Communications [221 h]; Rigging & Weight Handling [56 h] |
| A09520 | Ring-out & test IC circuit 9F (2-152-0-Q) | 0d | 2026-08-31 | 2026-09-12 | A09510 FS+0.8d | Interior Communications [319 h] |
| A05330 | Install & terminate announcing group 1D — Passage & Trunk | 0d | 2026-09-01 | 2026-09-13 | A05320 FS+2.4d | Interior Communications [72 h] |
| A05490 | Ring-out & test IC circuit 7A — Passage & Trunk | 0d | 2026-09-01 | 2026-09-09 | A05480 | Interior Communications [109 h] |
| A06690 | Ring-out & test announcing group 3A — Pump Room No. 2 | 0d | 2026-09-02 | 2026-09-10 | A06680 | Interior Communications [94 h] |
| A04600 | Install & terminate IC circuit 3E — Uptake Space No. 3 | 0d | 2026-09-02 | 2026-09-06 | A04590 FS+0.8d | Interior Communications [51 h] |
| A05960 | Ring-out & test announcing group 2D — Ship's Store | 0d | 2026-09-04 | 2026-09-15 | A05950 | Interior Communications [350 h] |
| A10060 | Ring-out & test announcing group 6E — Mess Decks | 0d | 2026-09-04 | 2026-09-12 | A10050 | Interior Communications [68 h] |
| A05250 | Ring-out & test IC circuit 3B — Passage & Trunk | 0d | 2026-09-06 | 2026-09-11 | A05240 | Interior Communications [79 h] |
| A04130 | Ring-out & test announcing group 7A — Uptake Space No. 3 | 0d | 2026-09-08 | 2026-09-16 | A04120 | Interior Communications [63 h] |
| A04610 | Ring-out & test IC circuit 3E — Uptake Space No. 3 | 0d | 2026-09-09 | 2026-09-22 | A04600 FS-0.8d | Interior Communications [96 h] |
| A06920 | Install & terminate announcing group 1F — Pump Room No. 2 | 0d | 2026-09-10 | 2026-09-22 | A06910 | Interior Communications [82 h] |
| A06070 | Install & terminate IC circuit 7A — Ship's Store | 0d | 2026-09-10 | 2026-09-20 | A06060 SS+2.4d | Interior Communications [70 h] |
| A06040 | Ring-out & test IC circuit 7F — Ship's Store | 0d | 2026-09-10 | 2026-09-18 | A06030 | Interior Communications [50 h] |
| A07730 | Ring-out & test announcing group 5C — Cableway Trunk Zone 3 overhead | 0d | 2026-09-11 | 2026-09-15 | A07720 | Interior Communications [37 h] |
| A06220 | Ring-out & test IC circuit 8D — Ship's Store | 0d | 2026-09-12 | 2026-09-18 | A06210 | Interior Communications [37 h] |
| A09960 | Install & terminate announcing group 3C — Mess Decks | 0d | 2026-09-13 | 2026-09-20 | A09950 FS+2.4d | Interior Communications [103 h] |
| A05340 | Ring-out & test announcing group 1D — Passage & Trunk | 0d | 2026-09-14 | 2026-09-16 | A05330 FS+0.8d | Interior Communications [47 h]; Rigging & Weight Handling [12 h] |
| A06650 | Ring-out & test IC circuit 7F — Pump Room No. 2 | 0d | 2026-09-15 | 2026-09-23 | A06640 FS+0.8d | Interior Communications [99 h] |
| A09970 | Ring-out & test announcing group 3C — Mess Decks | 0d | 2026-09-21 | 2026-10-04 | A09960 | Interior Communications [389 h] |
| A06080 | Ring-out & test IC circuit 7A — Ship's Store | 0d | 2026-09-23 | 2026-10-07 | A06070 | Interior Communications [235 h] |
| A06930 | Ring-out & test announcing group 1F — Pump Room No. 2 | 0d | 2026-09-23 | 2026-09-29 | A06920 | Interior Communications [43 h] |

| ID | WBS | Activity | Duration | Start | Finish | Predecessors | Complete | Remaining | Resources |
| --- | --- | --- | --- | --- | --- | --- | --- | --- | --- |
|  | 505 | **505 Piping Systems** |  | 2026-07-27 | 2026-10-28 |  |  |  |  |
| A05820 |  | Lay-up & drain pipe spool group 4B — Ship's Store | 0d | 2026-07-27 A | 2026-08-01 A |  | 100% |  | Pipefitting [150 h] |
| A09740 |  | Lay-up & drain valve bank 9E — Scullery | 0d | 2026-07-29 A | 2026-08-07 A |  | 100% |  | Pipefitting [105 h] |
| A07910 |  | Lay-up & drain valve bank 4B — Cableway Trunk Zone 3 overhead | 0d | 2026-07-31 A | 2026-08-02 A |  | 100% |  | Pipefitting [11 h]; Rigging & Weight Handling [3 h] |
| A05830 |  | Cut out pipe spool group 4B — Ship's Store | 0d | 2026-08-02 A | 2026-08-09 A | A05820 | 100% |  | Pipefitting [144 h]; Rigging & Weight Handling [37 h] |
| A08500 |  | Lay-up & drain drain riser 1A — Hangar Bay 3 | 0d | 2026-08-02 A | 2026-08-11 |  | 79% | 0d | Pipefitting [262 h] |
| A10210 |  | Lay-up & drain drain riser 4C — Mess Decks | 0d | 2026-08-03 A | 2026-08-06 A |  | 100% |  | Pipefitting [99 h] |
| A07920 |  | Cut out valve bank 4B — Cableway Trunk Zone 3 overhead | 0d | 2026-08-04 A | 2026-08-15 | A07910 | 52% | 0d | Pipefitting [150 h] |
| A04730 |  | Lay-up & drain pipe spool group 4A — Auxiliary Machinery Room No. 4 | 0d | 2026-08-04 A | 2026-08-14 |  | 54% | 0d | Pipefitting [232 h] |
| A05760 |  | Lay-up & drain valve bank 8A — Ship's Store | 0d | 2026-08-05 A | 2026-08-07 A |  | 100% |  | Pipefitting [25 h] |
| A04620 |  | Lay-up & drain pipe spool group 1F — Uptake Space No. 3 | 0d | 2026-08-05 A | 2026-08-17 |  | 30% | 0d | Pipefitting [82 h] |
| A07420 |  | Lay-up & drain drain riser 6E (4-164-2-Q) | 0d | 2026-08-07 A | 2026-08-15 |  | 31% | 0d | Pipefitting [86 h] |
| A05770 |  | Cut out valve bank 8A — Ship's Store | 0d | 2026-08-08 A | 2026-08-11 | A05760 | 60% | 0d | Pipefitting [20 h] |
| A09750 |  | Cut out valve bank 9E — Scullery | 0d | 2026-08-08 A | 2026-08-20 | A09740 | 11% | 0d | Pipefitting [301 h] |
| A10220 |  | Cut out drain riser 4C — Mess Decks | 0d | 2026-08-09 A | 2026-08-21 | A10210 FS+2.4d | 10% | 0d | Pipefitting [267 h]; Rigging & Weight Handling [67 h] |
| A05840 |  | Fab & fit pipe spool group 4B — Ship's Store | 0d | 2026-08-12 | 2026-08-25 | A05830 FS+0.8d |  |  | Pipefitting [96 h] |
| A09530 |  | Lay-up & drain pipe spool group 1A — Scullery | 0d | 2026-08-12 | 2026-08-21 |  |  |  | Pipefitting [175 h] |
| A05780 |  | Fab & fit valve bank 8A — Ship's Store | 0d | 2026-08-13 | 2026-08-16 | A05770 |  |  | Pipefitting [49 h] |
| A06460 |  | Lay-up & drain pipe spool group 7C — Pump Room No. 2 | 0d | 2026-08-13 | 2026-08-21 |  |  |  | Pipefitting [59 h] |
| A10070 |  | Lay-up & drain pipe spool group 6F — Mess Decks | 0d | 2026-08-13 | 2026-08-19 |  |  |  | Pipefitting [89 h] |
| A08510 |  | Cut out drain riser 1A — Hangar Bay 3 | 0d | 2026-08-13 | 2026-08-17 | A08500 |  |  | Pipefitting [114 h] |
| A07430 |  | Cut out drain riser 6E (4-164-2-Q) | 0d | 2026-08-16 | 2026-08-22 | A07420 FS+0.8d |  |  | Pipefitting [80 h] |
| A04740 |  | Cut out pipe spool group 4A — Auxiliary Machinery Room No. 4 | 0d | 2026-08-16 | 2026-08-24 | A04730 |  |  | Pipefitting [148 h] |
| A07930 |  | Fab & fit valve bank 4B — Cableway Trunk Zone 3 overhead | 0d | 2026-08-17 | 2026-08-25 | A07920 FS+0.8d |  |  | Pipefitting [106 h]; Rigging & Weight Handling [27 h] |
| A04630 |  | Cut out pipe spool group 1F — Uptake Space No. 3 | 0d | 2026-08-17 | 2026-08-26 | A04620 |  |  | Pipefitting [238 h] |
| A07530 |  | Lay-up & drain valve bank 6A — Cable Trunk & IC Space | 0d | 2026-08-18 | 2026-08-25 |  |  |  | Pipefitting [107 h] |
| A08520 |  | Fab & fit drain riser 1A — Hangar Bay 3 | 0d | 2026-08-18 | 2026-08-23 | A08510 FS+0.8d |  |  | Pipefitting [165 h] |
| A07590 |  | Lay-up & drain drain riser 3A — Cableway Trunk Zone 3 overhead | 0d | 2026-08-18 | 2026-08-22 |  |  |  | Pipefitting [77 h] |
| A05790 |  | Weld out valve bank 8A — Ship's Store | 0d | 2026-08-18 | 2026-08-30 | A05780 |  |  | Pipefitting [370 h] |
| A05500 |  | Lay-up & drain drain riser 2B — Passage & Trunk | 0d | 2026-08-19 | 2026-08-22 |  |  |  | Pipefitting [22 h] |
| A05400 |  | Lay-up & drain valve bank 3F — Passage & Trunk | 0d | 2026-08-19 | 2026-08-24 |  |  |  | Pipefitting [84 h] |
| A10080 |  | Cut out pipe spool group 6F — Mess Decks | 0d | 2026-08-21 | 2026-08-30 | A10070 |  |  | Pipefitting [70 h] |
| A10230 |  | Fab & fit drain riser 4C — Mess Decks | 0d | 2026-08-22 | 2026-08-28 | A10220 |  |  | Pipefitting [158 h] |
| A06470 |  | Cut out pipe spool group 7C — Pump Room No. 2 | 0d | 2026-08-22 | 2026-09-01 | A06460 |  |  | Pipefitting [76 h] |
| A09760 |  | Fab & fit valve bank 9E — Scullery | 0d | 2026-08-22 | 2026-09-03 | A09750 FS-1.6d |  |  | Pipefitting [171 h] |
| A09540 |  | Cut out pipe spool group 1A — Scullery | 0d | 2026-08-23 | 2026-08-30 | A09530 |  |  | Pipefitting [62 h] |
| A05510 |  | Cut out drain riser 2B — Passage & Trunk | 0d | 2026-08-24 | 2026-08-26 | A05500 |  |  | Pipefitting [75 h] |
| A08530 |  | Weld out drain riser 1A — Hangar Bay 3 | 0d | 2026-08-24 | 2026-08-27 | A08520 FS+2.4d |  |  | Pipefitting [91 h] |
| A07440 |  | Fab & fit drain riser 6E (4-164-2-Q) | 0d | 2026-08-24 | 2026-09-06 | A07430 FS-1.6d |  |  | Pipefitting [207 h] |
| A07600 |  | Cut out drain riser 3A — Cableway Trunk Zone 3 overhead | 0d | 2026-08-24 | 2026-09-02 | A07590 |  |  | Pipefitting [159 h] |
| A04750 |  | Fab & fit pipe spool group 4A — Auxiliary Machinery Room No. 4 | 0d | 2026-08-25 | 2026-08-30 | A04740 |  |  | Pipefitting [155 h] |
| A05410 |  | Cut out valve bank 3F — Passage & Trunk | 0d | 2026-08-25 | 2026-09-01 | A05400 FS+0.8d |  |  | Pipefitting [156 h] |
| A05850 |  | Weld out pipe spool group 4B — Ship's Store | 0d | 2026-08-26 | 2026-08-30 | A05840 FS+2.4d |  |  | Pipefitting [63 h] |
| A07940 |  | Weld out valve bank 4B — Cableway Trunk Zone 3 overhead | 0d | 2026-08-27 | 2026-09-08 | A07930 |  |  | Pipefitting [434 h] |
| A04640 |  | Fab & fit pipe spool group 1F — Uptake Space No. 3 | 0d | 2026-08-27 | 2026-09-09 | A04630 SS+7.2d |  |  | Pipefitting [99 h] |
| A07540 |  | Cut out valve bank 6A — Cable Trunk & IC Space | 0d | 2026-08-27 | 2026-09-08 | A07530 |  |  | Pipefitting [82 h] |
| A05520 |  | Fab & fit drain riser 2B — Passage & Trunk | 0d | 2026-08-28 | 2026-09-07 | A05510 FS+2.4d |  |  | Pipefitting [75 h] |
| A08540 |  | Hydro test drain riser 1A — Hangar Bay 3 | 0d | 2026-08-30 | 2026-09-05 | A08530 FS-4.8d |  |  | Pipefitting [82 h] |
| A10240 |  | Weld out drain riser 4C — Mess Decks | 0d | 2026-08-30 | 2026-09-05 | A10230 |  |  | Pipefitting [37 h] |
| A10090 |  | Fab & fit pipe spool group 6F — Mess Decks | 0d | 2026-08-31 | 2026-09-03 | A10080 |  |  | Pipefitting [55 h] |
| A05800 |  | Hydro test valve bank 8A — Ship's Store | 0d | 2026-08-31 | 2026-09-11 | A05790 |  |  | Pipefitting [98 h]; Rigging & Weight Handling [25 h] |
| A05860 |  | Hydro test pipe spool group 4B — Ship's Store | 0d | 2026-09-01 | 2026-09-14 | A05850 |  |  | Pipefitting [188 h]; Rigging & Weight Handling [47 h] |
| A09550 |  | Fab & fit pipe spool group 1A — Scullery | 0d | 2026-09-01 | 2026-09-14 | A09540 |  |  | Pipefitting [184 h] |
| A04760 |  | Weld out pipe spool group 4A — Auxiliary Machinery Room No. 4 | 0d | 2026-09-02 | 2026-09-04 | A04750 FS+0.8d |  |  | Pipefitting [13 h] |
| A05420 |  | Fab & fit valve bank 3F — Passage & Trunk | 0d | 2026-09-03 | 2026-09-14 | A05410 FS+2.4d |  |  | Pipefitting [97 h] |
| A06480 |  | Fab & fit pipe spool group 7C — Pump Room No. 2 | 0d | 2026-09-04 | 2026-09-16 | A06470 FS+0.8d |  |  | Pipefitting [142 h]; Rigging & Weight Handling [36 h] |
| A10100 |  | Weld out pipe spool group 6F — Mess Decks | 0d | 2026-09-04 | 2026-09-16 | A10090 FS+0.8d |  |  | Pipefitting [203 h] |
| A07610 |  | Fab & fit drain riser 3A — Cableway Trunk Zone 3 overhead | 0d | 2026-09-05 | 2026-09-11 | A07600 |  |  | Pipefitting [97 h] |
| A09770 |  | Weld out valve bank 9E — Scullery | 0d | 2026-09-05 | 2026-09-16 | A09760 |  |  | Pipefitting [103 h] |
| A08550 |  | Flush & restore drain riser 1A — Hangar Bay 3 | 0d | 2026-09-05 | 2026-09-13 | A08540 FS+0.8d |  |  | Pipefitting [107 h] |
| A04770 |  | Hydro test pipe spool group 4A — Auxiliary Machinery Room No. 4 | 0d | 2026-09-05 | 2026-09-12 | A04760 |  |  | Pipefitting [39 h] |
| A07450 |  | Weld out drain riser 6E (4-164-2-Q) | 0d | 2026-09-07 | 2026-09-14 | A07440 |  |  | Pipefitting [132 h] |
| A10250 |  | Hydro test drain riser 4C — Mess Decks | 0d | 2026-09-08 | 2026-09-17 | A10240 FS+2.4d |  |  | Pipefitting [110 h]; Rigging & Weight Handling [28 h] |
| A07550 |  | Fab & fit valve bank 6A — Cable Trunk & IC Space | 0d | 2026-09-09 | 2026-09-14 | A07540 |  |  | Pipefitting [126 h] |
| A05530 |  | Weld out drain riser 2B — Passage & Trunk | 0d | 2026-09-09 | 2026-09-21 | A05520 FS+2.4d |  |  | Pipefitting [85 h] |
| A04650 |  | Weld out pipe spool group 1F — Uptake Space No. 3 | 0d | 2026-09-10 | 2026-09-16 | A04640 FS+0.8d |  |  | Pipefitting [135 h] |
| A07950 |  | Hydro test valve bank 4B — Cableway Trunk Zone 3 overhead | 0d | 2026-09-11 | 2026-09-14 | A07940 |  |  | Pipefitting [76 h] |
| A05810 |  | Flush & restore valve bank 8A — Ship's Store | 0d | 2026-09-13 | 2026-09-23 | A05800 |  |  | Pipefitting [157 h] |
| A04780 |  | Flush & restore pipe spool group 4A — Auxiliary Machinery Room No. 4 | 0d | 2026-09-13 | 2026-09-24 | A04770 FS+2.4d |  |  | Pipefitting [167 h]; Rigging & Weight Handling [42 h] |
| A07620 |  | Weld out drain riser 3A — Cableway Trunk Zone 3 overhead | 0d | 2026-09-14 | 2026-09-21 | A07610 FS-2.4d |  |  | Pipefitting [127 h] |

| ID | Activity | Duration | Start | Finish | Predecessors | Resources |
| --- | --- | --- | --- | --- | --- | --- |
| A05430 | Weld out valve bank 3F — Passage & Trunk | 0d | 2026-09-14 | 2026-09-28 | A05420 | Pipefitting [81 h] |
| A07960 | Flush & restore valve bank 4B — Cableway Trunk Zone 3 overhead | 0d | 2026-09-15 | 2026-09-24 | A07950 | Pipefitting [58 h] |
| A07560 | Weld out valve bank 6A — Cable Trunk & IC Space | 0d | 2026-09-16 | 2026-09-28 | A07550 | Pipefitting [228 h]; Rigging & Weight Handling [58 h] |
| A05870 | Flush & restore pipe spool group 4B — Ship's Store | 0d | 2026-09-16 | 2026-09-24 | A05860 | Pipefitting [108 h]; Rigging & Weight Handling [28 h] |
| A07460 | Hydro test drain riser 6E (4-164-2-Q) | 0d | 2026-09-16 | 2026-09-25 | A07450 | Pipefitting [137 h] |
| A09780 | Hydro test valve bank 9E — Scullery | 0d | 2026-09-16 | 2026-09-21 | A09770 | Pipefitting [33 h] |
| A09560 | Weld out pipe spool group 1A — Scullery | 0d | 2026-09-16 | 2026-09-30 | A09550 | Pipefitting [423 h] |
| A10260 | Flush & restore drain riser 4C — Mess Decks | 0d | 2026-09-17 | 2026-09-23 | A10250 | Pipefitting [44 h] |
| A10110 | Hydro test pipe spool group 6F — Mess Decks | 0d | 2026-09-18 | 2026-09-21 | A10100 | Pipefitting [16 h]; Rigging & Weight Handling [4 h] |
| A04660 | Hydro test pipe spool group 1F — Uptake Space No. 3 | 0d | 2026-09-18 | 2026-09-22 | A04650 FS+0.8d | Pipefitting [121 h] |
| A06490 | Weld out pipe spool group 7C — Pump Room No. 2 | 0d | 2026-09-19 | 2026-09-28 | A06480 FS+2.4d | Pipefitting [137 h] |
| A09790 | Flush & restore valve bank 9E — Scullery | 0d | 2026-09-21 | 2026-09-29 | A09780 | Pipefitting [53 h] |
| A05540 | Hydro test drain riser 2B — Passage & Trunk | 0d | 2026-09-21 | 2026-09-26 | A05530 | Pipefitting [60 h] |
| A10120 | Flush & restore pipe spool group 6F — Mess Decks | 0d | 2026-09-22 | 2026-09-28 | A10110 | Pipefitting [141 h] |
| A07630 | Hydro test drain riser 3A — Cableway Trunk Zone 3 overhead | 0d | 2026-09-24 | 2026-09-30 | A07620 FS+2.4d | Pipefitting [80 h] |
| A04670 | Flush & restore pipe spool group 1F — Uptake Space No. 3 | 0d | 2026-09-24 | 2026-10-07 | A04660 | Pipefitting [82 h] |
| A07470 | Flush & restore drain riser 6E (4-164-2-Q) | 0d | 2026-09-26 | 2026-10-01 | A07460 | Pipefitting [31 h] |
| A05550 | Flush & restore drain riser 2B — Passage & Trunk | 0d | 2026-09-29 | 2026-10-12 | A05540 SS+7.2d | Pipefitting [104 h] |
| A05440 | Hydro test valve bank 3F — Passage & Trunk | 0d | 2026-09-29 | 2026-10-10 | A05430 FS+2.4d | Pipefitting [97 h] |
| A06500 | Hydro test pipe spool group 7C — Pump Room No. 2 | 0d | 2026-09-30 | 2026-10-05 | A06490 | Pipefitting [89 h] |
| A09570 | Hydro test pipe spool group 1A — Scullery | 0d | 2026-09-30 | 2026-10-12 | A09560 | Pipefitting [167 h] |
| A07570 | Hydro test valve bank 6A — Cable Trunk & IC Space | 0d | 2026-09-30 | 2026-10-07 | A07560 | Pipefitting [44 h] |
| A07640 | Flush & restore drain riser 3A — Cableway Trunk Zone 3 overhead | 0d | 2026-10-01 | 2026-10-11 | A07630 SS+7.2d | Pipefitting [305 h] |
| A06510 | Flush & restore pipe spool group 7C — Pump Room No. 2 | 0d | 2026-10-07 | 2026-10-20 | A06500 FS+0.8d | Pipefitting [449 h] |
| A07580 | Flush & restore valve bank 6A — Cable Trunk & IC Space | 0d | 2026-10-09 | 2026-10-14 | A07570 | Pipefitting [111 h] |
| A05450 | Flush & restore valve bank 3F — Passage & Trunk | 0d | 2026-10-12 | 2026-10-24 | A05440 FS+2.4d | Pipefitting [160 h] |
| A09580 | Flush & restore pipe spool group 1A — Scullery | 0d | 2026-10-15 | 2026-10-28 | A09570 SS+4.8d | Pipefitting [343 h] |

| ID | WBS | Activity | Duration | Start | Finish | Predecessors | Complete | Remaining | Resources |
| --- | --- | --- | --- | --- | --- | --- | --- | --- | --- |
|  | 508 | **508 Insulation & Lagging** |  | 2026-07-30 | 2026-09-29 |  |  |  |  |
| A04900 |  | Strip lagging — hull board field 5D — Auxiliary Machinery Room No. 4 | 0d | 2026-07-30 A | 2026-08-04 A |  | 100% |  | Insulation & Lagging [102 h] |
| A09700 |  | Strip lagging — hull board field 1D — Scullery | 0d | 2026-08-01 A | 2026-08-05 A |  | 100% |  | Insulation & Lagging [113 h] |
| A07790 |  | Strip lagging — lagging section 7E — Cableway Trunk Zone 3 overhead | 0d | 2026-08-02 A | 2026-08-07 A |  | 100% |  | Insulation & Lagging [22 h]; Rigging & Weight Handling [6 h] |
| A07290 |  | Strip lagging — hull board field 4B — Cable Trunk & IC Space | 0d | 2026-08-03 A | 2026-08-10 A |  | 100% |  | Insulation & Lagging [253 h] |
| A10130 |  | Strip lagging — hull board field 1A — Mess Decks | 0d | 2026-08-04 A | 2026-08-13 |  | 61% | 0d | Insulation & Lagging [56 h] |
| A04910 |  | Asbestos survey — hull board field 5D — Auxiliary Machinery Room No. 4 | 0d | 2026-08-06 A | 2026-08-13 | A04900 | 47% | 0d | Insulation & Lagging [45 h] |
| A09710 |  | Asbestos survey — hull board field 1D — Scullery | 0d | 2026-08-07 A | 2026-08-14 | A09700 | 32% | 0d | Insulation & Lagging [40 h] |
| A07800 |  | Asbestos survey — lagging section 7E — Cableway Trunk Zone 3 overhead | 0d | 2026-08-08 A | 2026-08-19 | A07790 FS-0.8d | 11% | 0d | Insulation & Lagging [324 h] |
| A09000 |  | Strip lagging — hull board field 3D — Hangar Bay 3 | 0d | 2026-08-09 A | 2026-08-19 |  | 11% | 0d | Insulation & Lagging [133 h] |
| A05670 |  | Strip lagging — lagging section 6E — Passage & Trunk | 0d | 2026-08-09 A | 2026-08-20 |  | 10% | 0d | Insulation & Lagging [203 h] |
| A07300 |  | Asbestos survey — hull board field 4B — Cable Trunk & IC Space | 0d | 2026-08-11 | 2026-08-21 | A07290 |  |  | Insulation & Lagging [122 h] |
| A07870 |  | Strip lagging — hull board field 2A — Cableway Trunk Zone 3 overhead | 0d | 2026-08-11 | 2026-08-19 |  |  |  | Insulation & Lagging [64 h] |
| A06990 |  | Strip lagging — lagging section 7B — Cable Trunk & IC Space | 0d | 2026-08-12 | 2026-08-20 |  |  |  | Insulation & Lagging [90 h] |
| A04440 |  | Strip lagging — hull board field 6B — Uptake Space No. 3 | 0d | 2026-08-12 | 2026-08-23 |  |  |  | Insulation & Lagging [222 h] |
| A05970 |  | Strip lagging — hull board field 7E — Ship's Store | 0d | 2026-08-12 | 2026-08-25 |  |  |  | Insulation & Lagging [468 h] |
| A07330 |  | Strip lagging — hull board field 4C — Cable Trunk & IC Space | 0d | 2026-08-12 | 2026-08-21 |  |  |  | Insulation & Lagging [212 h] |
| A10140 |  | Asbestos survey — hull board field 1A — Mess Decks | 0d | 2026-08-14 | 2026-08-18 | A10130 SS+2.4d |  |  | Insulation & Lagging [134 h] |
| A07830 |  | Strip lagging — lagging section 3F — Cableway Trunk Zone 3 overhead | 0d | 2026-08-14 | 2026-08-28 |  |  |  | Insulation & Lagging [170 h] |
| A10270 |  | Strip lagging — lagging section 5D — Mess Decks | 0d | 2026-08-15 | 2026-08-25 |  |  |  | Insulation & Lagging [174 h] |
| A09720 |  | Re-insulate hull board field 1D — Scullery | 0d | 2026-08-15 | 2026-08-25 | A09710 FS+0.8d |  |  | Insulation & Lagging [162 h] |
| A04920 |  | Re-insulate hull board field 5D — Auxiliary Machinery Room No. 4 | 0d | 2026-08-15 | 2026-08-23 | A04910 |  |  | Insulation & Lagging [122 h] |
| A09900 |  | Strip lagging — lagging section 3B — Mess Decks | 0d | 2026-08-17 | 2026-08-23 |  |  |  | Insulation & Lagging [33 h] |
| A05180 |  | Strip lagging — lagging section 3A — Passage & Trunk | 0d | 2026-08-17 | 2026-08-25 |  |  |  | Insulation & Lagging [197 h] |
| A10150 |  | Re-insulate hull board field 1A — Mess Decks | 0d | 2026-08-19 | 2026-08-21 | A10140 |  |  | Insulation & Lagging [20 h] |
| A09010 |  | Asbestos survey — hull board field 3D — Hangar Bay 3 | 0d | 2026-08-19 | 2026-08-28 | A09000 |  |  | Insulation & Lagging [152 h] |
| A07880 |  | Asbestos survey — hull board field 2A — Cableway Trunk Zone 3 overhead | 0d | 2026-08-20 | 2026-08-25 | A07870 |  |  | Insulation & Lagging [85 h] |
| A05680 |  | Asbestos survey — lagging section 6E — Passage & Trunk | 0d | 2026-08-20 | 2026-08-28 | A05670 FS+0.8d |  |  | Insulation & Lagging [54 h]; Rigging & Weight Handling [14 h] |
| A07000 |  | Asbestos survey — lagging section 7B — Cable Trunk & IC Space | 0d | 2026-08-21 | 2026-08-23 | A06990 |  |  | Insulation & Lagging [51 h] |
| A07810 |  | Re-insulate lagging section 7E — Cableway Trunk Zone 3 overhead | 0d | 2026-08-22 | 2026-08-25 | A07800 |  |  | Insulation & Lagging [21 h] |
| A07340 |  | Asbestos survey — hull board field 4C — Cable Trunk & IC Space | 0d | 2026-08-22 | 2026-08-28 | A07330 FS+2.4d |  |  | Insulation & Lagging [85 h] |
| A07310 |  | Re-insulate hull board field 4B — Cable Trunk & IC Space | 0d | 2026-08-22 | 2026-08-31 | A07300 FS+2.4d |  |  | Insulation & Lagging [59 h] |
| A10160 |  | Sheathing & finish hull board field 1A — Mess Decks | 0d | 2026-08-24 | 2026-08-27 | A10150 FS+2.4d |  |  | Insulation & Lagging [50 h]; Rigging & Weight Handling [13 h] |
| A07010 |  | Re-insulate lagging section 7B — Cable Trunk & IC Space | 0d | 2026-08-24 | 2026-09-02 | A07000 |  |  | Insulation & Lagging [77 h] |
| A09910 |  | Asbestos survey — lagging section 3B — Mess Decks | 0d | 2026-08-24 | 2026-09-02 | A09900 |  |  | Insulation & Lagging [218 h] |
| A09730 |  | Sheathing & finish hull board field 1D — Scullery | 0d | 2026-08-25 | 2026-09-06 | A09720 |  |  | Insulation & Lagging [177 h] |
| A07820 |  | Sheathing & finish lagging section 7E — Cableway Trunk Zone 3 overhead | 0d | 2026-08-25 | 2026-09-02 | A07810 FS-1.6d |  |  | Insulation & Lagging [110 h] |
| A04450 |  | Asbestos survey — hull board field 6B — Uptake Space No. 3 | 0d | 2026-08-26 | 2026-09-04 | A04440 FS+2.4d |  |  | Insulation & Lagging [158 h] |
| A04930 |  | Sheathing & finish hull board field 5D — Auxiliary Machinery Room No. 4 | 0d | 2026-08-26 | 2026-08-30 | A04920 |  |  | Insulation & Lagging [60 h] |
| A10280 |  | Asbestos survey — lagging section 5D — Mess Decks | 0d | 2026-08-27 | 2026-09-04 | A10270 |  |  | Insulation & Lagging [238 h] |
| A07890 |  | Re-insulate hull board field 2A — Cableway Trunk Zone 3 overhead | 0d | 2026-08-27 | 2026-09-08 | A07880 FS+0.8d |  |  | Insulation & Lagging [140 h] |
| A05980 |  | Asbestos survey — hull board field 7E — Ship's Store | 0d | 2026-08-28 | 2026-09-02 | A05970 |  |  | Insulation & Lagging [42 h] |
| A05190 |  | Asbestos survey — lagging section 3A — Passage & Trunk | 0d | 2026-08-28 | 2026-09-11 | A05180 |  |  | Insulation & Lagging [104 h] |
| A07350 |  | Re-insulate hull board field 4C — Cable Trunk & IC Space | 0d | 2026-08-29 | 2026-09-04 | A07340 |  |  | Insulation & Lagging [55 h]; Rigging & Weight Handling [14 h] |
| A05690 |  | Re-insulate lagging section 6E — Passage & Trunk | 0d | 2026-08-30 | 2026-09-04 | A05680 |  |  | Insulation & Lagging [92 h] |
| A09020 |  | Re-insulate hull board field 3D — Hangar Bay 3 | 0d | 2026-08-31 | 2026-09-12 | A09010 |  |  | Insulation & Lagging [208 h] |
| A07840 |  | Asbestos survey — lagging section 3F — Cableway Trunk Zone 3 overhead | 0d | 2026-08-31 | 2026-09-05 | A07830 |  |  | Insulation & Lagging [46 h] |
| A07320 |  | Sheathing & finish hull board field 4B — Cable Trunk & IC Space | 0d | 2026-09-01 | 2026-09-13 | A07310 |  |  | Insulation & Lagging [243 h]; Rigging & Weight Handling [61 h] |
| A07020 |  | Sheathing & finish lagging section 7B — Cable Trunk & IC Space | 0d | 2026-09-03 | 2026-09-12 | A07010 SS+2.4d |  |  | Insulation & Lagging [59 h] |
| A09920 |  | Re-insulate lagging section 3B — Mess Decks | 0d | 2026-09-04 | 2026-09-14 | A09910 |  |  | Insulation & Lagging [234 h] |
| A05990 |  | Re-insulate hull board field 7E — Ship's Store | 0d | 2026-09-05 | 2026-09-18 | A05980 FS+2.4d |  |  | Insulation & Lagging [241 h] |
| A05700 |  | Sheathing & finish lagging section 6E — Passage & Trunk | 0d | 2026-09-05 | 2026-09-12 | A05690 |  |  | Insulation & Lagging [171 h] |
| A07850 |  | Re-insulate lagging section 3F — Cableway Trunk Zone 3 overhead | 0d | 2026-09-06 | 2026-09-09 | A07840 |  |  | Insulation & Lagging [45 h] |
| A04460 |  | Re-insulate hull board field 6B — Uptake Space No. 3 | 0d | 2026-09-06 | 2026-09-09 | A04450 |  |  | Insulation & Lagging [19 h] |
| A07360 |  | Sheathing & finish hull board field 4C — Cable Trunk & IC Space | 0d | 2026-09-07 | 2026-09-09 | A07350 FS+0.8d |  |  | Insulation & Lagging [19 h] |
| A10290 |  | Re-insulate lagging section 5D — Mess Decks | 0d | 2026-09-07 | 2026-09-19 | A10280 FS+0.8d |  |  | Insulation & Lagging [243 h] |
| A07900 |  | Sheathing & finish hull board field 2A — Cableway Trunk Zone 3 overhead | 0d | 2026-09-09 | 2026-09-19 | A07890 SS+2.4d |  |  | Insulation & Lagging [143 h] |
| A04470 |  | Sheathing & finish hull board field 6B — Uptake Space No. 3 | 0d | 2026-09-10 | 2026-09-20 | A04460 FS-0.8d |  |  | Insulation & Lagging [182 h] |
| A07860 |  | Sheathing & finish lagging section 3F — Cableway Trunk Zone 3 overhead | 0d | 2026-09-10 | 2026-09-23 | A07850 FS+0.8d |  |  | Insulation & Lagging [164 h] |
| A05200 |  | Re-insulate lagging section 3A — Passage & Trunk | 0d | 2026-09-12 | 2026-09-14 | A05190 FS+0.8d |  |  | Insulation & Lagging [77 h] |
| A09030 |  | Sheathing & finish hull board field 3D — Hangar Bay 3 | 0d | 2026-09-14 | 2026-09-20 | A09020 FS+0.8d |  |  | Insulation & Lagging [86 h]; Rigging & Weight Handling [22 h] |
| A05210 |  | Sheathing & finish lagging section 3A — Passage & Trunk | 0d | 2026-09-16 | 2026-09-22 | A05200 FS+2.4d |  |  | Insulation & Lagging [87 h] |
| A09930 |  | Sheathing & finish lagging section 3B — Mess Decks | 0d | 2026-09-16 | 2026-09-22 | A09920 |  |  | Insulation & Lagging [64 h] |
| A10300 |  | Sheathing & finish lagging section 5D — Mess Decks | 0d | 2026-09-21 | 2026-09-29 | A10290 FS+2.4d |  |  | Insulation & Lagging [183 h] |
| A06000 |  | Sheathing & finish hull board field 7E — Ship's Store | 0d | 2026-09-21 | 2026-09-24 | A05990 |  |  | Insulation & Lagging [24 h] |

| ID | WBS | Activity | Duration | Start | Finish | Predecessors | Complete | Remaining | Resources |
| --- | --- | --- | --- | --- | --- | --- | --- | --- | --- |
|  | 512 | **512 Ventilation & Uptakes** |  | 2026-07-28 | 2026-10-22 |  |  |  |  |
| A05560 |  | Survey & mark exhaust riser 2C — Passage & Trunk | 0d | 2026-07-28 A | 2026-08-04 A |  | 100% |  | Sheet Metal / HVAC [94 h] |
| A08610 |  | Survey & mark supply trunk 4C — Hangar Bay 3 | 0d | 2026-07-28 A | 2026-08-06 A |  | 100% |  | Sheet Metal / HVAC [149 h] |
| A06290 |  | Survey & mark vent branch 6F (3-164-2-Q) | 0d | 2026-07-31 A | 2026-08-13 |  | 70% | 0d | Sheet Metal / HVAC [112 h] |
| A08790 |  | Survey & mark vent branch 2F (1-160-0-Q) | 0d | 2026-08-01 A | 2026-08-05 A |  | 100% |  | Sheet Metal / HVAC [60 h]; Rigging & Weight Handling [15 h] |
| A09640 |  | Survey & mark vent branch 5C (2-152-0-Q) | 0d | 2026-08-03 A | 2026-08-13 |  | 69% | 0d | Sheet Metal / HVAC [160 h] |
| A05570 |  | Remove & tag exhaust riser 2C — Passage & Trunk | 0d | 2026-08-05 A | 2026-08-16 | A05560 FS+0.8d | 39% | 0d | Sheet Metal / HVAC [209 h] |
| A06230 |  | Survey & mark vent branch 9E — Ship's Store | 0d | 2026-08-05 A | 2026-08-12 |  | 56% | 0d | Sheet Metal / HVAC [90 h] |
| A08670 |  | Survey & mark exhaust riser 2D — Hangar Bay 3 | 0d | 2026-08-05 A | 2026-08-14 |  | 49% | 0d | Sheet Metal / HVAC [185 h] |
| A08800 |  | Remove & tag vent branch 2F (1-160-0-Q) | 0d | 2026-08-07 A | 2026-08-19 | A08790 FS+0.8d | 22% | 0d | Sheet Metal / HVAC [74 h] |
| A08620 |  | Remove & tag supply trunk 4C — Hangar Bay 3 | 0d | 2026-08-07 A | 2026-08-13 | A08610 | 45% | 0d | Sheet Metal / HVAC [143 h] |
| A08630 |  | Fab replacement duct — supply trunk 4C — Hangar Bay 3 | 0d | 2026-08-13 | 2026-08-23 | A08620 FS+0.8d |  |  | Sheet Metal / HVAC [88 h] |
| A06240 |  | Remove & tag vent branch 9E — Ship's Store | 0d | 2026-08-13 | 2026-08-18 | A06230 FS+0.8d |  |  | Sheet Metal / HVAC [74 h] |
| A09650 |  | Remove & tag vent branch 5C (2-152-0-Q) | 0d | 2026-08-14 | 2026-08-21 | A09640 FS+2.4d |  |  | Sheet Metal / HVAC [85 h] |
| A08680 |  | Remove & tag exhaust riser 2D — Hangar Bay 3 | 0d | 2026-08-16 | 2026-08-20 | A08670 |  |  | Sheet Metal / HVAC [113 h] |
| A04840 |  | Survey & mark vent branch 2C — Auxiliary Machinery Room No. 4 | 0d | 2026-08-16 | 2026-08-29 |  |  |  | Sheet Metal / HVAC [302 h] |
| A06300 |  | Remove & tag vent branch 6F (3-164-2-Q) | 0d | 2026-08-16 | 2026-08-29 | A06290 |  |  | Sheet Metal / HVAC [95 h] |
| A08730 |  | Survey & mark vent branch 6E — Hangar Bay 3 | 0d | 2026-08-17 | 2026-08-19 |  |  |  | Sheet Metal / HVAC [85 h] |
| A07970 |  | Survey & mark supply trunk 4C — Cableway Trunk Zone 3 overhead | 0d | 2026-08-17 | 2026-08-20 |  |  |  | Sheet Metal / HVAC [36 h]; Rigging & Weight Handling [10 h] |
| A06400 |  | Survey & mark vent branch 3B — Pump Room No. 2 | 0d | 2026-08-17 | 2026-08-24 |  |  |  | Sheet Metal / HVAC [194 h] |
| A05580 |  | Fab replacement duct — exhaust riser 2C — Passage & Trunk | 0d | 2026-08-18 | 2026-08-22 | A05570 |  |  | Sheet Metal / HVAC [36 h] |
| A07080 |  | Survey & mark exhaust riser 5D — Cable Trunk & IC Space | 0d | 2026-08-18 | 2026-08-21 |  |  |  | Sheet Metal / HVAC [20 h] |
| A08740 |  | Remove & tag vent branch 6E — Hangar Bay 3 | 0d | 2026-08-20 | 2026-09-02 | A08730 |  |  | Sheet Metal / HVAC [359 h] |
| A07980 |  | Remove & tag supply trunk 4C — Cableway Trunk Zone 3 overhead | 0d | 2026-08-20 | 2026-08-31 | A07970 FS+0.8d |  |  | Sheet Metal / HVAC [206 h]; Rigging & Weight Handling [52 h] |
| A06250 |  | Fab replacement duct — vent branch 9E — Ship's Store | 0d | 2026-08-21 | 2026-09-01 | A06240 FS+2.4d |  |  | Sheet Metal / HVAC [74 h] |
| A08690 |  | Fab replacement duct — exhaust riser 2D — Hangar Bay 3 | 0d | 2026-08-21 | 2026-08-28 | A08680 |  |  | Sheet Metal / HVAC [139 h]; Rigging & Weight Handling [35 h] |
| A09660 |  | Fab replacement duct — vent branch 5C (2-152-0-Q) | 0d | 2026-08-21 | 2026-08-29 | A09650 FS+0.8d |  |  | Sheet Metal / HVAC [237 h] |
| A08810 |  | Fab replacement duct — vent branch 2F (1-160-0-Q) | 0d | 2026-08-22 | 2026-08-29 | A08800 |  |  | Sheet Metal / HVAC [166 h] |
| A07090 |  | Remove & tag exhaust riser 5D — Cable Trunk & IC Space | 0d | 2026-08-23 | 2026-08-25 | A07080 FS+0.8d |  |  | Sheet Metal / HVAC [18 h] |
| A05590 |  | Install exhaust riser 2C — Passage & Trunk | 0d | 2026-08-24 | 2026-08-27 | A05580 |  |  | Sheet Metal / HVAC [23 h] |
| A08640 |  | Install supply trunk 4C — Hangar Bay 3 | 0d | 2026-08-24 | 2026-09-02 | A08630 FS+2.4d |  |  | Sheet Metal / HVAC [144 h]; Rigging & Weight Handling [37 h] |
| A06410 |  | Remove & tag vent branch 3B — Pump Room No. 2 | 0d | 2026-08-25 | 2026-08-29 | A06400 |  |  | Sheet Metal / HVAC [29 h] |
| A07100 |  | Fab replacement duct — exhaust riser 5D — Cable Trunk & IC Space | 0d | 2026-08-26 | 2026-09-02 | A07090 |  |  | Sheet Metal / HVAC [131 h] |
| A08700 |  | Install exhaust riser 2D — Hangar Bay 3 | 0d | 2026-08-29 | 2026-09-08 | A08690 FS+0.8d |  |  | Sheet Metal / HVAC [126 h] |
| A08820 |  | Install vent branch 2F (1-160-0-Q) | 0d | 2026-08-30 | 2026-09-01 | A08810 FS+2.4d |  |  | Sheet Metal / HVAC [28 h]; Rigging & Weight Handling [8 h] |
| A05600 |  | Duct leak test exhaust riser 2C — Passage & Trunk | 0d | 2026-08-30 | 2026-09-03 | A05590 |  |  | Sheet Metal / HVAC [50 h] |
| A04850 |  | Remove & tag vent branch 2C — Auxiliary Machinery Room No. 4 | 0d | 2026-08-30 | 2026-09-08 | A04840 |  |  | Sheet Metal / HVAC [74 h] |
| A06420 |  | Fab replacement duct — vent branch 3B — Pump Room No. 2 | 0d | 2026-08-31 | 2026-09-08 | A06410 FS+0.8d |  |  | Sheet Metal / HVAC [120 h] |
| A06310 |  | Fab replacement duct — vent branch 6F (3-164-2-Q) | 0d | 2026-08-31 | 2026-09-04 | A06300 |  |  | Sheet Metal / HVAC [71 h] |
| A07990 |  | Fab replacement duct — supply trunk 4C — Cableway Trunk Zone 3 overhead | 0d | 2026-08-31 | 2026-09-12 | A07980 SS+2.4d |  |  | Sheet Metal / HVAC [111 h] |
| A09670 |  | Install vent branch 5C (2-152-0-Q) | 0d | 2026-08-31 | 2026-09-09 | A09660 |  |  | Sheet Metal / HVAC [150 h] |
| A08650 |  | Duct leak test supply trunk 4C — Hangar Bay 3 | 0d | 2026-09-02 | 2026-09-08 | A08640 |  |  | Sheet Metal / HVAC [32 h] |
| A08830 |  | Duct leak test vent branch 2F (1-160-0-Q) | 0d | 2026-09-04 | 2026-09-10 | A08820 FS+2.4d |  |  | Sheet Metal / HVAC [104 h] |
| A06260 |  | Install vent branch 9E — Ship's Store | 0d | 2026-09-04 | 2026-09-07 | A06250 |  |  | Sheet Metal / HVAC [69 h]; Rigging & Weight Handling [18 h] |
| A08750 |  | Fab replacement duct — vent branch 6E — Hangar Bay 3 | 0d | 2026-09-04 | 2026-09-07 | A08740 |  |  | Sheet Metal / HVAC [37 h] |
| A06320 |  | Install vent branch 6F (3-164-2-Q) | 0d | 2026-09-04 | 2026-09-18 | A06310 FS+0.8d |  |  | Sheet Metal / HVAC [336 h] |
| A07110 |  | Install exhaust riser 5D — Cable Trunk & IC Space | 0d | 2026-09-05 | 2026-09-16 | A07100 |  |  | Sheet Metal / HVAC [68 h] |
| A05610 |  | Close-out & QA exhaust riser 2C — Passage & Trunk | 0d | 2026-09-06 | 2026-09-18 | A05600 FS+0.8d |  |  | Sheet Metal / HVAC [325 h] |
| A08760 |  | Install vent branch 6E — Hangar Bay 3 | 0d | 2026-09-07 | 2026-09-12 | A08750 |  |  | Sheet Metal / HVAC [104 h] |
| A06430 |  | Install vent branch 3B — Pump Room No. 2 | 0d | 2026-09-08 | 2026-09-19 | A06420 FS+0.8d |  |  | Sheet Metal / HVAC [177 h] |
| A06270 |  | Duct leak test vent branch 9E — Ship's Store | 0d | 2026-09-09 | 2026-09-14 | A06260 FS+2.4d |  |  | Sheet Metal / HVAC [90 h] |
| A08660 |  | Close-out & QA supply trunk 4C — Hangar Bay 3 | 0d | 2026-09-09 | 2026-09-12 | A08650 FS+2.4d |  |  | Sheet Metal / HVAC [20 h] |
| A08710 |  | Duct leak test exhaust riser 2D — Hangar Bay 3 | 0d | 2026-09-09 | 2026-09-12 | A08700 |  |  | Sheet Metal / HVAC [23 h] |
| A04860 |  | Fab replacement duct — vent branch 2C — Auxiliary Machinery Room No. 4 | 0d | 2026-09-09 | 2026-09-15 | A04850 |  |  | Sheet Metal / HVAC [95 h] |
| A09680 |  | Duct leak test vent branch 5C (2-152-0-Q) | 0d | 2026-09-12 | 2026-09-22 | A09670 |  |  | Sheet Metal / HVAC [81 h] |
| A08840 |  | Close-out & QA vent branch 2F (1-160-0-Q) | 0d | 2026-09-12 | 2026-09-17 | A08830 |  |  | Sheet Metal / HVAC [41 h] |
| A08000 |  | Install supply trunk 4C — Cableway Trunk Zone 3 overhead | 0d | 2026-09-12 | 2026-09-24 | A07990 FS+0.8d |  |  | Sheet Metal / HVAC [290 h] |
| A08720 |  | Close-out & QA exhaust riser 2D — Hangar Bay 3 | 0d | 2026-09-13 | 2026-09-15 | A08710 FS+2.4d |  |  | Sheet Metal / HVAC [34 h] |
| A08770 |  | Duct leak test vent branch 6E — Hangar Bay 3 | 0d | 2026-09-14 | 2026-09-17 | A08760 |  |  | Sheet Metal / HVAC [59 h] |
| A04870 |  | Install vent branch 2C — Auxiliary Machinery Room No. 4 | 0d | 2026-09-16 | 2026-09-29 | A04860 FS+0.8d |  |  | Sheet Metal / HVAC [183 h] |
| A06280 |  | Close-out & QA vent branch 9E — Ship's Store | 0d | 2026-09-16 | 2026-09-20 | A06270 FS+0.8d |  |  | Sheet Metal / HVAC [67 h] |
| A07120 |  | Duct leak test exhaust riser 5D — Cable Trunk & IC Space | 0d | 2026-09-18 | 2026-09-28 | A07110 |  |  | Sheet Metal / HVAC [63 h] |
| A08780 |  | Close-out & QA vent branch 6E — Hangar Bay 3 | 0d | 2026-09-18 | 2026-09-28 | A08770 FS+0.8d |  |  | Sheet Metal / HVAC [175 h] |
| A06330 |  | Duct leak test vent branch 6F (3-164-2-Q) | 0d | 2026-09-20 | 2026-09-27 | A06320 FS+2.4d |  |  | Sheet Metal / HVAC [94 h]; Rigging & Weight Handling [24 h] |
| A06440 |  | Duct leak test vent branch 3B — Pump Room No. 2 | 0d | 2026-09-22 | 2026-10-01 | A06430 |  |  | Sheet Metal / HVAC [83 h] |
| A09690 |  | Close-out & QA vent branch 5C (2-152-0-Q) | 0d | 2026-09-22 | 2026-09-28 | A09680 |  |  | Sheet Metal / HVAC [40 h] |
| A08010 |  | Duct leak test supply trunk 4C — Cableway Trunk Zone 3 overhead | 0d | 2026-09-25 | 2026-09-27 | A08000 FS+0.8d |  |  | Sheet Metal / HVAC [49 h] |
| A07130 |  | Close-out & QA exhaust riser 5D — Cable Trunk & IC Space | 0d | 2026-09-28 | 2026-10-05 | A07120 |  |  | Sheet Metal / HVAC [128 h] |
| A06340 |  | Close-out & QA vent branch 6F (3-164-2-Q) | 0d | 2026-09-30 | 2026-10-02 | A06330 FS+2.4d |  |  | Sheet Metal / HVAC [18 h] |
| A08020 |  | Close-out & QA supply trunk 4C — Cableway Trunk Zone 3 overhead | 0d | 2026-09-30 | 2026-10-09 | A08010 FS+0.8d |  |  | Sheet Metal / HVAC [51 h] |

| ID | WBS | Activity | Duration | Start | Finish | Predecessors | Complete | Remaining | Resources |
| --- | --- | --- | --- | --- | --- | --- | --- | --- | --- |
| A04880 |  | Duct leak test vent branch 2C — Auxiliary Machinery Room No. 4 | 0d | 2026-10-01 | 2026-10-07 | A04870 FS+0.8d |  |  | Sheet Metal / HVAC [30 h]; Rigging & Weight Handling [8 h] |
| A06450 |  | Close-out & QA vent branch 3B — Pump Room No. 2 | 0d | 2026-10-04 | 2026-10-18 | A06440 |  |  | Sheet Metal / HVAC [76 h] |
| A04890 |  | Close-out & QA vent branch 2C — Auxiliary Machinery Room No. 4 | 0d | 2026-10-08 | 2026-10-22 | A04880 |  |  | Sheet Metal / HVAC [475 h] |
|  | 560 | **560 Aux Machinery** |  | 2026-07-27 | 2026-10-07 |  |  |  |  |
| A06800 |  | Open & inspect compressor 7D — Pump Room No. 2 | 0d | 2026-07-27 A | 2026-08-07 A |  | 100% |  | Mechanical [328 h] |
| A06750 |  | Open & inspect pump set 2C (4-160-2-Q) | 0d | 2026-07-28 A | 2026-08-01 A |  | 100% |  | Mechanical [44 h] |
| A06760 |  | Remove pump set 2C for shop (4-160-2-Q) | 0d | 2026-08-03 A | 2026-08-07 A | A06750 | 100% |  | Mechanical [88 h] |
| A07190 |  | Open & inspect compressor 7F — Cable Trunk & IC Space | 0d | 2026-08-05 A | 2026-08-13 |  | 57% | 0d | Mechanical [63 h] |
| A09390 |  | Open & inspect motor group 4D — Scullery | 0d | 2026-08-06 A | 2026-08-10 |  | 84% | 0d | Mechanical [31 h] |
| A06770 |  | Shop overhaul — pump set 2C (4-160-2-Q) | 0d | 2026-08-07 A | 2026-08-19 | A06760 FS+0.8d | 24% | 0d | Mechanical [128 h]; Rigging & Weight Handling [32 h] |
| A06810 |  | Remove compressor 7D for shop — Pump Room No. 2 | 0d | 2026-08-10 A | 2026-08-20 | A06800 |  | 0d | Mechanical [240 h] |
| A05080 |  | Open & inspect motor group 6B — Auxiliary Machinery Room No. 4 | 0d | 2026-08-10 | 2026-08-19 |  |  |  | Mechanical [166 h] |
| A04390 |  | Open & inspect compressor 3A — Uptake Space No. 3 | 0d | 2026-08-11 | 2026-08-24 |  |  |  | Mechanical [81 h] |
| A09400 |  | Remove motor group 4D for shop — Scullery | 0d | 2026-08-11 | 2026-08-19 | A09390 |  |  | Mechanical [64 h] |
| A04790 |  | Open & inspect motor group 2B (3-156-2-Q) | 0d | 2026-08-15 | 2026-08-24 |  |  |  | Mechanical [65 h] |
| A07200 |  | Remove compressor 7F for shop — Cable Trunk & IC Space | 0d | 2026-08-15 | 2026-08-26 | A07190 |  |  | Mechanical [145 h] |
| A09850 |  | Open & inspect motor group 7A — Mess Decks | 0d | 2026-08-16 | 2026-08-24 |  |  |  | Mechanical [64 h] |
| A08950 |  | Open & inspect pump set 1C (1-160-0-Q) | 0d | 2026-08-17 | 2026-08-24 |  |  |  | Mechanical [108 h] |
| A04530 |  | Open & inspect motor group 9D — Uptake Space No. 3 | 0d | 2026-08-18 | 2026-08-29 |  |  |  | Mechanical [72 h] |
| A05090 |  | Remove motor group 6B for shop — Auxiliary Machinery Room No. 4 | 0d | 2026-08-19 | 2026-08-25 | A05080 FS+0.8d |  |  | Mechanical [89 h] |
| A06780 |  | Reinstall & align pump set 2C (4-160-2-Q) | 0d | 2026-08-19 | 2026-08-22 | A06770 FS+2.4d |  |  | Mechanical [15 h] |
| A08560 |  | Open & inspect pump set 6B — Hangar Bay 3 | 0d | 2026-08-20 | 2026-09-03 |  |  |  | Mechanical [196 h] |
| A09410 |  | Shop overhaul — motor group 4D — Scullery | 0d | 2026-08-21 | 2026-08-27 | A09400 |  |  | Mechanical [36 h] |
| A06820 |  | Shop overhaul — compressor 7D — Pump Room No. 2 | 0d | 2026-08-22 | 2026-09-05 | A06810 FS+2.4d |  |  | Mechanical [406 h] |
| A06790 |  | Operational test pump set 2C (4-160-2-Q) | 0d | 2026-08-23 | 2026-08-29 | A06780 |  |  | Mechanical [34 h] |
| A09860 |  | Remove motor group 7A for shop — Mess Decks | 0d | 2026-08-24 | 2026-08-31 | A09850 |  |  | Mechanical [86 h] |
| A08960 |  | Remove pump set 1C for shop (1-160-0-Q) | 0d | 2026-08-24 | 2026-08-28 | A08950 FS+0.8d |  |  | Mechanical [89 h] |
| A04400 |  | Remove compressor 3A for shop — Uptake Space No. 3 | 0d | 2026-08-24 | 2026-09-05 | A04390 |  |  | Mechanical [133 h] |
| A04800 |  | Remove motor group 2B for shop (3-156-2-Q) | 0d | 2026-08-27 | 2026-09-07 | A04790 FS+0.8d |  |  | Mechanical [69 h] |
| A05100 |  | Shop overhaul — motor group 6B — Auxiliary Machinery Room No. 4 | 0d | 2026-08-27 | 2026-09-05 | A05090 FS+0.8d |  |  | Mechanical [235 h] |
| A07210 |  | Shop overhaul — compressor 7F — Cable Trunk & IC Space | 0d | 2026-08-27 | 2026-09-10 | A07200 FS+0.8d |  |  | Mechanical [313 h] |
| A09420 |  | Reinstall & align motor group 4D — Scullery | 0d | 2026-08-27 | 2026-09-08 | A09410 |  |  | Mechanical [72 h]; Rigging & Weight Handling [18 h] |
| A08970 |  | Shop overhaul — pump set 1C (1-160-0-Q) | 0d | 2026-08-30 | 2026-09-07 | A08960 |  |  | Mechanical [319 h] |
| A04540 |  | Remove motor group 9D for shop — Uptake Space No. 3 | 0d | 2026-08-30 | 2026-09-02 | A04530 FS+2.4d |  |  | Mechanical [23 h] |
| A09870 |  | Shop overhaul — motor group 7A — Mess Decks | 0d | 2026-09-01 | 2026-09-10 | A09860 FS+0.8d |  |  | Mechanical [48 h] |
| A08570 |  | Remove pump set 6B for shop — Hangar Bay 3 | 0d | 2026-09-04 | 2026-09-09 | A08560 |  |  | Mechanical [87 h] |
| A04550 |  | Shop overhaul — motor group 9D — Uptake Space No. 3 | 0d | 2026-09-05 | 2026-09-08 | A04540 FS+2.4d |  |  | Mechanical [19 h] |
| A06830 |  | Reinstall & align compressor 7D — Pump Room No. 2 | 0d | 2026-09-07 | 2026-09-10 | A06820 |  |  | Mechanical [43 h] |
| A04410 |  | Shop overhaul — compressor 3A — Uptake Space No. 3 | 0d | 2026-09-07 | 2026-09-16 | A04400 FS+2.4d |  |  | Mechanical [220 h] |
| A05110 |  | Reinstall & align motor group 6B — Auxiliary Machinery Room No. 4 | 0d | 2026-09-08 | 2026-09-14 | A05100 |  |  | Mechanical [167 h] |
| A08980 |  | Reinstall & align pump set 1C (1-160-0-Q) | 0d | 2026-09-08 | 2026-09-15 | A08970 |  |  | Mechanical [81 h] |
| A08580 |  | Shop overhaul — pump set 6B — Hangar Bay 3 | 0d | 2026-09-10 | 2026-09-24 | A08570 FS+0.8d |  |  | Mechanical [97 h] |
| A04810 |  | Shop overhaul — motor group 2B (3-156-2-Q) | 0d | 2026-09-10 | 2026-09-14 | A04800 |  |  | Mechanical [33 h] |
| A09430 |  | Operational test motor group 4D — Scullery | 0d | 2026-09-11 | 2026-09-20 | A09420 |  |  | Mechanical [282 h] |
| A04560 |  | Reinstall & align motor group 9D — Uptake Space No. 3 | 0d | 2026-09-11 | 2026-09-20 | A04550 |  |  | Mechanical [63 h]; Rigging & Weight Handling [16 h] |
| A07220 |  | Reinstall & align compressor 7F — Cable Trunk & IC Space | 0d | 2026-09-12 | 2026-09-17 | A07210 FS+0.8d |  |  | Mechanical [69 h] |
| A09880 |  | Reinstall & align motor group 7A — Mess Decks | 0d | 2026-09-12 | 2026-09-18 | A09870 |  |  | Mechanical [74 h] |
| A06840 |  | Operational test compressor 7D — Pump Room No. 2 | 0d | 2026-09-12 | 2026-09-15 | A06830 |  |  | Mechanical [11 h]; Rigging & Weight Handling [3 h] |
| A05120 |  | Operational test motor group 6B — Auxiliary Machinery Room No. 4 | 0d | 2026-09-15 | 2026-09-27 | A05110 |  |  | Mechanical [96 h] |
| A04820 |  | Reinstall & align motor group 2B (3-156-2-Q) | 0d | 2026-09-15 | 2026-09-20 | A04810 FS+0.8d |  |  | Mechanical [70 h] |
| A07230 |  | Operational test compressor 7F — Cable Trunk & IC Space | 0d | 2026-09-17 | 2026-09-29 | A07220 |  |  | Mechanical [93 h] |
| A08990 |  | Operational test pump set 1C (1-160-0-Q) | 0d | 2026-09-17 | 2026-09-27 | A08980 |  |  | Mechanical [78 h] |
| A04420 |  | Reinstall & align compressor 3A — Uptake Space No. 3 | 0d | 2026-09-18 | 2026-09-25 | A04410 FS-4.8d |  |  | Mechanical [57 h] |
| A09890 |  | Operational test motor group 7A — Mess Decks | 0d | 2026-09-20 | 2026-10-03 | A09880 |  |  | Mechanical [234 h] |
| A04830 |  | Operational test motor group 2B (3-156-2-Q) | 0d | 2026-09-20 | 2026-10-04 | A04820 FS+2.4d |  |  | Mechanical [81 h] |
| A04570 |  | Operational test motor group 9D — Uptake Space No. 3 | 0d | 2026-09-21 | 2026-09-28 | A04560 |  |  | Mechanical [75 h] |
| A08590 |  | Reinstall & align pump set 6B — Hangar Bay 3 | 0d | 2026-09-24 | 2026-09-27 | A08580 |  |  | Mechanical [23 h] |
| A04430 |  | Operational test compressor 3A — Uptake Space No. 3 | 0d | 2026-09-27 | 2026-10-01 | A04420 |  |  | Mechanical [27 h] |
| A08600 |  | Operational test pump set 6B — Hangar Bay 3 | 0d | 2026-09-30 | 2026-10-07 | A08590 |  |  | Mechanical [66 h] |

| ID | WBS | Activity | Duration | Start | Finish | Predecessors | Complete | Remaining | Resources |
| --- | --- | --- | --- | --- | --- | --- | --- | --- | --- |
|  | 631 | **631 Preservation** |  | 2026-07-29 | 2026-10-09 |  |  |  |  |
| A05350 |  | Surface survey — deck coating 4E — Passage & Trunk | 0d | 2026-07-29 A | 2026-08-12 |  | 88% | 0d | Preservation / Blast & Coat [228 h] |
| A09140 |  | Surface survey — overhead coating 7A — Hangar Bay 3 | 0d | 2026-07-30 A | 2026-08-02 A |  | 100% |  | Preservation / Blast & Coat [67 h] |
| A07030 |  | Surface survey — overhead coating 4C — Cable Trunk & IC Space | 0d | 2026-07-30 A | 2026-08-03 A |  | 100% |  | Preservation / Blast & Coat [22 h] |
| A07740 |  | Surface survey — bilge preservation 2D — Cableway Trunk Zone 3 overhead | 0d | 2026-08-01 A | 2026-08-11 |  | 85% | 0d | Preservation / Blast & Coat [67 h] |
| A09150 |  | Blast / mechanical prep overhead coating 7A — Hangar Bay 3 | 0d | 2026-08-04 A | 2026-08-17 | A09140 | 26% | 0d | Preservation / Blast & Coat [305 h] |
| A07040 |  | Blast / mechanical prep overhead coating 4C — Cable Trunk & IC Space | 0d | 2026-08-05 A | 2026-08-16 | A07030 | 44% | 0d | Preservation / Blast & Coat [313 h] |
| A06700 |  | Surface survey — overhead coating 8B — Pump Room No. 2 | 0d | 2026-08-07 A | 2026-08-17 |  | 24% | 0d | Preservation / Blast & Coat [263 h] |
| A08850 |  | Surface survey — overhead coating 6A — Hangar Bay 3 | 0d | 2026-08-08 A | 2026-08-14 |  | 17% | 0d | Preservation / Blast & Coat [139 h] |
| A06570 |  | Surface survey — overhead coating 4E — Pump Room No. 2 | 0d | 2026-08-09 A | 2026-08-11 |  | 23% | 0d | Preservation / Blast & Coat [13 h] |
| A05880 |  | Surface survey — overhead coating 6C — Ship's Store | 0d | 2026-08-09 A | 2026-08-11 |  | 18% | 0d | Preservation / Blast & Coat [57 h] |
| A06140 |  | Surface survey — deck coating 1C — Ship's Store | 0d | 2026-08-10 | 2026-08-16 |  |  |  | Preservation / Blast & Coat [59 h] |
| A05030 |  | Surface survey — overhead coating 3A — Auxiliary Machinery Room No. 4 | 0d | 2026-08-10 | 2026-08-18 |  |  |  | Preservation / Blast & Coat [60 h] |
| A07650 |  | Surface survey — overhead coating 2B — Cableway Trunk Zone 3 overhead | 0d | 2026-08-10 | 2026-08-24 |  |  |  | Preservation / Blast & Coat [441 h] |
| A07750 |  | Blast / mechanical prep bilge preservation 2D — Cableway Trunk Zone 3 overhead | 0d | 2026-08-12 | 2026-08-20 | A07740 FS+2.4d |  |  | Preservation / Blast & Coat [59 h] |
| A05890 |  | Blast / mechanical prep overhead coating 6C — Ship's Store | 0d | 2026-08-13 | 2026-08-18 | A05880 |  |  | Preservation / Blast & Coat [201 h] |
| A06580 |  | Blast / mechanical prep overhead coating 4E — Pump Room No. 2 | 0d | 2026-08-13 | 2026-08-23 | A06570 |  |  | Preservation / Blast & Coat [129 h] |
| A05360 |  | Blast / mechanical prep deck coating 4E — Passage & Trunk | 0d | 2026-08-14 | 2026-08-26 | A05350 |  |  | Preservation / Blast & Coat [460 h] |
| A04190 |  | Surface survey — overhead coating 4C — Uptake Space No. 3 | 0d | 2026-08-14 | 2026-08-27 |  |  |  | Preservation / Blast & Coat [300 h] |
| A08860 |  | Blast / mechanical prep overhead coating 6A — Hangar Bay 3 | 0d | 2026-08-15 | 2026-08-29 | A08850 FS+2.4d |  |  | Preservation / Blast & Coat [388 h] |
| A07240 |  | Surface survey — deck coating 2A — Cable Trunk & IC Space | 0d | 2026-08-16 | 2026-08-29 |  |  |  | Preservation / Blast & Coat [121 h] |
| A06710 |  | Blast / mechanical prep overhead coating 8B — Pump Room No. 2 | 0d | 2026-08-17 | 2026-08-28 | A06700 FS+0.8d |  |  | Preservation / Blast & Coat [181 h] |
| A06150 |  | Blast / mechanical prep deck coating 1C — Ship's Store | 0d | 2026-08-17 | 2026-08-26 | A06140 SS+2.4d |  |  | Preservation / Blast & Coat [67 h] |
| A07050 |  | Prime coat overhead coating 4C — Cable Trunk & IC Space | 0d | 2026-08-18 | 2026-08-26 | A07040 FS+0.8d |  |  | Preservation / Blast & Coat [132 h] |
| A09440 |  | Surface survey — deck coating 8E — Scullery | 0d | 2026-08-18 | 2026-08-20 |  |  |  | Preservation / Blast & Coat [39 h] |
| A05040 |  | Blast / mechanical prep overhead coating 3A — Auxiliary Machinery Room No. 4 | 0d | 2026-08-19 | 2026-08-31 | A05030 |  |  | Preservation / Blast & Coat [148 h] |
| A09160 |  | Prime coat overhead coating 7A — Hangar Bay 3 | 0d | 2026-08-19 | 2026-08-22 | A09150 |  |  | Preservation / Blast & Coat [24 h] |
| A05900 |  | Prime coat overhead coating 6C — Ship's Store | 0d | 2026-08-20 | 2026-08-24 | A05890 |  |  | Preservation / Blast & Coat [46 h] |
| A07370 |  | Surface survey — overhead coating 3D — Cable Trunk & IC Space | 0d | 2026-08-21 | 2026-08-24 |  |  |  | Preservation / Blast & Coat [64 h] |
| A07760 |  | Prime coat bilge preservation 2D — Cableway Trunk Zone 3 overhead | 0d | 2026-08-21 | 2026-08-29 | A07750 |  |  | Preservation / Blast & Coat [292 h] |
| A09450 |  | Blast / mechanical prep deck coating 8E — Scullery | 0d | 2026-08-22 | 2026-09-02 | A09440 |  |  | Preservation / Blast & Coat [362 h] |
| A09170 |  | Top coat overhead coating 7A — Hangar Bay 3 | 0d | 2026-08-24 | 2026-08-27 | A09160 FS+0.8d |  |  | Preservation / Blast & Coat [39 h] |
| A06590 |  | Prime coat overhead coating 4E — Pump Room No. 2 | 0d | 2026-08-24 | 2026-08-27 | A06580 |  |  | Preservation / Blast & Coat [47 h]; Rigging & Weight Handling [12 h] |
| A05910 |  | Top coat overhead coating 6C — Ship's Store | 0d | 2026-08-25 | 2026-09-08 | A05900 |  |  | Preservation / Blast & Coat [77 h] |
| A07660 |  | Blast / mechanical prep overhead coating 2B — Cableway Trunk Zone 3 overhead | 0d | 2026-08-25 | 2026-09-08 | A07650 |  |  | Preservation / Blast & Coat [244 h]; Rigging & Weight Handling [61 h] |
| A06160 |  | Prime coat deck coating 1C — Ship's Store | 0d | 2026-08-26 | 2026-09-02 | A06150 |  |  | Preservation / Blast & Coat [78 h] |
| A07380 |  | Blast / mechanical prep overhead coating 3D — Cable Trunk & IC Space | 0d | 2026-08-26 | 2026-09-09 | A07370 |  |  | Preservation / Blast & Coat [386 h] |
| A04200 |  | Blast / mechanical prep overhead coating 4C — Uptake Space No. 3 | 0d | 2026-08-27 | 2026-09-07 | A04190 FS+0.8d |  |  | Preservation / Blast & Coat [98 h] |
| A09180 |  | Cure & inspect overhead coating 7A — Hangar Bay 3 | 0d | 2026-08-28 | 2026-09-05 | A09170 |  |  | Preservation / Blast & Coat [114 h] |
| A07060 |  | Top coat overhead coating 4C — Cable Trunk & IC Space | 0d | 2026-08-28 | 2026-09-09 | A07050 |  |  | Preservation / Blast & Coat [199 h] |
| A05370 |  | Prime coat deck coating 4E — Passage & Trunk | 0d | 2026-08-29 | 2026-09-01 | A05360 |  |  | Preservation / Blast & Coat [51 h] |
| A06600 |  | Top coat overhead coating 4E — Pump Room No. 2 | 0d | 2026-08-29 | 2026-09-02 | A06590 |  |  | Preservation / Blast & Coat [57 h] |
| A07770 |  | Top coat bilge preservation 2D — Cableway Trunk Zone 3 overhead | 0d | 2026-08-30 | 2026-09-05 | A07760 FS+0.8d |  |  | Preservation / Blast & Coat [130 h] |
| A07250 |  | Blast / mechanical prep deck coating 2A — Cable Trunk & IC Space | 0d | 2026-08-31 | 2026-09-02 | A07240 FS+2.4d |  |  | Preservation / Blast & Coat [36 h]; Rigging & Weight Handling [9 h] |
| A06720 |  | Prime coat overhead coating 8B — Pump Room No. 2 | 0d | 2026-08-31 | 2026-09-14 | A06710 |  |  | Preservation / Blast & Coat [93 h] |
| A08870 |  | Prime coat overhead coating 6A — Hangar Bay 3 | 0d | 2026-08-31 | 2026-09-10 | A08860 |  |  | Preservation / Blast & Coat [317 h] |
| A06610 |  | Cure & inspect overhead coating 4E — Pump Room No. 2 | 0d | 2026-09-02 | 2026-09-10 | A06600 |  |  | Preservation / Blast & Coat [134 h] |
| A05050 |  | Prime coat overhead coating 3A — Auxiliary Machinery Room No. 4 | 0d | 2026-09-02 | 2026-09-09 | A05040 |  |  | Preservation / Blast & Coat [112 h] |
| A07260 |  | Prime coat deck coating 2A — Cable Trunk & IC Space | 0d | 2026-09-03 | 2026-09-10 | A07250 |  |  | Preservation / Blast & Coat [253 h] |
| A06170 |  | Top coat deck coating 1C — Ship's Store | 0d | 2026-09-03 | 2026-09-06 | A06160 FS+0.8d |  |  | Preservation / Blast & Coat [25 h] |
| A09460 |  | Prime coat deck coating 8E — Scullery | 0d | 2026-09-03 | 2026-09-08 | A09450 FS+2.4d |  |  | Preservation / Blast & Coat [98 h] |
| A05380 |  | Top coat deck coating 4E — Passage & Trunk | 0d | 2026-09-03 | 2026-09-17 | A05370 SS+4.8d |  |  | Preservation / Blast & Coat [92 h]; Rigging & Weight Handling [23 h] |
| A07780 |  | Cure & inspect bilge preservation 2D — Cableway Trunk Zone 3 overhead | 0d | 2026-09-07 | 2026-09-10 | A07770 |  |  | Preservation / Blast & Coat [23 h] |
| A06180 |  | Cure & inspect deck coating 1C — Ship's Store | 0d | 2026-09-09 | 2026-09-15 | A06170 FS+0.8d |  |  | Preservation / Blast & Coat [76 h] |
| A04210 |  | Prime coat overhead coating 4C — Uptake Space No. 3 | 0d | 2026-09-09 | 2026-09-14 | A04200 FS+0.8d |  |  | Preservation / Blast & Coat [94 h] |
| A05920 |  | Cure & inspect overhead coating 6C — Ship's Store | 0d | 2026-09-09 | 2026-09-15 | A05910 FS+0.8d |  |  | Preservation / Blast & Coat [64 h] |
| A05060 |  | Top coat overhead coating 3A — Auxiliary Machinery Room No. 4 | 0d | 2026-09-09 | 2026-09-20 | A05050 FS+0.8d |  |  | Preservation / Blast & Coat [90 h] |
| A09470 |  | Top coat deck coating 8E — Scullery | 0d | 2026-09-10 | 2026-09-16 | A09460 SS+7.2d |  |  | Preservation / Blast & Coat [86 h] |
| A07390 |  | Prime coat overhead coating 3D — Cable Trunk & IC Space | 0d | 2026-09-10 | 2026-09-18 | A07380 FS+2.4d |  |  | Preservation / Blast & Coat [181 h] |
| A07670 |  | Prime coat overhead coating 2B — Cableway Trunk Zone 3 overhead | 0d | 2026-09-10 | 2026-09-13 | A07660 |  |  | Preservation / Blast & Coat [65 h] |
| A07070 |  | Cure & inspect overhead coating 4C — Cable Trunk & IC Space | 0d | 2026-09-10 | 2026-09-19 | A07060 |  |  | Preservation / Blast & Coat [167 h] |
| A07270 |  | Top coat deck coating 2A — Cable Trunk & IC Space | 0d | 2026-09-11 | 2026-09-19 | A07260 |  |  | Preservation / Blast & Coat [62 h] |
| A08880 |  | Top coat overhead coating 6A — Hangar Bay 3 | 0d | 2026-09-13 | 2026-09-15 | A08870 FS+0.8d |  |  | Preservation / Blast & Coat [56 h] |
| A04220 |  | Top coat overhead coating 4C — Uptake Space No. 3 | 0d | 2026-09-15 | 2026-09-21 | A04210 FS+0.8d |  |  | Preservation / Blast & Coat [48 h] |
| A06730 |  | Top coat overhead coating 8B — Pump Room No. 2 | 0d | 2026-09-16 | 2026-09-27 | A06720 |  |  | Preservation / Blast & Coat [161 h] |
| A07680 |  | Top coat overhead coating 2B — Cableway Trunk Zone 3 overhead | 0d | 2026-09-16 | 2026-09-24 | A07670 FS+0.8d |  |  | Preservation / Blast & Coat [129 h] |
| A08890 |  | Cure & inspect overhead coating 6A — Hangar Bay 3 | 0d | 2026-09-16 | 2026-09-29 | A08880 |  |  | Preservation / Blast & Coat [228 h] |
| A09480 |  | Cure & inspect deck coating 8E — Scullery | 0d | 2026-09-16 | 2026-09-26 | A09470 FS+0.8d |  |  | Preservation / Blast & Coat [82 h] |
| A05390 |  | Cure & inspect deck coating 4E — Passage & Trunk | 0d | 2026-09-17 | 2026-09-24 | A05380 SS+4.8d |  |  | Preservation / Blast & Coat [134 h] |
| A07400 |  | Top coat overhead coating 3D — Cable Trunk & IC Space | 0d | 2026-09-18 | 2026-09-26 | A07390 |  |  | Preservation / Blast & Coat [136 h] |

| ID | WBS | Activity | Duration | Start | Finish | Predecessors | Complete | Remaining | Resources |
| --- | --- | --- | --- | --- | --- | --- | --- | --- | --- |
| A07280 |  | Cure & inspect deck coating 2A — Cable Trunk & IC Space | 0d | 2026-09-21 | 2026-09-23 | A07270 FS+2.4d |  |  | Preservation / Blast & Coat [61 h] |
| A05070 |  | Cure & inspect overhead coating 3A — Auxiliary Machinery Room No. 4 | 0d | 2026-09-21 | 2026-10-03 | A05060 |  |  | Preservation / Blast & Coat [70 h]; Rigging & Weight Handling [18 h] |
| A04230 |  | Cure & inspect overhead coating 4C — Uptake Space No. 3 | 0d | 2026-09-23 | 2026-09-29 | A04220 |  |  | Preservation / Blast & Coat [96 h] |
| A07690 |  | Cure & inspect overhead coating 2B — Cableway Trunk Zone 3 overhead | 0d | 2026-09-26 | 2026-10-02 | A07680 FS+0.8d |  |  | Preservation / Blast & Coat [103 h] |
| A07410 |  | Cure & inspect overhead coating 3D — Cable Trunk & IC Space | 0d | 2026-09-27 | 2026-10-09 | A07400 |  |  | Preservation / Blast & Coat [190 h] |
| A06740 |  | Cure & inspect overhead coating 8B — Pump Room No. 2 | 0d | 2026-09-28 | 2026-10-09 | A06730 |  |  | Preservation / Blast & Coat [235 h] |
|  | SVC | **Zone Services & Access** |  | 2026-07-29 | 2026-10-30 |  |  |  |  |
| A14800 |  | Temp ventilation trunk 3 — Aft Machinery & Mess | 0d | 2026-07-29 A | 2026-08-01 A |  | 100% |  | Sheet Metal / HVAC [25 h] |
| A14840 |  | Reposition temp vent 5 — Aft Machinery & Mess | 0d | 2026-08-01 A | 2026-08-08 A |  | 100% |  | Sheet Metal / HVAC [62 h] |
| A14820 |  | Temp ventilation trunk 4 — Aft Machinery & Mess | 0d | 2026-08-03 A | 2026-08-13 |  | 57% | 0d | Sheet Metal / HVAC [75 h] |
| A14920 |  | Clear lay-down 9 — Aft Machinery & Mess | 0d | 2026-08-07 A | 2026-08-12 |  | 54% | 0d | Rigging & Weight Handling [101 h] |
| A14780 |  | Reposition temp vent 2 — Aft Machinery & Mess | 0d | 2026-08-10 A | 2026-08-17 |  | 2% | 0d | Sheet Metal / HVAC [47 h] |
| A14900 |  | Material staging & lay-down 8 — Aft Machinery & Mess | 0d | 2026-08-10 | 2026-08-17 |  |  |  | Rigging & Weight Handling [104 h] |
| A14880 |  | Reposition temp vent 7 — Aft Machinery & Mess | 0d | 2026-08-11 | 2026-08-15 |  |  |  | Sheet Metal / HVAC [59 h] |
| A14860 |  | Strike scaffolding — Aft Machinery & Mess band 6 | 0d | 2026-08-14 | 2026-08-22 |  |  |  | Rigging & Weight Handling [105 h] |
| A14810 |  | Reposition temp vent 3 — Aft Machinery & Mess | 0d | 2026-08-16 | 2026-08-26 | A14800 |  |  | Sheet Metal / HVAC [237 h] |
| A14750 |  | Strike scaffolding — Aft Machinery & Mess band 1 | 0d | 2026-08-20 | 2026-08-26 |  |  |  | Rigging & Weight Handling [205 h] |
| A14850 |  | Temp ventilation trunk 5 — Aft Machinery & Mess | 0d | 2026-08-27 | 2026-08-31 | A14840 |  |  | Sheet Metal / HVAC [61 h] |
| A14930 |  | Material staging & lay-down 9 — Aft Machinery & Mess | 0d | 2026-08-28 | 2026-08-31 | A14920 |  |  | Rigging & Weight Handling [103 h] |
| A14830 |  | Reposition temp vent 4 — Aft Machinery & Mess | 0d | 2026-09-10 | 2026-09-19 | A14820 |  |  | Sheet Metal / HVAC [192 h] |
| A14890 |  | Temp ventilation trunk 7 — Aft Machinery & Mess | 0d | 2026-09-11 | 2026-09-15 | A14880 |  |  | Sheet Metal / HVAC [153 h] |
| A14870 |  | Stage scaffolding — Aft Machinery & Mess band 6 | 0d | 2026-09-14 | 2026-09-20 | A14860 |  |  | Rigging & Weight Handling [86 h] |
| A14790 |  | Temp ventilation trunk 2 — Aft Machinery & Mess | 0d | 2026-09-14 | 2026-09-23 | A14780 |  |  | Sheet Metal / HVAC [73 h] |
| A14910 |  | Clear lay-down 8 — Aft Machinery & Mess | 0d | 2026-09-17 | 2026-09-23 | A14900 |  |  | Rigging & Weight Handling [43 h] |
| A14760 |  | Stage scaffolding — Aft Machinery & Mess band 1 | 0d | 2026-10-03 | 2026-10-06 | A14750 |  |  | Rigging & Weight Handling [23 h] |
| A14770 |  | Rig access platforms — Aft Machinery & Mess band 1 | 0d | 2026-10-25 | 2026-10-30 | A14760 |  |  | Rigging & Weight Handling [29 h] |

| ID | WBS | Activity | Duration | Start | Finish | Predecessors | Complete | Remaining | Resources |
| --- | --- | --- | --- | --- | --- | --- | --- | --- | --- |
|  | Z7 | **Zone 7 — Aft Living & Plants** |  | 2026-07-28 | 2026-10-21 |  |  |  |  |
|  | 130 | **130 Hull Structure** |  | 2026-07-31 | 2026-10-06 |  |  |  |  |
| A10690 |  | NDT survey — deck insert 1C (2-176-0-Q) | 0d | 2026-07-31 A | 2026-08-09 A |  | 100% |  | Structural Welding [74 h] |
| A10920 |  | NDT survey — deck insert 5B — Wardroom Terminal Space | 0d | 2026-08-01 A | 2026-08-07 A |  | 100% |  | Structural Welding [153 h] |
| A10500 |  | NDT survey — structural bay 5E — Wardroom Terminal Space | 0d | 2026-08-03 A | 2026-08-09 A |  | 100% |  | Structural Welding [93 h] |
| A10640 |  | NDT survey — deck insert 5B — Wardroom Terminal Space | 0d | 2026-08-03 A | 2026-08-17 |  | 28% | 0d | Structural Welding [168 h] |
| A00960 |  | NDT survey — foundation group 4B — CPO Living Space | 0d | 2026-08-04 A | 2026-08-09 A |  | 100% |  | Structural Welding [135 h] |
| A08140 |  | NDT survey — foundation group 9C — AC Plant No. 2 Machinery Room | 0d | 2026-08-05 A | 2026-08-10 |  | 96% | 0d | Structural Welding [103 h] |
| A10930 |  | Crop out deck insert 5B — Wardroom Terminal Space | 0d | 2026-08-07 A | 2026-08-19 | A10920 | 21% | 0d | Structural Welding [150 h] |
| A13670 |  | NDT survey — structural bay 7F — IC Terminal Room | 0d | 2026-08-08 A | 2026-08-15 |  | 25% | 0d | Structural Welding [216 h] |
| A00970 |  | Crop out foundation group 4B — CPO Living Space | 0d | 2026-08-09 A | 2026-08-16 | A00960 | 8% | 0d | Structural Welding [89 h] |
| A13720 |  | NDT survey — deck insert 4A — IC Terminal Room | 0d | 2026-08-11 | 2026-08-18 |  |  |  | Structural Welding [57 h] |
| A10510 |  | Crop out structural bay 5E — Wardroom Terminal Space | 0d | 2026-08-11 | 2026-08-20 | A10500 |  |  | Structural Welding [56 h] |
| A10700 |  | Crop out deck insert 1C (2-176-0-Q) | 0d | 2026-08-11 | 2026-08-19 | A10690 |  |  | Structural Welding [258 h] |
| A08150 |  | Crop out foundation group 9C — AC Plant No. 2 Machinery Room | 0d | 2026-08-12 | 2026-08-16 | A08140 FS+2.4d |  |  | Structural Welding [25 h] |
| A01070 |  | NDT survey — foundation group 6D — CPO Living Space | 0d | 2026-08-12 | 2026-08-23 |  |  |  | Structural Welding [68 h]; Rigging & Weight Handling [18 h] |
| A13620 |  | NDT survey — structural bay 6E — IC Terminal Room | 0d | 2026-08-13 | 2026-08-24 |  |  |  | Structural Welding [218 h] |
| A13680 |  | Crop out structural bay 7F — IC Terminal Room | 0d | 2026-08-15 | 2026-08-21 | A13670 |  |  | Structural Welding [41 h] |
| A10650 |  | Crop out deck insert 5B — Wardroom Terminal Space | 0d | 2026-08-17 | 2026-08-22 | A10640 |  |  | Structural Welding [107 h] |
| A00980 |  | Fit & weld foundation group 4B — CPO Living Space | 0d | 2026-08-17 | 2026-08-26 | A00970 |  |  | Structural Welding [180 h] |
| A08160 |  | Fit & weld foundation group 9C — AC Plant No. 2 Machinery Room | 0d | 2026-08-18 | 2026-08-22 | A08150 SS+4.8d |  |  | Structural Welding [25 h] |
| A13730 |  | Crop out deck insert 4A — IC Terminal Room | 0d | 2026-08-18 | 2026-08-31 | A13720 |  |  | Structural Welding [73 h] |
| A10940 |  | Fit & weld deck insert 5B — Wardroom Terminal Space | 0d | 2026-08-19 | 2026-08-25 | A10930 |  |  | Structural Welding [75 h] |
| A10360 |  | NDT survey — structural bay 7B — Wardroom Terminal Space | 0d | 2026-08-20 | 2026-08-24 |  |  |  | Structural Welding [135 h] |
| A10710 |  | Fit & weld deck insert 1C (2-176-0-Q) | 0d | 2026-08-21 | 2026-08-24 | A10700 FS+0.8d |  |  | Structural Welding [95 h] |
| A08170 |  | NDT acceptance — foundation group 9C — AC Plant No. 2 Machinery Room | 0d | 2026-08-22 | 2026-08-28 | A08160 FS+0.8d |  |  | Structural Welding [154 h] |
| A10520 |  | Fit & weld structural bay 5E — Wardroom Terminal Space | 0d | 2026-08-23 | 2026-09-03 | A10510 |  |  | Structural Welding [62 h] |
| A13690 |  | Fit & weld structural bay 7F — IC Terminal Room | 0d | 2026-08-23 | 2026-09-01 | A13680 |  |  | Structural Welding [78 h] |
| A10660 |  | Fit & weld deck insert 5B — Wardroom Terminal Space | 0d | 2026-08-23 | 2026-09-02 | A10650 FS+2.4d |  |  | Structural Welding [155 h] |
| A01080 |  | Crop out foundation group 6D — CPO Living Space | 0d | 2026-08-25 | 2026-09-02 | A01070 |  |  | Structural Welding [59 h] |
| A13630 |  | Crop out structural bay 6E — IC Terminal Room | 0d | 2026-08-26 | 2026-09-01 | A13620 FS+2.4d |  |  | Structural Welding [142 h] |
| A10950 |  | NDT acceptance — deck insert 5B — Wardroom Terminal Space | 0d | 2026-08-26 | 2026-08-30 | A10940 |  |  | Structural Welding [60 h] |
| A10370 |  | Crop out structural bay 7B — Wardroom Terminal Space | 0d | 2026-08-26 | 2026-08-31 | A10360 |  |  | Structural Welding [110 h] |
| A10720 |  | NDT acceptance — deck insert 1C (2-176-0-Q) | 0d | 2026-08-27 | 2026-09-04 | A10710 FS-4.8d |  |  | Structural Welding [95 h] |
| A00990 |  | NDT acceptance — foundation group 4B — CPO Living Space | 0d | 2026-08-27 | 2026-09-06 | A00980 FS+0.8d |  |  | Structural Welding [176 h]; Rigging & Weight Handling [44 h] |
| A08180 |  | Grind & dress foundation group 9C — AC Plant No. 2 Machinery Room | 0d | 2026-08-31 | 2026-09-05 | A08170 |  |  | Structural Welding [41 h] |
| A10380 |  | Fit & weld structural bay 7B — Wardroom Terminal Space | 0d | 2026-08-31 | 2026-09-09 | A10370 FS+0.8d |  |  | Structural Welding [56 h] |
| A13740 |  | Fit & weld deck insert 4A — IC Terminal Room | 0d | 2026-09-01 | 2026-09-06 | A13730 FS+0.8d |  |  | Structural Welding [140 h] |
| A10960 |  | Grind & dress deck insert 5B — Wardroom Terminal Space | 0d | 2026-09-01 | 2026-09-12 | A10950 FS+0.8d |  |  | Structural Welding [244 h] |
| A01090 |  | Fit & weld foundation group 6D — CPO Living Space | 0d | 2026-09-04 | 2026-09-13 | A01080 FS+2.4d |  |  | Structural Welding [109 h] |
| A13700 |  | NDT acceptance — structural bay 7F — IC Terminal Room | 0d | 2026-09-04 | 2026-09-14 | A13690 |  |  | Structural Welding [139 h] |
| A10530 |  | NDT acceptance — structural bay 5E — Wardroom Terminal Space | 0d | 2026-09-04 | 2026-09-10 | A10520 FS+0.8d |  |  | Structural Welding [38 h]; Rigging & Weight Handling [10 h] |
| A13640 |  | Fit & weld structural bay 6E — IC Terminal Room | 0d | 2026-09-04 | 2026-09-17 | A13630 FS+2.4d |  |  | Structural Welding [299 h] |
| A10670 |  | NDT acceptance — deck insert 5B — Wardroom Terminal Space | 0d | 2026-09-05 | 2026-09-16 | A10660 FS+2.4d |  |  | Structural Welding [248 h] |
| A10730 |  | Grind & dress deck insert 1C (2-176-0-Q) | 0d | 2026-09-06 | 2026-09-16 | A10720 |  |  | Structural Welding [62 h] |
| A01000 |  | Grind & dress foundation group 4B — CPO Living Space | 0d | 2026-09-06 | 2026-09-12 | A00990 |  |  | Structural Welding [98 h] |
| A13750 |  | NDT acceptance — deck insert 4A — IC Terminal Room | 0d | 2026-09-09 | 2026-09-14 | A13740 |  |  | Structural Welding [93 h] |
| A10390 |  | NDT acceptance — structural bay 7B — Wardroom Terminal Space | 0d | 2026-09-10 | 2026-09-22 | A10380 |  |  | Structural Welding [202 h] |
| A10540 |  | Grind & dress structural bay 5E — Wardroom Terminal Space | 0d | 2026-09-10 | 2026-09-17 | A10530 FS-4.8d |  |  | Structural Welding [57 h] |
| A01100 |  | NDT acceptance — foundation group 6D — CPO Living Space | 0d | 2026-09-13 | 2026-09-16 | A01090 FS+2.4d |  |  | Structural Welding [54 h] |
| A13760 |  | Grind & dress deck insert 4A — IC Terminal Room | 0d | 2026-09-15 | 2026-09-27 | A13750 |  |  | Structural Welding [183 h] |
| A13710 |  | Grind & dress structural bay 7F — IC Terminal Room | 0d | 2026-09-17 | 2026-09-21 | A13700 FS+0.8d |  |  | Structural Welding [27 h] |
| A10680 |  | Grind & dress deck insert 5B — Wardroom Terminal Space | 0d | 2026-09-17 | 2026-09-23 | A10670 FS+0.8d |  |  | Structural Welding [141 h]; Rigging & Weight Handling [36 h] |
| A01110 |  | Grind & dress foundation group 6D — CPO Living Space | 0d | 2026-09-18 | 2026-09-23 | A01100 FS+0.8d |  |  | Structural Welding [54 h]; Rigging & Weight Handling [14 h] |
| A13650 |  | NDT acceptance — structural bay 6E — IC Terminal Room | 0d | 2026-09-19 | 2026-09-24 | A13640 SS+4.8d |  |  | Structural Welding [63 h] |
| A10400 |  | Grind & dress structural bay 7B — Wardroom Terminal Space | 0d | 2026-09-24 | 2026-10-06 | A10390 |  |  | Structural Welding [309 h] |
| A13660 |  | Grind & dress structural bay 6E — IC Terminal Room | 0d | 2026-09-26 | 2026-10-02 | A13650 SS+4.8d |  |  | Structural Welding [109 h] |

| ID | WBS | Activity | Duration | Start | Finish | Predecessors | Complete | Remaining | Resources |
| --- | --- | --- | --- | --- | --- | --- | --- | --- | --- |
|  | 300 | **300 Electrical Distribution** |  | 2026-08-01 | 2026-09-28 |  |  |  |  |
| A08030 |  | Circuit survey — panel group 9A — AC Plant No. 2 Machinery Room | 0d | 2026-08-01 A | 2026-08-14 |  | 60% | 0d | Electrical [95 h] |
| A13570 |  | Circuit survey — lighting circuit 5D — IC Terminal Room | 0d | 2026-08-02 A | 2026-08-05 A |  | 100% |  | Electrical [33 h] |
| A13770 |  | Circuit survey — lighting circuit 3B (3-192-2-E) | 0d | 2026-08-06 A | 2026-08-16 |  | 32% | 0d | Electrical [71 h] |
| A13580 |  | De-energize & tag out lighting circuit 5D — IC Terminal Room | 0d | 2026-08-06 A | 2026-08-18 | A13570 | 29% | 0d | Electrical [196 h] |
| A00810 |  | Circuit survey — panel group 9E — CPO Living Space | 0d | 2026-08-13 | 2026-08-18 |  |  |  | Electrical [82 h] |
| A08040 |  | De-energize & tag out panel group 9A — AC Plant No. 2 Machinery Room | 0d | 2026-08-15 | 2026-08-28 | A08030 |  |  | Electrical [320 h] |
| A13780 |  | De-energize & tag out lighting circuit 3B (3-192-2-E) | 0d | 2026-08-17 | 2026-08-24 | A13770 FS+2.4d |  |  | Electrical [53 h] |
| A13590 |  | Pull & land cable — lighting circuit 5D — IC Terminal Room | 0d | 2026-08-18 | 2026-08-24 | A13580 |  |  | Electrical [50 h] |
| A00820 |  | De-energize & tag out panel group 9E — CPO Living Space | 0d | 2026-08-19 | 2026-08-23 | A00810 FS+0.8d |  |  | Electrical [65 h] |
| A13790 |  | Pull & land cable — lighting circuit 3B (3-192-2-E) | 0d | 2026-08-25 | 2026-09-07 | A13780 FS+0.8d |  |  | Electrical [335 h] |
| A00830 |  | Pull & land cable — panel group 9E — CPO Living Space | 0d | 2026-08-25 | 2026-09-02 | A00820 |  |  | Electrical [214 h] |
| A13600 |  | Megger & continuity test lighting circuit 5D — IC Terminal Room | 0d | 2026-08-25 | 2026-08-28 | A13590 |  |  | Electrical [33 h] |
| A08050 |  | Pull & land cable — panel group 9A — AC Plant No. 2 Machinery Room | 0d | 2026-08-28 | 2026-09-06 | A08040 SS+2.4d |  |  | Electrical [110 h] |
| A13610 |  | Energize & close-out lighting circuit 5D — IC Terminal Room | 0d | 2026-08-29 | 2026-08-31 | A13600 FS+0.8d |  |  | Electrical [13 h]; Rigging & Weight Handling [4 h] |
| A00840 |  | Megger & continuity test panel group 9E — CPO Living Space | 0d | 2026-09-04 | 2026-09-08 | A00830 FS+2.4d |  |  | Electrical [70 h] |
| A08060 |  | Megger & continuity test panel group 9A — AC Plant No. 2 Machinery Room | 0d | 2026-09-06 | 2026-09-17 | A08050 FS+2.4d |  |  | Electrical [166 h] |
| A13800 |  | Megger & continuity test lighting circuit 3B (3-192-2-E) | 0d | 2026-09-07 | 2026-09-17 | A13790 |  |  | Electrical [71 h] |
| A00850 |  | Energize & close-out panel group 9E — CPO Living Space | 0d | 2026-09-10 | 2026-09-19 | A00840 FS+0.8d |  |  | Electrical [81 h] |
| A13810 |  | Energize & close-out lighting circuit 3B (3-192-2-E) | 0d | 2026-09-18 | 2026-09-23 | A13800 |  |  | Electrical [150 h] |
| A08070 |  | Energize & close-out panel group 9A — AC Plant No. 2 Machinery Room | 0d | 2026-09-18 | 2026-09-28 | A08060 |  |  | Electrical [250 h] |
|  | 430 | **430 Interior Communications** |  | 2026-07-30 | 2026-09-18 |  |  |  |  |
| A00630 |  | Circuit trace — announcing group 8A — CPO Living Space | 0d | 2026-07-30 A | 2026-08-09 A |  | 100% |  | Interior Communications [142 h] |
| A00730 |  | Circuit trace — IC circuit 6C — CPO Living Space | 0d | 2026-07-31 A | 2026-08-13 |  | 81% | 0d | Interior Communications [78 h] |
| A10880 |  | Circuit trace — IC circuit 8A — Wardroom Terminal Space | 0d | 2026-07-31 A | 2026-08-03 A |  | 100% |  | Interior Communications [68 h] |
| A10890 |  | Rip out IC circuit 8A — Wardroom Terminal Space | 0d | 2026-08-05 A | 2026-08-08 A | A10880 | 100% |  | Interior Communications [17 h]; Rigging & Weight Handling [5 h] |
| A13030 |  | Circuit trace — announcing group 5B — AC Plant No. 2 | 0d | 2026-08-07 A | 2026-08-17 |  | 29% | 0d | Interior Communications [90 h] |
| A08460 |  | Circuit trace — announcing group 4D — AC Plant No. 2 Machinery Room | 0d | 2026-08-07 A | 2026-08-13 |  | 23% | 0d | Interior Communications [39 h] |
| A00770 |  | Circuit trace — IC circuit 6D — CPO Living Space | 0d | 2026-08-09 A | 2026-08-14 |  | 21% | 0d | Interior Communications [86 h] |
| A10900 |  | Install & terminate IC circuit 8A — Wardroom Terminal Space | 0d | 2026-08-10 A | 2026-08-12 | A10890 FS+0.8d | 10% | 0d | Interior Communications [60 h] |
| A00640 |  | Rip out announcing group 8A — CPO Living Space | 0d | 2026-08-12 | 2026-08-24 | A00630 |  |  | Interior Communications [153 h] |
| A10910 |  | Ring-out & test IC circuit 8A — Wardroom Terminal Space | 0d | 2026-08-12 | 2026-08-25 | A10900 FS+0.8d |  |  | Interior Communications [117 h] |
| A13120 |  | Circuit trace — announcing group 8D — AC Plant No. 2 | 0d | 2026-08-14 | 2026-08-20 |  |  |  | Interior Communications [87 h]; Rigging & Weight Handling [22 h] |
| A00740 |  | Rip out IC circuit 6C — CPO Living Space | 0d | 2026-08-14 | 2026-08-22 | A00730 |  |  | Interior Communications [143 h] |
| A01180 |  | Circuit trace — announcing group 8F — CPO Living Space | 0d | 2026-08-16 | 2026-08-20 |  |  |  | Interior Communications [71 h]; Rigging & Weight Handling [18 h] |
| A08470 |  | Rip out announcing group 4D — AC Plant No. 2 Machinery Room | 0d | 2026-08-16 | 2026-08-18 | A08460 FS+2.4d |  |  | Interior Communications [20 h] |
| A00780 |  | Rip out IC circuit 6D — CPO Living Space | 0d | 2026-08-16 | 2026-08-20 | A00770 FS+2.4d |  |  | Interior Communications [35 h] |
| A10800 |  | Circuit trace — announcing group 6E — Wardroom Terminal Space | 0d | 2026-08-19 | 2026-08-27 |  |  |  | Interior Communications [215 h] |
| A13040 |  | Rip out announcing group 5B — AC Plant No. 2 | 0d | 2026-08-19 | 2026-08-22 | A13030 |  |  | Interior Communications [56 h] |
| A08480 |  | Install & terminate announcing group 4D — AC Plant No. 2 Machinery Room | 0d | 2026-08-19 | 2026-08-24 | A08470 FS+2.4d |  |  | Interior Communications [29 h] |
| A13130 |  | Rip out announcing group 8D — AC Plant No. 2 | 0d | 2026-08-21 | 2026-08-31 | A13120 FS+2.4d |  |  | Interior Communications [151 h] |
| A01190 |  | Rip out announcing group 8F — CPO Living Space | 0d | 2026-08-21 | 2026-08-29 | A01180 |  |  | Interior Communications [183 h] |
| A00790 |  | Install & terminate IC circuit 6D — CPO Living Space | 0d | 2026-08-22 | 2026-08-28 | A00780 FS+2.4d |  |  | Interior Communications [153 h] |
| A00750 |  | Install & terminate IC circuit 6C — CPO Living Space | 0d | 2026-08-23 | 2026-09-06 | A00740 FS+0.8d |  |  | Interior Communications [169 h] |
| A00650 |  | Install & terminate announcing group 8A — CPO Living Space | 0d | 2026-08-24 | 2026-09-06 | A00640 SS+4.8d |  |  | Interior Communications [199 h] |
| A13050 |  | Install & terminate announcing group 5B — AC Plant No. 2 | 0d | 2026-08-25 | 2026-08-30 | A13040 |  |  | Interior Communications [51 h] |
| A08490 |  | Ring-out & test announcing group 4D — AC Plant No. 2 Machinery Room | 0d | 2026-08-27 | 2026-09-08 | A08480 FS+2.4d |  |  | Interior Communications [78 h]; Rigging & Weight Handling [20 h] |
| A10810 |  | Rip out announcing group 6E — Wardroom Terminal Space | 0d | 2026-08-27 | 2026-08-29 | A10800 |  |  | Interior Communications [30 h] |
| A00800 |  | Ring-out & test IC circuit 6D — CPO Living Space | 0d | 2026-08-29 | 2026-09-07 | A00790 |  |  | Interior Communications [52 h] |
| A01200 |  | Install & terminate announcing group 8F — CPO Living Space | 0d | 2026-08-30 | 2026-09-05 | A01190 |  |  | Interior Communications [38 h] |
| A13060 |  | Ring-out & test announcing group 5B — AC Plant No. 2 | 0d | 2026-08-31 | 2026-09-02 | A13050 SS+2.4d |  |  | Interior Communications [19 h] |
| A10820 |  | Install & terminate announcing group 6E — Wardroom Terminal Space | 0d | 2026-08-31 | 2026-09-08 | A10810 FS+2.4d |  |  | Interior Communications [109 h]; Rigging & Weight Handling [28 h] |
| A13140 |  | Install & terminate announcing group 8D — AC Plant No. 2 | 0d | 2026-09-01 | 2026-09-09 | A13130 |  |  | Interior Communications [42 h]; Rigging & Weight Handling [11 h] |
| A01210 |  | Ring-out & test announcing group 8F — CPO Living Space | 0d | 2026-09-06 | 2026-09-10 | A01200 FS-2.4d |  |  | Interior Communications [57 h] |
| A00760 |  | Ring-out & test IC circuit 6C — CPO Living Space | 0d | 2026-09-07 | 2026-09-18 | A00750 |  |  | Interior Communications [83 h] |
| A00660 |  | Ring-out & test announcing group 8A — CPO Living Space | 0d | 2026-09-08 | 2026-09-11 | A00650 |  |  | Interior Communications [40 h] |
| A10830 |  | Ring-out & test announcing group 6E — Wardroom Terminal Space | 0d | 2026-09-09 | 2026-09-18 | A10820 FS+0.8d |  |  | Interior Communications [61 h] |
| A13150 |  | Ring-out & test announcing group 8D — AC Plant No. 2 | 0d | 2026-09-09 | 2026-09-17 | A13140 FS+0.8d |  |  | Interior Communications [90 h] |

| ID | WBS | Activity | Duration | Start | Finish | Predecessors | Complete | Remaining | Resources |
| --- | --- | --- | --- | --- | --- | --- | --- | --- | --- |
|  | 505 | **505 Piping Systems** |  | 2026-07-28 | 2026-10-21 |  |  |  |  |
| A13160 |  | Lay-up & drain pipe spool group 5E — AC Plant No. 2 | 0d | 2026-07-28 A | 2026-08-09 A |  | 100% |  | Pipefitting [71 h] |
| A13220 |  | Lay-up & drain pipe spool group 8F — AC Plant No. 2 | 0d | 2026-07-31 A | 2026-08-11 |  | 84% | 0d | Pipefitting [64 h] |
| A13510 |  | Lay-up & drain valve bank 4C — IC Terminal Room | 0d | 2026-08-03 A | 2026-08-05 A |  | 100% |  | Pipefitting [12 h] |
| A10740 |  | Lay-up & drain drain riser 9D — Wardroom Terminal Space | 0d | 2026-08-04 A | 2026-08-14 |  | 53% | 0d | Pipefitting [324 h] |
| A13340 |  | Lay-up & drain drain riser 8B — AC Plant No. 2 | 0d | 2026-08-06 A | 2026-08-19 |  | 27% | 0d | Pipefitting [328 h] |
| A13520 |  | Cut out valve bank 4C — IC Terminal Room | 0d | 2026-08-07 A | 2026-08-15 | A13510 | 35% | 0d | Pipefitting [182 h] |
| A01120 |  | Lay-up & drain drain riser 6E — CPO Living Space | 0d | 2026-08-07 A | 2026-08-16 |  | 23% | 0d | Pipefitting [158 h] |
| A13280 |  | Lay-up & drain valve bank 2A — AC Plant No. 2 | 0d | 2026-08-10 A | 2026-08-19 |  | 2% | 0d | Pipefitting [209 h] |
| A13170 |  | Cut out pipe spool group 5E — AC Plant No. 2 | 0d | 2026-08-11 | 2026-08-18 | A13160 |  |  | Pipefitting [75 h]; Rigging & Weight Handling [19 h] |
| A13230 |  | Cut out pipe spool group 8F — AC Plant No. 2 | 0d | 2026-08-13 | 2026-08-20 | A13220 FS+2.4d |  |  | Pipefitting [59 h] |
| A10750 |  | Cut out drain riser 9D — Wardroom Terminal Space | 0d | 2026-08-15 | 2026-08-18 | A10740 |  |  | Pipefitting [37 h] |
| A13530 |  | Fab & fit valve bank 4C — IC Terminal Room | 0d | 2026-08-15 | 2026-08-25 | A13520 FS-2.4d |  |  | Pipefitting [248 h]; Rigging & Weight Handling [62 h] |
| A08310 |  | Lay-up & drain pipe spool group 4A — AC Plant No. 2 Machinery Room | 0d | 2026-08-16 | 2026-08-29 |  |  |  | Pipefitting [208 h] |
| A00670 |  | Lay-up & drain pipe spool group 7B — CPO Living Space | 0d | 2026-08-16 | 2026-08-18 |  |  |  | Pipefitting [15 h] |
| A12680 |  | Lay-up & drain drain riser 8A — AC Plant No. 2 | 0d | 2026-08-16 | 2026-08-19 |  |  |  | Pipefitting [40 h] |
| A01130 |  | Cut out drain riser 6E — CPO Living Space | 0d | 2026-08-18 | 2026-08-20 | A01120 FS+2.4d |  |  | Pipefitting [16 h] |
| A13180 |  | Fab & fit pipe spool group 5E — AC Plant No. 2 | 0d | 2026-08-19 | 2026-08-26 | A13170 FS+0.8d |  |  | Pipefitting [127 h] |
| A13350 |  | Cut out drain riser 8B — AC Plant No. 2 | 0d | 2026-08-20 | 2026-08-25 | A13340 FS-4.8d |  |  | Pipefitting [152 h] |
| A13290 |  | Cut out valve bank 2A — AC Plant No. 2 | 0d | 2026-08-20 | 2026-08-23 | A13280 |  |  | Pipefitting [62 h] |
| A12690 |  | Cut out drain riser 8A — AC Plant No. 2 | 0d | 2026-08-20 | 2026-08-26 | A12680 FS+0.8d |  |  | Pipefitting [134 h] |
| A00680 |  | Cut out pipe spool group 7B — CPO Living Space | 0d | 2026-08-21 | 2026-08-29 | A00670 FS+0.8d |  |  | Pipefitting [282 h] |
| A10760 |  | Fab & fit drain riser 9D — Wardroom Terminal Space | 0d | 2026-08-21 | 2026-08-24 | A10750 FS+2.4d |  |  | Pipefitting [17 h]; Rigging & Weight Handling [5 h] |
| A01140 |  | Fab & fit drain riser 6E — CPO Living Space | 0d | 2026-08-21 | 2026-08-24 | A01130 |  |  | Pipefitting [93 h] |
| A13240 |  | Fab & fit pipe spool group 8F — AC Plant No. 2 | 0d | 2026-08-21 | 2026-09-01 | A13230 |  |  | Pipefitting [127 h] |
| A01150 |  | Weld out drain riser 6E — CPO Living Space | 0d | 2026-08-24 | 2026-09-06 | A01140 |  |  | Pipefitting [222 h] |
| A10770 |  | Weld out drain riser 9D — Wardroom Terminal Space | 0d | 2026-08-25 | 2026-09-04 | A10760 FS+0.8d |  |  | Pipefitting [64 h] |
| A13540 |  | Weld out valve bank 4C — IC Terminal Room | 0d | 2026-08-25 | 2026-09-01 | A13530 |  |  | Pipefitting [103 h] |
| A13360 |  | Fab & fit drain riser 8B — AC Plant No. 2 | 0d | 2026-08-25 | 2026-09-01 | A13350 |  |  | Pipefitting [105 h] |
| A13300 |  | Fab & fit valve bank 2A — AC Plant No. 2 | 0d | 2026-08-26 | 2026-09-01 | A13290 |  |  | Pipefitting [92 h] |
| A13190 |  | Weld out pipe spool group 5E — AC Plant No. 2 | 0d | 2026-08-26 | 2026-08-31 | A13180 FS+0.8d |  |  | Pipefitting [41 h] |
| A12700 |  | Fab & fit drain riser 8A — AC Plant No. 2 | 0d | 2026-08-27 | 2026-09-07 | A12690 |  |  | Pipefitting [67 h] |
| A08320 |  | Cut out pipe spool group 4A — AC Plant No. 2 Machinery Room | 0d | 2026-08-29 | 2026-09-10 | A08310 |  |  | Pipefitting [71 h] |
| A00690 |  | Fab & fit pipe spool group 7B — CPO Living Space | 0d | 2026-08-30 | 2026-09-05 | A00680 |  |  | Pipefitting [43 h] |
| A13200 |  | Hydro test pipe spool group 5E — AC Plant No. 2 | 0d | 2026-08-31 | 2026-09-08 | A13190 FS+0.8d |  |  | Pipefitting [49 h] |
| A13310 |  | Weld out valve bank 2A — AC Plant No. 2 | 0d | 2026-09-01 | 2026-09-12 | A13300 |  |  | Pipefitting [149 h] |
| A13370 |  | Weld out drain riser 8B — AC Plant No. 2 | 0d | 2026-09-01 | 2026-09-13 | A13360 FS+0.8d |  |  | Pipefitting [86 h] |
| A13550 |  | Hydro test valve bank 4C — IC Terminal Room | 0d | 2026-09-01 | 2026-09-11 | A13540 FS+2.4d |  |  | Pipefitting [88 h] |
| A13250 |  | Weld out pipe spool group 8F — AC Plant No. 2 | 0d | 2026-09-02 | 2026-09-10 | A13240 |  |  | Pipefitting [52 h] |
| A00700 |  | Weld out pipe spool group 7B — CPO Living Space | 0d | 2026-09-06 | 2026-09-11 | A00690 |  |  | Pipefitting [95 h] |
| A10780 |  | Hydro test drain riser 9D — Wardroom Terminal Space | 0d | 2026-09-07 | 2026-09-20 | A10770 FS+2.4d |  |  | Pipefitting [206 h] |
| A01160 |  | Hydro test drain riser 6E — CPO Living Space | 0d | 2026-09-08 | 2026-09-17 | A01150 FS+2.4d |  |  | Pipefitting [212 h] |
| A12710 |  | Weld out drain riser 8A — AC Plant No. 2 | 0d | 2026-09-09 | 2026-09-13 | A12700 |  |  | Pipefitting [78 h] |
| A13210 |  | Flush & restore pipe spool group 5E — AC Plant No. 2 | 0d | 2026-09-09 | 2026-09-15 | A13200 |  |  | Pipefitting [78 h] |
| A13260 |  | Hydro test pipe spool group 8F — AC Plant No. 2 | 0d | 2026-09-11 | 2026-09-23 | A13250 |  |  | Pipefitting [200 h] |
| A08330 |  | Fab & fit pipe spool group 4A — AC Plant No. 2 Machinery Room | 0d | 2026-09-12 | 2026-09-20 | A08320 FS+2.4d |  |  | Pipefitting [45 h] |
| A13560 |  | Flush & restore valve bank 4C — IC Terminal Room | 0d | 2026-09-13 | 2026-09-25 | A13550 |  |  | Pipefitting [332 h] |
| A00710 |  | Hydro test pipe spool group 7B — CPO Living Space | 0d | 2026-09-13 | 2026-09-18 | A00700 FS+0.8d |  |  | Pipefitting [73 h] |
| A13320 |  | Hydro test valve bank 2A — AC Plant No. 2 | 0d | 2026-09-14 | 2026-09-23 | A13310 FS+0.8d |  |  | Pipefitting [69 h] |
| A13380 |  | Hydro test drain riser 8B — AC Plant No. 2 | 0d | 2026-09-15 | 2026-09-24 | A13370 |  |  | Pipefitting [54 h] |
| A12720 |  | Hydro test drain riser 8A — AC Plant No. 2 | 0d | 2026-09-16 | 2026-09-21 | A12710 |  |  | Pipefitting [39 h] |
| A01170 |  | Flush & restore drain riser 6E — CPO Living Space | 0d | 2026-09-17 | 2026-10-01 | A01160 FS+2.4d |  |  | Pipefitting [109 h] |
| A00720 |  | Flush & restore pipe spool group 7B — CPO Living Space | 0d | 2026-09-20 | 2026-09-30 | A00710 SS+4.8d |  |  | Pipefitting [96 h] |
| A08340 |  | Weld out pipe spool group 4A — AC Plant No. 2 Machinery Room | 0d | 2026-09-22 | 2026-09-30 | A08330 |  |  | Pipefitting [185 h] |
| A10790 |  | Flush & restore drain riser 9D — Wardroom Terminal Space | 0d | 2026-09-22 | 2026-10-01 | A10780 |  |  | Pipefitting [216 h] |
| A12730 |  | Flush & restore drain riser 8A — AC Plant No. 2 | 0d | 2026-09-23 | 2026-09-28 | A12720 |  |  | Pipefitting [32 h] |
| A13270 |  | Flush & restore pipe spool group 8F — AC Plant No. 2 | 0d | 2026-09-24 | 2026-10-02 | A13260 |  |  | Pipefitting [287 h] |
| A13330 |  | Flush & restore valve bank 2A — AC Plant No. 2 | 0d | 2026-09-26 | 2026-10-09 | A13320 |  |  | Pipefitting [212 h] |
| A13390 |  | Flush & restore drain riser 8B — AC Plant No. 2 | 0d | 2026-09-27 | 2026-10-06 | A13380 |  |  | Pipefitting [56 h] |
| A08350 |  | Hydro test pipe spool group 4A — AC Plant No. 2 Machinery Room | 0d | 2026-10-03 | 2026-10-12 | A08340 |  |  | Pipefitting [152 h] |
| A08360 |  | Flush & restore pipe spool group 4A — AC Plant No. 2 Machinery Room | 0d | 2026-10-13 | 2026-10-21 | A08350 |  |  | Pipefitting [88 h] |

| ID | WBS | Activity | Duration | Start | Finish | Predecessors | Complete | Remaining | Resources |
| --- | --- | --- | --- | --- | --- | --- | --- | --- | --- |
|  | 508 | **508 Insulation & Lagging** |  | 2026-07-28 | 2026-10-03 |  |  |  |  |
| A12740 |  | Strip lagging — lagging section 4B — AC Plant No. 2 | 0d | 2026-07-28 A | 2026-08-05 A |  | 100% |  | Insulation & Lagging [219 h]; Rigging & Weight Handling [55 h] |
| A08270 |  | Strip lagging — lagging section 4F — AC Plant No. 2 Machinery Room | 0d | 2026-08-04 A | 2026-08-16 |  | 46% | 0d | Insulation & Lagging [317 h] |
| A12750 |  | Asbestos survey — lagging section 4B — AC Plant No. 2 | 0d | 2026-08-06 A | 2026-08-12 | A12740 | 68% | 0d | Insulation & Lagging [79 h] |
| A10410 |  | Strip lagging — hull board field 7C — Wardroom Terminal Space | 0d | 2026-08-06 A | 2026-08-17 |  | 30% | 0d | Insulation & Lagging [220 h] |
| A08190 |  | Strip lagging — lagging section 7D — AC Plant No. 2 Machinery Room | 0d | 2026-08-08 A | 2026-08-21 |  | 17% | 0d | Insulation & Lagging [84 h] |
| A12890 |  | Strip lagging — hull board field 7E — AC Plant No. 2 | 0d | 2026-08-10 A | 2026-08-17 |  | 3% | 0d | Insulation & Lagging [233 h] |
| A13820 |  | Strip lagging — hull board field 5C — IC Terminal Room | 0d | 2026-08-11 | 2026-08-14 |  |  |  | Insulation & Lagging [21 h] |
| A08370 |  | Strip lagging — lagging section 6B — AC Plant No. 2 Machinery Room | 0d | 2026-08-12 | 2026-08-22 |  |  |  | Insulation & Lagging [243 h]; Rigging & Weight Handling [61 h] |
| A12760 |  | Re-insulate lagging section 4B — AC Plant No. 2 | 0d | 2026-08-12 | 2026-08-20 | A12750 |  |  | Insulation & Lagging [230 h] |
| A10840 |  | Strip lagging — lagging section 6F (2-176-0-Q) | 0d | 2026-08-13 | 2026-08-24 |  |  |  | Insulation & Lagging [135 h] |
| A10600 |  | Strip lagging — hull board field 6A — Wardroom Terminal Space | 0d | 2026-08-14 | 2026-08-25 |  |  |  | Insulation & Lagging [156 h]; Rigging & Weight Handling [39 h] |
| A13830 |  | Asbestos survey — hull board field 5C — IC Terminal Room | 0d | 2026-08-16 | 2026-08-26 | A13820 |  |  | Insulation & Lagging [259 h] |
| A08230 |  | Strip lagging — hull board field 7E — AC Plant No. 2 Machinery Room | 0d | 2026-08-16 | 2026-08-19 |  |  |  | Insulation & Lagging [30 h]; Rigging & Weight Handling [8 h] |
| A12900 |  | Asbestos survey — hull board field 7E — AC Plant No. 2 | 0d | 2026-08-17 | 2026-08-20 | A12890 |  |  | Insulation & Lagging [71 h] |
| A10420 |  | Asbestos survey — hull board field 7C — Wardroom Terminal Space | 0d | 2026-08-18 | 2026-08-20 | A10410 |  |  | Insulation & Lagging [25 h]; Rigging & Weight Handling [7 h] |
| A08280 |  | Asbestos survey — lagging section 4F — AC Plant No. 2 Machinery Room | 0d | 2026-08-18 | 2026-08-24 | A08270 |  |  | Insulation & Lagging [34 h] |
| A12910 |  | Re-insulate hull board field 7E — AC Plant No. 2 | 0d | 2026-08-20 | 2026-09-02 | A12900 |  |  | Insulation & Lagging [86 h] |
| A08240 |  | Asbestos survey — hull board field 7E — AC Plant No. 2 Machinery Room | 0d | 2026-08-22 | 2026-08-30 | A08230 FS+2.4d |  |  | Insulation & Lagging [111 h] |
| A12770 |  | Sheathing & finish lagging section 4B — AC Plant No. 2 | 0d | 2026-08-23 | 2026-08-29 | A12760 |  |  | Insulation & Lagging [92 h] |
| A10430 |  | Re-insulate hull board field 7C — Wardroom Terminal Space | 0d | 2026-08-23 | 2026-09-01 | A10420 FS+0.8d |  |  | Insulation & Lagging [56 h]; Rigging & Weight Handling [15 h] |
| A08200 |  | Asbestos survey — lagging section 7D — AC Plant No. 2 Machinery Room | 0d | 2026-08-24 | 2026-09-04 | A08190 |  |  | Insulation & Lagging [127 h] |
| A08380 |  | Asbestos survey — lagging section 6B — AC Plant No. 2 Machinery Room | 0d | 2026-08-24 | 2026-08-28 | A08370 FS+0.8d |  |  | Insulation & Lagging [56 h]; Rigging & Weight Handling [14 h] |
| A10850 |  | Asbestos survey — lagging section 6F (2-176-0-Q) | 0d | 2026-08-25 | 2026-09-03 | A10840 FS+0.8d |  |  | Insulation & Lagging [176 h] |
| A10610 |  | Asbestos survey — hull board field 6A — Wardroom Terminal Space | 0d | 2026-08-26 | 2026-08-30 | A10600 SS+7.2d |  |  | Insulation & Lagging [49 h] |
| A08290 |  | Re-insulate lagging section 4F — AC Plant No. 2 Machinery Room | 0d | 2026-08-27 | 2026-08-31 | A08280 |  |  | Insulation & Lagging [30 h] |
| A13840 |  | Re-insulate hull board field 5C — IC Terminal Room | 0d | 2026-08-27 | 2026-08-31 | A13830 |  |  | Insulation & Lagging [48 h] |
| A10620 |  | Re-insulate hull board field 6A — Wardroom Terminal Space | 0d | 2026-08-30 | 2026-09-05 | A10610 |  |  | Insulation & Lagging [172 h] |
| A08390 |  | Re-insulate lagging section 6B — AC Plant No. 2 Machinery Room | 0d | 2026-08-30 | 2026-09-05 | A08380 FS+2.4d |  |  | Insulation & Lagging [34 h] |
| A08250 |  | Re-insulate hull board field 7E — AC Plant No. 2 Machinery Room | 0d | 2026-09-02 | 2026-09-14 | A08240 |  |  | Insulation & Lagging [211 h] |
| A13850 |  | Sheathing & finish hull board field 5C — IC Terminal Room | 0d | 2026-09-02 | 2026-09-14 | A13840 FS+0.8d |  |  | Insulation & Lagging [133 h] |
| A08300 |  | Sheathing & finish lagging section 4F — AC Plant No. 2 Machinery Room | 0d | 2026-09-03 | 2026-09-07 | A08290 FS+2.4d |  |  | Insulation & Lagging [91 h] |
| A10440 |  | Sheathing & finish hull board field 7C — Wardroom Terminal Space | 0d | 2026-09-03 | 2026-09-14 | A10430 FS+0.8d |  |  | Insulation & Lagging [179 h] |
| A10860 |  | Re-insulate lagging section 6F (2-176-0-Q) | 0d | 2026-09-03 | 2026-09-09 | A10850 FS+2.4d |  |  | Insulation & Lagging [48 h] |
| A12920 |  | Sheathing & finish hull board field 7E — AC Plant No. 2 | 0d | 2026-09-04 | 2026-09-15 | A12910 |  |  | Insulation & Lagging [273 h] |
| A08210 |  | Re-insulate lagging section 7D — AC Plant No. 2 Machinery Room | 0d | 2026-09-05 | 2026-09-19 | A08200 |  |  | Insulation & Lagging [282 h] |
| A08400 |  | Sheathing & finish lagging section 6B — AC Plant No. 2 Machinery Room | 0d | 2026-09-06 | 2026-09-15 | A08390 FS+0.8d |  |  | Insulation & Lagging [55 h] |
| A10630 |  | Sheathing & finish hull board field 6A — Wardroom Terminal Space | 0d | 2026-09-08 | 2026-09-14 | A10620 FS+2.4d |  |  | Insulation & Lagging [152 h] |
| A10870 |  | Sheathing & finish lagging section 6F (2-176-0-Q) | 0d | 2026-09-11 | 2026-09-17 | A10860 |  |  | Insulation & Lagging [44 h] |
| A08260 |  | Sheathing & finish hull board field 7E — AC Plant No. 2 Machinery Room | 0d | 2026-09-15 | 2026-09-25 | A08250 |  |  | Insulation & Lagging [72 h] |
| A08220 |  | Sheathing & finish lagging section 7D — AC Plant No. 2 Machinery Room | 0d | 2026-09-21 | 2026-10-03 | A08210 |  |  | Insulation & Lagging [268 h] |

| ID | WBS | Activity | Duration | Start | Finish | Predecessors | Complete | Remaining | Resources |
| --- | --- | --- | --- | --- | --- | --- | --- | --- | --- |
|  | 512 | **512 Ventilation & Uptakes** |  | 2026-07-28 | 2026-10-08 |  |  |  |  |
| A08080 |  | Survey & mark supply trunk 2B — AC Plant No. 2 Machinery Room | 0d | 2026-07-28 A | 2026-07-30 A |  | 100% |  | Sheet Metal / HVAC [20 h] |
| A01010 |  | Survey & mark exhaust riser 4C — CPO Living Space | 0d | 2026-07-29 A | 2026-08-05 A |  | 100% |  | Sheet Metal / HVAC [149 h] |
| A12830 |  | Survey & mark exhaust riser 8D — AC Plant No. 2 | 0d | 2026-07-30 A | 2026-08-12 |  | 52% | 0d | Sheet Metal / HVAC [244 h]; Rigging & Weight Handling [61 h] |
| A08090 |  | Remove & tag supply trunk 2B — AC Plant No. 2 Machinery Room | 0d | 2026-07-30 A | 2026-08-13 | A08080 FS+0.8d | 70% | 0d | Sheet Metal / HVAC [227 h] |
| A01020 |  | Remove & tag exhaust riser 4C — CPO Living Space | 0d | 2026-08-05 A | 2026-08-14 | A01010 FS+2.4d | 55% | 0d | Sheet Metal / HVAC [302 h] |
| A13400 |  | Survey & mark supply trunk 2A — IC Terminal Room | 0d | 2026-08-06 A | 2026-08-19 |  | 18% | 0d | Sheet Metal / HVAC [112 h]; Rigging & Weight Handling [29 h] |
| A12840 |  | Remove & tag exhaust riser 8D — AC Plant No. 2 | 0d | 2026-08-13 | 2026-08-22 | A12830 FS+2.4d |  |  | Sheet Metal / HVAC [244 h] |
| A08100 |  | Fab replacement duct — supply trunk 2B — AC Plant No. 2 Machinery Room | 0d | 2026-08-14 | 2026-08-22 | A08090 |  |  | Sheet Metal / HVAC [187 h] |
| A01030 |  | Fab replacement duct — exhaust riser 4C — CPO Living Space | 0d | 2026-08-14 | 2026-08-21 | A01020 FS+2.4d |  |  | Sheet Metal / HVAC [175 h] |
| A13410 |  | Remove & tag supply trunk 2A — IC Terminal Room | 0d | 2026-08-21 | 2026-08-30 | A13400 |  |  | Sheet Metal / HVAC [99 h] |
| A01040 |  | Install exhaust riser 4C — CPO Living Space | 0d | 2026-08-22 | 2026-09-04 | A01030 FS+2.4d |  |  | Sheet Metal / HVAC [216 h]; Rigging & Weight Handling [54 h] |
| A12850 |  | Fab replacement duct — exhaust riser 8D — AC Plant No. 2 | 0d | 2026-08-22 | 2026-08-28 | A12840 |  |  | Sheet Metal / HVAC [47 h] |
| A08110 |  | Install supply trunk 2B — AC Plant No. 2 Machinery Room | 0d | 2026-08-24 | 2026-09-03 | A08100 |  |  | Sheet Metal / HVAC [161 h] |
| A12860 |  | Install exhaust riser 8D — AC Plant No. 2 | 0d | 2026-08-30 | 2026-09-09 | A12850 |  |  | Sheet Metal / HVAC [61 h] |
| A13420 |  | Fab replacement duct — supply trunk 2A — IC Terminal Room | 0d | 2026-08-31 | 2026-09-02 | A13410 FS+0.8d |  |  | Sheet Metal / HVAC [52 h] |
| A08120 |  | Duct leak test supply trunk 2B — AC Plant No. 2 Machinery Room | 0d | 2026-09-03 | 2026-09-11 | A08110 |  |  | Sheet Metal / HVAC [110 h] |
| A13430 |  | Install supply trunk 2A — IC Terminal Room | 0d | 2026-09-04 | 2026-09-13 | A13420 FS+2.4d |  |  | Sheet Metal / HVAC [238 h] |
| A01050 |  | Duct leak test exhaust riser 4C — CPO Living Space | 0d | 2026-09-06 | 2026-09-15 | A01040 FS+0.8d |  |  | Sheet Metal / HVAC [54 h] |
| A12870 |  | Duct leak test exhaust riser 8D — AC Plant No. 2 | 0d | 2026-09-11 | 2026-09-20 | A12860 FS+2.4d |  |  | Sheet Metal / HVAC [68 h] |
| A08130 |  | Close-out & QA supply trunk 2B — AC Plant No. 2 Machinery Room | 0d | 2026-09-12 | 2026-09-23 | A08120 |  |  | Sheet Metal / HVAC [296 h]; Rigging & Weight Handling [74 h] |
| A13440 |  | Duct leak test supply trunk 2A — IC Terminal Room | 0d | 2026-09-15 | 2026-09-28 | A13430 |  |  | Sheet Metal / HVAC [75 h] |
| A01060 |  | Close-out & QA exhaust riser 4C — CPO Living Space | 0d | 2026-09-15 | 2026-09-19 | A01050 |  |  | Sheet Metal / HVAC [50 h] |
| A12880 |  | Close-out & QA exhaust riser 8D — AC Plant No. 2 | 0d | 2026-09-22 | 2026-09-28 | A12870 |  |  | Sheet Metal / HVAC [84 h] |
| A13450 |  | Close-out & QA supply trunk 2A — IC Terminal Room | 0d | 2026-09-29 | 2026-10-08 | A13440 FS+0.8d |  |  | Sheet Metal / HVAC [238 h] |

| ID | WBS | Activity | Duration | Start | Finish | Predecessors | Complete | Remaining | Resources |
| --- | --- | --- | --- | --- | --- | --- | --- | --- | --- |
|  | 560 | **560 Aux Machinery** |  | 2026-07-29 | 2026-10-18 |  |  |  |  |
| A10550 |  | Open & inspect pump set 6F — Wardroom Terminal Space | 0d | 2026-07-29 A | 2026-08-08 A |  | 100% |  | Mechanical [54 h]; Rigging & Weight Handling [14 h] |
| A00860 |  | Open & inspect pump set 2F — CPO Living Space | 0d | 2026-08-01 A | 2026-08-12 |  | 75% | 0d | Mechanical [64 h] |
| A13070 |  | Open & inspect pump set 9C (3-172-0-M) | 0d | 2026-08-01 A | 2026-08-08 A |  | 100% |  | Mechanical [184 h] |
| A10450 |  | Open & inspect compressor 8D — Wardroom Terminal Space | 0d | 2026-08-02 A | 2026-08-14 |  | 67% | 0d | Mechanical [203 h] |
| A13080 |  | Remove pump set 9C for shop (3-172-0-M) | 0d | 2026-08-08 A | 2026-08-10 | A13070 | 46% | 0d | Mechanical [57 h] |
| A10560 |  | Remove pump set 6F for shop — Wardroom Terminal Space | 0d | 2026-08-08 A | 2026-08-21 | A10550 | 11% | 0d | Mechanical [221 h] |
| A13090 |  | Shop overhaul — pump set 9C (3-172-0-M) | 0d | 2026-08-10 | 2026-08-22 | A13080 |  |  | Mechanical [191 h] |
| A00870 |  | Remove pump set 2F for shop — CPO Living Space | 0d | 2026-08-14 | 2026-08-23 | A00860 |  |  | Mechanical [80 h] |
| A10460 |  | Remove compressor 8D for shop — Wardroom Terminal Space | 0d | 2026-08-14 | 2026-08-23 | A10450 |  |  | Mechanical [69 h] |
| A13460 |  | Open & inspect motor group 6B — IC Terminal Room | 0d | 2026-08-20 | 2026-09-02 |  |  |  | Mechanical [83 h] |
| A10570 |  | Shop overhaul — pump set 6F — Wardroom Terminal Space | 0d | 2026-08-21 | 2026-09-03 | A10560 |  |  | Mechanical [200 h] |
| A13100 |  | Reinstall & align pump set 9C (3-172-0-M) | 0d | 2026-08-22 | 2026-09-01 | A13090 |  |  | Mechanical [213 h] |
| A10470 |  | Shop overhaul — compressor 8D — Wardroom Terminal Space | 0d | 2026-08-23 | 2026-08-25 | A10460 FS+2.4d |  |  | Mechanical [19 h] |
| A10480 |  | Reinstall & align compressor 8D — Wardroom Terminal Space | 0d | 2026-08-26 | 2026-08-30 | A10470 |  |  | Mechanical [32 h] |
| A00880 |  | Shop overhaul — pump set 2F — CPO Living Space | 0d | 2026-08-26 | 2026-09-07 | A00870 FS+0.8d |  |  | Mechanical [179 h] |
| A10490 |  | Operational test compressor 8D — Wardroom Terminal Space | 0d | 2026-08-31 | 2026-09-09 | A10480 |  |  | Mechanical [315 h] |
| A13110 |  | Operational test pump set 9C (3-172-0-M) | 0d | 2026-09-03 | 2026-09-12 | A13100 |  |  | Mechanical [74 h] |
| A10580 |  | Reinstall & align pump set 6F — Wardroom Terminal Space | 0d | 2026-09-05 | 2026-09-14 | A10570 |  |  | Mechanical [221 h] |
| A13470 |  | Remove motor group 6B for shop — IC Terminal Room | 0d | 2026-09-05 | 2026-09-16 | A13460 FS+2.4d |  |  | Mechanical [138 h] |
| A00890 |  | Reinstall & align pump set 2F — CPO Living Space | 0d | 2026-09-07 | 2026-09-20 | A00880 |  |  | Mechanical [222 h] |
| A13480 |  | Shop overhaul — motor group 6B — IC Terminal Room | 0d | 2026-09-16 | 2026-09-28 | A13470 FS+0.8d |  |  | Mechanical [77 h] |
| A10590 |  | Operational test pump set 6F — Wardroom Terminal Space | 0d | 2026-09-17 | 2026-09-27 | A10580 FS+2.4d |  |  | Mechanical [173 h] |
| A00900 |  | Operational test pump set 2F — CPO Living Space | 0d | 2026-09-21 | 2026-09-24 | A00890 |  |  | Mechanical [66 h] |
| A13490 |  | Reinstall & align motor group 6B — IC Terminal Room | 0d | 2026-09-29 | 2026-10-07 | A13480 |  |  | Mechanical [66 h] |
| A13500 |  | Operational test motor group 6B — IC Terminal Room | 0d | 2026-10-10 | 2026-10-18 | A13490 FS-4.8d |  |  | Mechanical [192 h] |

| ID | WBS | Activity | Duration | Start | Finish | Predecessors | Complete | Remaining | Resources |
| --- | --- | --- | --- | --- | --- | --- | --- | --- | --- |
|  | 631 | **631 Preservation** |  | 2026-07-28 | 2026-10-04 |  |  |  |  |
| A00910 |  | Surface survey — overhead coating 8A — CPO Living Space | 0d | 2026-07-28 A | 2026-08-06 A |  | 100% |  | Preservation / Blast & Coat [72 h] |
| A08410 |  | Surface survey — overhead coating 1C — AC Plant No. 2 Machinery Room | 0d | 2026-08-01 A | 2026-08-13 |  | 70% | 0d | Preservation / Blast & Coat [79 h] |
| A10310 |  | Surface survey — bilge preservation 4A — Wardroom Terminal Space | 0d | 2026-08-06 A | 2026-08-12 |  | 52% | 0d | Preservation / Blast & Coat [210 h] |
| A12930 |  | Surface survey — overhead coating 9F — AC Plant No. 2 | 0d | 2026-08-06 A | 2026-08-10 |  | 73% | 0d | Preservation / Blast & Coat [114 h] |
| A00920 |  | Blast / mechanical prep overhead coating 8A — CPO Living Space | 0d | 2026-08-09 A | 2026-08-11 | A00910 | 40% | 0d | Preservation / Blast & Coat [15 h] |
| A12940 |  | Blast / mechanical prep overhead coating 9F — AC Plant No. 2 | 0d | 2026-08-12 | 2026-08-18 | A12930 |  |  | Preservation / Blast & Coat [43 h] |
| A00930 |  | Prime coat overhead coating 8A — CPO Living Space | 0d | 2026-08-12 | 2026-08-24 | A00920 |  |  | Preservation / Blast & Coat [89 h] |
| A12980 |  | Surface survey — bilge preservation 1A — AC Plant No. 2 | 0d | 2026-08-13 | 2026-08-20 |  |  |  | Preservation / Blast & Coat [100 h] |
| A10320 |  | Blast / mechanical prep bilge preservation 4A — Wardroom Terminal Space | 0d | 2026-08-14 | 2026-08-17 | A10310 SS+7.2d |  |  | Preservation / Blast & Coat [103 h] |
| A08420 |  | Blast / mechanical prep overhead coating 1C — AC Plant No. 2 Machinery Room | 0d | 2026-08-14 | 2026-08-24 | A08410 SS+7.2d |  |  | Preservation / Blast & Coat [176 h] |
| A12780 |  | Surface survey — bilge preservation 7C — AC Plant No. 2 | 0d | 2026-08-14 | 2026-08-18 |  |  |  | Preservation / Blast & Coat [83 h] |
| A10330 |  | Prime coat bilge preservation 4A — Wardroom Terminal Space | 0d | 2026-08-19 | 2026-08-26 | A10320 SS+7.2d |  |  | Preservation / Blast & Coat [157 h] |
| A12950 |  | Prime coat overhead coating 9F — AC Plant No. 2 | 0d | 2026-08-20 | 2026-08-24 | A12940 FS+2.4d |  |  | Preservation / Blast & Coat [42 h] |
| A12790 |  | Blast / mechanical prep bilge preservation 7C — AC Plant No. 2 | 0d | 2026-08-20 | 2026-09-01 | A12780 |  |  | Preservation / Blast & Coat [290 h] |
| A12990 |  | Blast / mechanical prep bilge preservation 1A — AC Plant No. 2 | 0d | 2026-08-21 | 2026-08-27 | A12980 |  |  | Preservation / Blast & Coat [37 h] |
| A00940 |  | Top coat overhead coating 8A — CPO Living Space | 0d | 2026-08-24 | 2026-09-04 | A00930 |  |  | Preservation / Blast & Coat [124 h]; Rigging & Weight Handling [31 h] |
| A08430 |  | Prime coat overhead coating 1C — AC Plant No. 2 Machinery Room | 0d | 2026-08-26 | 2026-09-06 | A08420 FS+0.8d |  |  | Preservation / Blast & Coat [218 h] |
| A12960 |  | Top coat overhead coating 9F — AC Plant No. 2 | 0d | 2026-08-26 | 2026-08-30 | A12950 FS+2.4d |  |  | Preservation / Blast & Coat [21 h] |
| A10340 |  | Top coat bilge preservation 4A — Wardroom Terminal Space | 0d | 2026-08-29 | 2026-09-09 | A10330 FS+0.8d |  |  | Preservation / Blast & Coat [83 h] |
| A13000 |  | Prime coat bilge preservation 1A — AC Plant No. 2 | 0d | 2026-08-29 | 2026-09-04 | A12990 |  |  | Preservation / Blast & Coat [175 h] |
| A12970 |  | Cure & inspect overhead coating 9F — AC Plant No. 2 | 0d | 2026-09-01 | 2026-09-05 | A12960 |  |  | Preservation / Blast & Coat [29 h] |
| A12800 |  | Prime coat bilge preservation 7C — AC Plant No. 2 | 0d | 2026-09-02 | 2026-09-14 | A12790 |  |  | Preservation / Blast & Coat [108 h] |
| A13010 |  | Top coat bilge preservation 1A — AC Plant No. 2 | 0d | 2026-09-06 | 2026-09-10 | A13000 |  |  | Preservation / Blast & Coat [89 h] |
| A00950 |  | Cure & inspect overhead coating 8A — CPO Living Space | 0d | 2026-09-07 | 2026-09-16 | A00940 SS+2.4d |  |  | Preservation / Blast & Coat [137 h] |
| A08440 |  | Top coat overhead coating 1C — AC Plant No. 2 Machinery Room | 0d | 2026-09-07 | 2026-09-17 | A08430 FS+2.4d |  |  | Preservation / Blast & Coat [104 h]; Rigging & Weight Handling [26 h] |
| A13020 |  | Cure & inspect bilge preservation 1A — AC Plant No. 2 | 0d | 2026-09-10 | 2026-09-20 | A13010 FS+2.4d |  |  | Preservation / Blast & Coat [60 h] |
| A10350 |  | Cure & inspect bilge preservation 4A — Wardroom Terminal Space | 0d | 2026-09-10 | 2026-09-20 | A10340 FS+2.4d |  |  | Preservation / Blast & Coat [178 h]; Rigging & Weight Handling [45 h] |
| A12810 |  | Top coat bilge preservation 7C — AC Plant No. 2 | 0d | 2026-09-14 | 2026-09-26 | A12800 FS+0.8d |  |  | Preservation / Blast & Coat [72 h] |
| A08450 |  | Cure & inspect overhead coating 1C — AC Plant No. 2 Machinery Room | 0d | 2026-09-19 | 2026-09-25 | A08440 |  |  | Preservation / Blast & Coat [144 h] |
| A12820 |  | Cure & inspect bilge preservation 7C — AC Plant No. 2 | 0d | 2026-09-27 | 2026-10-04 | A12810 |  |  | Preservation / Blast & Coat [218 h] |

| ID | WBS | Activity | Duration | Start | Finish | Predecessors | Complete | Remaining | Resources |
| --- | --- | --- | --- | --- | --- | --- | --- | --- | --- |
|  | SVC | **Zone Services & Access** |  | 2026-07-29 | 2026-10-08 |  |  |  |  |
| A14940 |  | Clear lay-down 1 — Aft Living & Plants | 0d | 2026-07-29 A | 2026-08-02 A |  | 100% |  | Rigging & Weight Handling [33 h] |
| A15080 |  | Reposition temp vent 8 — Aft Living & Plants | 0d | 2026-08-01 A | 2026-08-10 |  | 53% | 0d | Sheet Metal / HVAC [159 h] |
| A14980 |  | Run temporary power — Aft Living & Plants feeder 3 | 0d | 2026-08-06 A | 2026-08-11 |  | 62% | 0d | Electrical [39 h] |
| A14960 |  | Temp ventilation trunk 2 — Aft Living & Plants | 0d | 2026-08-07 A | 2026-08-12 |  | 34% | 0d | Sheet Metal / HVAC [38 h] |
| A15120 |  | Clear lay-down 10 — Aft Living & Plants | 0d | 2026-08-11 | 2026-08-13 |  |  |  | Rigging & Weight Handling [41 h] |
| A15060 |  | Clear lay-down 7 — Aft Living & Plants | 0d | 2026-08-11 | 2026-08-16 |  |  |  | Rigging & Weight Handling [89 h] |
| A15100 |  | Reposition temp vent 9 — Aft Living & Plants | 0d | 2026-08-11 | 2026-08-21 |  |  |  | Sheet Metal / HVAC [75 h] |
| A14950 |  | Material staging & lay-down 1 — Aft Living & Plants | 0d | 2026-08-12 | 2026-08-16 | A14940 |  |  | Rigging & Weight Handling [46 h] |
| A15160 |  | Rig access platforms — Aft Living & Plants band 12 | 0d | 2026-08-13 | 2026-08-17 |  |  |  | Rigging & Weight Handling [55 h] |
| A15040 |  | Clear lay-down 6 — Aft Living & Plants | 0d | 2026-08-14 | 2026-08-21 |  |  |  | Rigging & Weight Handling [121 h] |
| A15140 |  | Temp ventilation trunk 11 — Aft Living & Plants | 0d | 2026-08-15 | 2026-08-25 |  |  |  | Sheet Metal / HVAC [108 h] |
| A15090 |  | Temp ventilation trunk 8 — Aft Living & Plants | 0d | 2026-08-17 | 2026-08-23 | A15080 |  |  | Sheet Metal / HVAC [54 h] |
| A15020 |  | Temp lighting string 5 — Aft Living & Plants | 0d | 2026-08-18 | 2026-08-27 |  |  |  | Electrical [72 h] |
| A15000 |  | Stage scaffolding — Aft Living & Plants band 4 | 0d | 2026-08-19 | 2026-08-21 |  |  |  | Rigging & Weight Handling [30 h] |
| A14990 |  | Temp lighting string 3 — Aft Living & Plants | 0d | 2026-08-23 | 2026-08-27 | A14980 |  |  | Electrical [119 h] |
| A14970 |  | Reposition temp vent 2 — Aft Living & Plants | 0d | 2026-08-25 | 2026-08-27 | A14960 |  |  | Sheet Metal / HVAC [40 h] |
| A15170 |  | Stage scaffolding — Aft Living & Plants band 12 | 0d | 2026-08-30 | 2026-09-09 | A15160 |  |  | Rigging & Weight Handling [213 h] |
| A15010 |  | Rig access platforms — Aft Living & Plants band 4 | 0d | 2026-09-07 | 2026-09-11 | A15000 |  |  | Rigging & Weight Handling [80 h] |
| A15130 |  | Material staging & lay-down 10 — Aft Living & Plants | 0d | 2026-09-09 | 2026-09-19 | A15120 |  |  | Rigging & Weight Handling [137 h] |
| A15050 |  | Material staging & lay-down 6 — Aft Living & Plants | 0d | 2026-09-15 | 2026-09-24 | A15040 |  |  | Rigging & Weight Handling [63 h] |
| A15110 |  | Temp ventilation trunk 9 — Aft Living & Plants | 0d | 2026-09-18 | 2026-09-27 | A15100 |  |  | Sheet Metal / HVAC [110 h] |
| A15070 |  | Material staging & lay-down 7 — Aft Living & Plants | 0d | 2026-09-19 | 2026-09-25 | A15060 |  |  | Rigging & Weight Handling [103 h] |
| A15030 |  | Recover temp services — Aft Living & Plants feeder 5 | 0d | 2026-09-25 | 2026-10-01 | A15020 |  |  | Electrical [42 h] |
| A15150 |  | Reposition temp vent 11 — Aft Living & Plants | 0d | 2026-09-26 | 2026-10-01 | A15140 |  |  | Sheet Metal / HVAC [155 h] |
| A15180 |  | Strike scaffolding — Aft Living & Plants band 12 | 0d | 2026-10-02 | 2026-10-08 | A15170 |  |  | Rigging & Weight Handling [79 h] |
